# 3. ISC Project Plan_10.03.2024_V2

Schedule from MS Project, 2024-09-05 to 2025-02-05, status date 2022-10-13, A marks actual dates.

## Calendars

- Standard: Mon-Fri 08:00-12:00, 13:00-17:00; Sat-Sun off. Exceptions (off unless hours are given): 2024-09-17 (Ganesh Chaturthi), 2024-10-02 (Mahatma Gandhi Jayanti), 2024-10-31 (Diwali (Narak Chaturdashi)), 2024-11-01 (Diwali Amavasya (Laxmi Pujan)), 2024-12-25 (Christmas).

## Schedule

| ID | WBS | Task | Duration | Start | Finish | Predecessors | Complete | Remaining | Baseline start | Baseline finish | Baseline duration | Total slack | Constraint | Text1 |
| --- | --- | --- | --- | --- | --- | --- | --- | --- | --- | --- | --- | --- | --- | --- |
| 1 | 1 | **SAP Implementation at NEO LIV** | 105d | 2024-09-05 A | 2025-02-05 |  | 14% | 90.61d | 2024-09-05 | 2025-01-31 | 102d | 0d |  |  |
| 2 | 1.1 | **Wave 1A: S4 HANA Implementation (Public Cloud)** | 105d | 2024-09-05 A | 2025-02-05 |  | 14% | 90.61d | 2024-09-05 | 2025-01-31 | 102d | 0d |  |  |
| 3 | 1.1.1 | **Implementation** | 81d | 2024-09-05 A | 2025-01-02 |  | 17% | 67.42d | 2024-09-05 | 2024-12-31 | 79d | 24d |  |  |
| 4 | 1.1.1.1 | **Prepare** | 12d | 2024-09-05 A | 2024-09-23 A |  | 100% |  | 2024-09-05 | 2024-09-11 | 5d |  |  |  |
| 5 | 1.1.1.1.1 | **Project Kick Off and On-Boarding** | 1d | 2024-09-05 A | 2024-09-05 A |  | 100% |  | 2024-09-05 | 2024-09-05 | 1d |  |  |  |
| 6 | 1.1.1.1.1.1 | On-board Project Team | 1d | 2024-09-05 A | 2024-09-05 A |  | 100% |  | 2024-09-05 | 2024-09-05 | 1d |  | start no earlier than 2024-09-05 | HBT & NL |
| 7 | 1.1.1.1.1.2 | Conduct Kickoff Workshop | 1d | 2024-09-05 A | 2024-09-05 A | 6SS | 100% |  | 2024-09-05 | 2024-09-05 | 1d |  |  | HBT & NL |
| 8 | 1.1.1.1.2 | **Project Plan** | 10d | 2024-09-05 A | 2024-09-19 A |  | 100% |  | 2024-09-05 | 2024-09-11 | 5d |  |  |  |
| 9 | 1.1.1.1.2.1 | Prepare & submit Initial project plan | 2d | 2024-09-05 A | 2024-09-06 A | 6SS | 100% |  | 2024-09-05 | 2024-09-06 | 2d |  | start no earlier than 2024-01-02 | HBT |
| 10 | 1.1.1.1.2.2 | Review project plan | 1d | 2024-09-09 A | 2024-09-09 A | 9 | 100% |  | 2024-09-09 | 2024-09-09 | 1d |  |  | NL |
| 11 | 1.1.1.1.2.3 | Make necessary changes in the plan | 1d | 2024-09-10 A | 2024-09-10 A | 10 | 100% |  | 2024-09-10 | 2024-09-10 | 1d |  |  | HBT |
| 12 | 1.1.1.1.2.4 | Submit revised plan | 1d | 2024-09-10 A | 2024-09-10 A | 11FF | 100% |  | 2024-09-10 | 2024-09-10 | 1d |  |  | NL |
| 13 | 1.1.1.1.2.5 | Approval of project plan by NL | 6d | 2024-09-11 A | 2024-09-19 A | 12 | 100% |  | 2024-09-11 | 2024-09-11 | 1d |  |  | NL |
| 14 | 1.1.1.1.3 | **Project Governance** | 1d | 2024-09-09 A | 2024-09-09 A |  | 100% |  | 2024-09-09 | 2024-09-09 | 1d |  |  |  |
| 15 | 1.1.1.1.3.1 | Establish Project Governance Mechanism | 1d | 2024-09-09 A | 2024-09-09 A | 7FS+1d | 100% |  | 2024-09-09 | 2024-09-09 | 1d |  | start no earlier than 2023-12-04 | HBT |
| 16 | 1.1.1.1.3.2 | Define Project Communications and Reporting | 1d | 2024-09-09 A | 2024-09-09 A | 7FS+1d | 100% |  | 2024-09-09 | 2024-09-09 | 1d |  |  | HBT |
| 17 | 1.1.1.1.4 | **Project Standards, Infrastructure & Solution** | 2d | 2024-09-06 A | 2024-09-09 A |  | 100% |  | 2024-09-06 | 2024-09-09 | 2d |  |  |  |
| 18 | 1.1.1.1.4.1 | Set Up Project Team Logistics and Infrastructure | 2d | 2024-09-06 A | 2024-09-09 A | 7 | 100% |  | 2024-09-06 | 2024-09-09 | 2d |  | start no earlier than 2023-12-05 | HBT & NL |
| 19 | 1.1.1.1.4.2 | Create a Document Repository for the Implementation Project Team | 2d | 2024-09-06 A | 2024-09-09 A | 7 | 100% |  | 2024-09-06 | 2024-09-09 | 2d |  |  | HBT & NL |
| 20 | 1.1.1.1.5 | **Fit-to-Standard Analysis Preparation** | 3d | 2024-09-10 A | 2024-09-12 A |  | 100% |  | 2024-09-10 | 2024-09-10 | 1d |  |  |  |
| 21 | 1.1.1.1.5.1 | Prepare for Fit-to-Standard Workshops | 3d | 2024-09-10 A | 2024-09-12 A | 19 | 100% |  | 2024-09-10 | 2024-09-10 | 1d |  |  | HBT |
| 22 | 1.1.1.1.6 | **Phase Closure and Sign-Off Phase Deliverables** | 1d | 2024-09-23 A | 2024-09-23 A |  | 100% |  | 2024-09-11 | 2024-09-11 | 1d |  |  |  |
| 23 | 1.1.1.1.6.1 | Prepare Phase Signoff | 1d | 2024-09-23 A | 2024-09-23 A | 21 | 100% |  | 2024-09-11 | 2024-09-11 | 1d |  |  | NL |
| 24 | 1.1.1.1.7 | **Deliverables** | 1d | 2024-09-23 A | 2024-09-23 A |  | 100% |  | 2024-09-11 | 2024-09-11 | 1d |  |  |  |
| 25 | 1.1.1.1.7.1 | D: Baseline Project Plan | 1d | 2024-09-23 A | 2024-09-23 A | 23FF | 100% |  | 2024-09-11 | 2024-09-11 | 1d |  | start no earlier than 2022-11-07 | HBT |
| 26 | 1.1.1.1.7.2 | D: Project kickoff presentation | 1d | 2024-09-23 A | 2024-09-23 A | 23FF | 100% |  | 2024-09-11 | 2024-09-11 | 1d |  | start no earlier than 2022-11-07 | HBT |
| 27 | 1.1.1.1.7.3 | D: Training Plan | 1d | 2024-09-23 A | 2024-09-23 A | 23FF | 100% |  | 2024-09-11 | 2024-09-11 | 1d |  | start no earlier than 2022-11-07 | HBT |

| ID | WBS | Task | Duration | Start | Finish | Predecessors | Complete | Remaining | Baseline start | Baseline finish | Baseline duration | Total slack | Free slack | Constraint | Text1 |
| --- | --- | --- | --- | --- | --- | --- | --- | --- | --- | --- | --- | --- | --- | --- | --- |
| 28 | 1.1.1.2 | **Explore** | 33d | 2024-09-09 A | 2024-10-25 |  | 57% | 14.14d | 2024-09-09 | 2024-10-16 | 26d | 70d |  |  |  |
| 29 | 1.1.1.2.1 | **Requirement gathering** | 4d | 2024-09-09 A | 2024-09-12 A |  | 100% |  | 2024-09-09 | 2024-09-12 | 4d |  |  |  |  |
| 30 | 1.1.1.2.1.1 | Review AS IS document | 2d | 2024-09-09 A | 2024-09-10 A | 7SS+2d | 100% |  | 2024-09-09 | 2024-09-10 | 2d |  |  | start no earlier than 2022-11-04 | HBT & NL |
| 31 | 1.1.1.2.1.2 | Update AS IS document as per discussion | 2d | 2024-09-11 A | 2024-09-12 A | 30 | 100% |  | 2024-09-11 | 2024-09-12 | 2d |  |  |  | NL |
| 32 | 1.1.1.2.2 | **Fit-to-Standard analysis** | 3d | 2024-09-16 A | 2024-09-19 A |  | 100% |  | 2024-09-16 | 2024-09-19 | 3d |  |  |  |  |
| 33 | 1.1.1.2.2.1 | Conduct workshop for all modules | 3d | 2024-09-16 A | 2024-09-19 A | 31FS+1d | 100% |  | 2024-09-16 | 2024-09-19 | 3d |  |  |  | HBT |
| 34 | 1.1.1.2.3 | **Fit to Standard analysis documentation** | 22d | 2024-09-20 A | 2024-10-22 |  | 85% | 3.26d | 2024-09-20 | 2024-10-15 | 17d | 73d |  |  |  |
| 35 | 1.1.1.2.3.1 | Document Initial Configuration Settings for SAP Central Business Configuration | 2d | 2024-09-20 A | 2024-09-23 A | 33 | 100% |  | 2024-09-20 | 2024-09-23 | 2d |  |  |  | HBT |
| 36 | 1.1.1.2.3.2 | Document Scope via SAP Central Business Configuration | 2d | 2024-09-24 A | 2024-09-25 A | 35 | 100% |  | 2024-09-24 | 2024-09-25 | 2d |  |  |  | HBT |
| 37 | 1.1.1.2.3.3 | **Document and Maintain Business Process Flows** | 19d | 2024-09-24 A | 2024-10-21 |  | 94% | 1.12d | 2024-09-20 | 2024-10-09 | 13d | 74d |  |  |  |
| 38 | 1.1.1.2.3.3.1 | Prepare BBP Document and KDS | 4d | 2024-09-24 A | 2024-09-28 A | 33 | 100% |  | 2024-09-20 | 2024-09-26 | 5d |  |  |  | HBT |
| 39 | 1.1.1.2.3.3.2 | Submition of BBP and KDS | 1d | 2024-09-30 A | 2024-09-30 A | 38 | 100% |  | 2024-09-27 | 2024-09-27 | 1d |  |  |  | HBT |
| 40 | 1.1.1.2.3.3.3 | Review of BBP & KDS by CTM | 7d | 2024-10-04 A | 2024-10-14 A | 39 | 100% |  | 2024-09-30 | 2024-10-07 | 5d |  |  |  | HBT & NL |
| 41 | 1.1.1.2.3.3.4 | BBP Walkthrough | 4d | 2024-10-15 A | 2024-10-18 A | 40 | 100% |  | 2024-10-08 | 2024-10-08 | 1d |  |  |  | HBT & NL |
| 42 | 1.1.1.2.3.3.5 | BBP Signff | 1d | 2024-10-21 | 2024-10-21 | 41 |  |  | 2024-10-09 | 2024-10-09 | 1d | 78d | 0d |  | HBT & NL |
| 43 | 1.1.1.2.3.4 | Document Configuration Values | 2d | 2024-10-21 | 2024-10-22 | 41 |  |  | 2024-10-09 | 2024-10-10 | 2d | 78d |  |  | HBT |
| 44 | 1.1.1.2.3.5 | **Document Master Data Requirements** | 3d | 2024-10-16 A | 2024-10-18 A |  | 100% |  | 2024-10-11 | 2024-10-14 | 2d |  |  |  |  |
| 45 | 1.1.1.2.3.5.1 | Identify masterdata requirement | 1d | 2024-10-16 A | 2024-10-17 A | 43 | 100% |  | 2024-10-11 | 2024-10-11 | 1d |  |  |  | HBT |
| 46 | 1.1.1.2.3.5.2 | Prepare and explain masterdata template | 1d | 2024-10-17 A | 2024-10-17 A | 45SS | 100% |  | 2024-10-11 | 2024-10-11 | 1d |  |  |  | HBT |
| 47 | 1.1.1.2.3.5.3 | Circulate masterdata template | 1d | 2024-10-18 A | 2024-10-18 A | 46 | 100% |  | 2024-10-14 | 2024-10-14 | 1d |  |  |  | HBT |
| 48 | 1.1.1.2.3.6 | Confirm Backlog and prioritise (SIT/UAT, Golive, Post-Golive) | 1d | 2024-10-21 | 2024-10-21 | 47 |  |  | 2024-10-15 | 2024-10-15 | 1d | 74d |  |  | HBT & NL |
| 49 | 1.1.1.2.4 | **Integration Planning and Design** | 5d | 2024-10-21 | 2024-10-25 |  |  |  | 2024-10-09 | 2024-10-15 | 5d | 70d |  |  |  |
| 50 | 1.1.1.2.4.1 | Integration with bank host to host (upto2) | 5d | 2024-10-21 | 2024-10-25 | 41 |  |  | 2024-10-09 | 2024-10-15 | 5d | 75d |  |  | HBT & NL |
| 51 | 1.1.1.2.4.2 | Integration with HRMS (Payroll) | 5d | 2024-10-21 | 2024-10-25 | 41 |  |  | 2024-10-09 | 2024-10-15 | 5d | 75d |  |  | HBT & NL |
| 52 | 1.1.1.2.4.3 | Integration with Cloud Steer CRM | 5d | 2024-10-21 | 2024-10-25 | 41 |  |  | 2024-10-09 | 2024-10-15 | 5d | 75d |  |  | HBT & NL |
| 53 | 1.1.1.2.4.4 | Integration with DMS | 5d | 2024-10-21 | 2024-10-25 | 41 |  |  | 2024-10-09 | 2024-10-15 | 5d | 70d |  |  | HBT & NL |

| ID | WBS | Task | Type | Duration | Start | Finish | Predecessors | Complete | Remaining | Baseline start | Baseline finish | Baseline duration | Total slack | Free slack | Text1 |
| --- | --- | --- | --- | --- | --- | --- | --- | --- | --- | --- | --- | --- | --- | --- | --- |
| 54 | 1.1.1.2.5 | **Getting Started with your SAP Implementation** |  | 6d | 2024-09-26 | 2024-10-04 |  |  |  | 2024-09-26 | 2024-10-04 | 6d | 85d |  |  |
| 55 | 1.1.1.2.5.1 | Review Overview Documentation |  | 2d | 2024-09-26 | 2024-09-27 | 36 |  |  | 2024-09-26 | 2024-09-27 | 2d | 90d | 0d | HBT |
| 56 | 1.1.1.2.5.2 | Organize Provisioning Emails |  | 2d | 2024-09-30 | 2024-10-01 | 55 |  |  | 2024-09-30 | 2024-10-01 | 2d | 90d | 0d | HBT |
| 57 | 1.1.1.2.5.3 | Ensure Project Team Members Access to the SAP Support Portal, SAP Best Practices Explorer, and SAP Customer Communities |  | 2d | 2024-10-03 | 2024-10-04 | 56 |  |  | 2024-10-03 | 2024-10-04 | 2d | 90d |  | HBT |
| 58 | 1.1.1.2.6 | **SAP Cloud ALM Onboarding** |  | 3d | 2024-10-07 A | 2024-10-09 A |  | 100% |  | 2024-10-07 | 2024-10-08 | 2d |  |  |  |
| 59 | 1.1.1.2.6.1 | Request SAP Cloud ALM Tenant |  | 2d | 2024-10-07 A | 2024-10-08 A | 57 | 100% |  | 2024-10-07 | 2024-10-07 | 1d |  |  | HBT |
| 60 | 1.1.1.2.6.2 | Access SAP Cloud ALM and Create Users |  | 1d | 2024-10-08 A | 2024-10-09 A | 59 | 100% |  | 2024-10-08 | 2024-10-08 | 1d |  |  | HBT |
| 61 | 1.1.1.2.7 | **Initial System Access for Central Business Configuration** |  | 3d | 2024-10-15 A | 2024-10-17 A |  | 100% |  | 2024-10-09 | 2024-10-11 | 3d |  |  |  |
| 62 | 1.1.1.2.7.1 | Access the SAP Central Business Configuration |  | 1d | 2024-10-15 A | 2024-10-15 A | 60 | 100% |  | 2024-10-09 | 2024-10-09 | 1d |  |  | HBT |
| 63 | 1.1.1.2.7.2 | Set Up Starter Project in SAP Central Business Configuration |  | 1d | 2024-10-16 A | 2024-10-16 A | 62 | 100% |  | 2024-10-10 | 2024-10-10 | 1d |  |  | HBT |
| 64 | 1.1.1.2.7.3 | Set Up SAP Central Business Configuration Integration |  | 1d | 2024-10-17 A | 2024-10-17 A | 63 | 100% |  | 2024-10-11 | 2024-10-11 | 1d |  |  | HBT |
| 65 | 1.1.1.2.8 | **Initial System Access for SAP S/4HANA Cloud** |  | 2d | 2024-10-17 A | 2024-10-18 A |  | 100% |  | 2024-10-14 | 2024-10-16 | 3d |  |  |  |
| 66 | 1.1.1.2.8.1 | Access Starter System and Reset Password |  | 1d | 2024-10-17 A | 2024-10-18 A | 64 | 100% |  | 2024-10-14 | 2024-10-14 | 1d |  |  | HBT |
| 67 | 1.1.1.2.8.2 | Create Users in the Starter System | milestone | 0d | 2024-10-17 A | 2024-10-18 A | 66 | 100% |  | 2024-10-15 | 2024-10-15 | 1d |  |  | HBT |
| 68 | 1.1.1.2.8.3 | Self-Activation of Project Team Members in the Identity Authentication Service | milestone | 0d | 2024-10-18 A | 2024-10-18 A | 67 | 100% |  | 2024-10-16 | 2024-10-16 | 1d |  |  | HBT |
| 69 | 1.1.1.2.9 | **Phase Closure and Sign-Off Phase Deliverables** |  | 0d | 2024-10-25 A | 2024-10-25 A |  | 100% |  | 2024-10-16 | 2024-10-16 | 1d |  |  |  |
| 70 | 1.1.1.2.9.1 | Explore Phase Signoff | milestone | 0d | 2024-10-25 A | 2024-10-25 A | 53 | 100% |  | 2024-10-16 | 2024-10-16 | 1d |  |  | NL |
| 71 | 1.1.1.2.10 | **Deliverables** |  | 1d | 2024-10-25 A | 2024-10-25 A |  | 100% |  | 2024-10-10 | 2024-10-15 | 4d |  |  |  |
| 72 | 1.1.1.2.10.1 | Fit to Standard documents with Process flow diagram, Gap Analysis |  | 1d | 2024-10-25 A | 2024-10-25 A | 42 | 100% |  | 2024-10-10 | 2024-10-10 | 1d |  |  | HBT |
| 73 | 1.1.1.2.10.2 | Core team training/ presentation |  | 1d | 2024-10-25 A | 2024-10-25 A | 42 | 100% |  | 2024-10-10 | 2024-10-10 | 1d |  |  | HBT |
| 74 | 1.1.1.2.10.3 | Initial Master data templates |  | 1d | 2024-10-25 A | 2024-10-25 A | 47 | 100% |  | 2024-10-15 | 2024-10-15 | 1d |  |  | HBT |
| 75 | 1.1.1.3 | **Realize** |  | 41d | 2024-10-21 A | 2024-12-18 |  | 8% | 37.92d | 2024-10-15 | 2024-12-18 | 45d | 34d |  |  |
| 76 | 1.1.1.3.1 | **Requirement gathering sheet (RGS)** |  | 3d | 2024-10-27 A | 2024-10-30 A |  | 100% |  | 2024-10-16 | 2024-10-21 | 4d |  |  |  |
| 77 | 1.1.1.3.1.1 | Prepare RGS |  | 3d | 2024-10-27 A | 2024-10-30 A | 53 | 100% |  | 2024-10-16 | 2024-10-18 | 3d |  |  | HBT |
| 78 | 1.1.1.3.1.2 | Submit RGS | milestone | 0d | 2024-10-30 A | 2024-10-30 A | 77 | 100% |  | 2024-10-21 | 2024-10-21 | 1d |  |  | HBT |

| ID | WBS | Task | Type | Duration | Start | Finish | Predecessors | Complete | Remaining | Baseline start | Baseline finish | Baseline duration | Total slack | Free slack | Text1 |
| --- | --- | --- | --- | --- | --- | --- | --- | --- | --- | --- | --- | --- | --- | --- | --- |
| 79 | 1.1.1.3.2 | **Functional Specifications** |  | 9d | 2024-10-26 A | 2024-11-11 |  |  | 9d | 2024-10-22 | 2024-10-29 | 6d | 61d |  |  |
| 80 | 1.1.1.3.2.1 | Prepare functional specfications |  | 4d | 2024-10-31 A | 2024-11-07 | 78 |  | 4d | 2024-10-22 | 2024-10-25 | 4d | 0d |  | HBT |
| 81 | 1.1.1.3.2.2 | Finalize development tracker |  | 2d | 2024-10-26 A | 2024-11-11 | 80 |  | 2d | 2024-10-28 | 2024-10-29 | 2d | 61d |  | HBT |
| 82 | 1.1.1.3.3 | **Solution Configuration** |  | 9d | 2024-10-25 A | 2024-11-08 A |  | 100% |  | 2024-10-28 | 2024-11-12 | 10d |  |  |  |
| 83 | 1.1.1.3.3.1 | Configure Processes and Functions in golden master (100) | milestone | 0d | 2024-10-25 A | 2024-10-31 A | 80 | 100% |  | 2024-10-28 | 2024-11-05 | 5d |  |  | HBT |
| 84 | 1.1.1.3.3.2 | Transfer of Configuration to Dev testing | milestone | 0d | 2024-10-31 A | 2024-10-31 A | 83 | 100% |  | 2024-11-06 | 2024-11-06 | 1d |  |  | HBT |
| 85 | 1.1.1.3.3.3 | Unit testing-1 (Consultant) |  | 1d | 2024-10-31 A | 2024-11-04 A | 84 | 100% |  | 2024-11-07 | 2024-11-11 | 3d |  |  | HBT |
| 86 | 1.1.1.3.3.4 | Document and Resolve Issues |  | 4d | 2024-11-04 A | 2024-11-07 A | 85SS | 100% |  | 2024-11-07 | 2024-11-11 | 3d |  |  | HBT |
| 87 | 1.1.1.3.3.5 | Submit Unit Testing result & completion of baseline config |  | 1d | 2024-11-08 A | 2024-11-08 A | 86 | 100% |  | 2024-11-12 | 2024-11-12 | 1d |  |  | HBT |
| 88 | 1.1.1.3.4 | **Core team training & UT** |  | 12d | 2024-11-13 A | 2024-11-28 |  | 25% | 9d | 2024-11-13 | 2024-11-28 | 12d | 42d |  |  |
| 89 | 1.1.1.3.4.1 | Plan for CTM training |  | 1d | 2024-11-13 A | 2024-11-13 A | 87 | 100% |  | 2024-11-13 | 2024-11-13 | 1d |  |  | HBT |
| 90 | 1.1.1.3.4.2 | Making necessery training arrangement - PPT + tutorial |  | 2d | 2024-11-14 A | 2024-11-16 A | 89 | 100% |  | 2024-11-14 | 2024-11-15 | 2d |  |  | HBT |
| 91 | 1.1.1.3.4.3 | Conducting CTM Training (Module wise) |  | 3d | 2024-11-18 | 2024-11-20 | 90 |  |  | 2024-11-18 | 2024-11-20 | 3d | 3d | 0d | HBT |
| 92 | 1.1.1.3.4.4 | Unit Testing by Core team |  | 6d | 2024-11-21 | 2024-11-28 | 91 |  |  | 2024-11-21 | 2024-11-28 | 6d | 42d | 0d | NL |
| 93 | 1.1.1.3.5 | **Quality System Request / Initial Setup** |  | 3d | 2024-11-11 A | 2024-11-13 A |  | 100% |  | 2024-10-17 | 2024-10-17 | 1d |  |  |  |
| 94 | 1.1.1.3.5.1 | Execute Initial Setup of the Quality System via SAP Central Business Configuration |  | 3d | 2024-11-11 A | 2024-11-13 A | 70 | 100% |  | 2024-10-17 | 2024-10-17 | 1d |  |  | HBT |
| 95 | 1.1.1.3.5.2 | Request Quality System via Manage Your Solution App |  | 1d | 2024-11-13 A | 2024-11-13 A | 70 | 100% |  | 2024-10-17 | 2024-10-17 | 1d |  |  | HBT |
| 96 | 1.1.1.3.6 | **Quality System Initial Access** |  | 13d | 2024-10-25 A | 2024-11-14 |  | 22% | 10.11d | 2024-10-17 | 2024-10-25 | 7d | 58d |  |  |
| 97 | 1.1.1.3.6.1 | Receive Quality System and Reset Password | milestone | 0d | 2024-11-13 A | 2024-11-13 A | 95 | 100% |  | 2024-10-18 | 2024-10-18 | 1d |  |  | HBT |
| 98 | 1.1.1.3.6.2 | Create Preset Configuration User in the Quality System via Manage Your Solution App |  | 1d | 2024-11-13 A | 2024-11-13 A | 97 | 100% |  | 2024-10-21 | 2024-10-21 | 1d |  |  | HBT |
| 99 | 1.1.1.3.6.3 | Define Preset Parameters and Trigger System Activation via Manage Your Solution App |  | 1d | 2024-11-14 A | 2024-11-14 A | 98 | 100% |  | 2024-10-22 | 2024-10-22 | 1d |  |  | HBT |
| 100 | 1.1.1.3.6.4 | **Create Users in the Quality Server** |  | 6d | 2024-10-25 | 2024-11-05 |  |  |  | 2024-10-17 | 2024-10-24 | 6d | 64d |  | HBT |
| 101 | 1.1.1.3.6.4.1 | **Finalize list of users for QAS** |  | 6d | 2024-10-25 | 2024-11-05 |  |  |  | 2024-10-17 | 2024-10-24 | 6d | 64d |  | HBT |
| 102 | 1.1.1.3.6.4.1.1 | **Provide user authorization** |  | 6d | 2024-10-25 | 2024-11-05 |  |  |  | 2024-10-17 | 2024-10-24 | 6d | 64d |  | HBT |
| 103 | 1.1.1.3.6.4.1.1.1 | Finalize user authorization |  | 2d | 2024-10-25 | 2024-10-28 | 70 |  |  | 2024-10-17 | 2024-10-18 | 2d | 64d | 0d | HBT |
| 104 | 1.1.1.3.6.4.1.1.2 | Create roles and authorization |  | 1d | 2024-10-29 | 2024-10-29 | 103 |  |  | 2024-10-21 | 2024-10-21 | 1d | 64d | 0d | HBT |
| 105 | 1.1.1.3.6.4.1.1.3 | Testing of roles and authorization |  | 2d | 2024-10-30 | 2024-11-04 | 104 |  |  | 2024-10-22 | 2024-10-23 | 2d | 64d | 0d | HBT |
| 106 | 1.1.1.3.6.4.1.1.4 | Deployment of roles to users |  | 1d | 2024-11-05 | 2024-11-05 | 105 |  |  | 2024-10-24 | 2024-10-24 | 1d | 64d | 0d | HBT |
| 107 | 1.1.1.3.6.5 | Self-Activation of Project Team Members in the Identity Authentication Service |  | 1d | 2024-11-06 | 2024-11-06 | 106 |  |  | 2024-10-25 | 2024-10-25 | 1d | 64d |  | HBT |

| ID | WBS | Task | Type | Duration | Start | Finish | Predecessors | Complete | Remaining | Baseline start | Baseline finish | Baseline duration | Total slack | Free slack | Text1 |
| --- | --- | --- | --- | --- | --- | --- | --- | --- | --- | --- | --- | --- | --- | --- | --- |
| 108 | 1.1.1.3.7 | **Required Configuration Before System Use - SAP S/4HANA Cloud** |  | 1d | 2024-11-14 A | 2024-11-14 A |  | 100% |  | 2024-10-21 | 2024-10-21 | 1d |  |  |  |
| 109 | 1.1.1.3.7.1 | Configure system |  | 1d | 2024-11-14 A | 2024-11-14 A | 97 | 100% |  | 2024-10-21 | 2024-10-21 | 1d |  |  | HBT |
| 110 | 1.1.1.3.8 | **Standard Integration Setup in the Quality/Test System** |  | 2d | 2024-11-14 A | 2024-11-15 A |  | 100% |  | 2024-10-22 | 2024-10-24 | 3d |  |  |  |
| 111 | 1.1.1.3.8.1 | Set Up Integration using Cloud Integration Automation Service (CIAS) |  | 1d | 2024-11-14 A | 2024-11-14 A | 109 | 100% |  | 2024-10-22 | 2024-10-22 | 1d |  |  | HBT |
| 112 | 1.1.1.3.8.2 | Set Up Employee Central Integration (JB1) |  | 1d | 2024-11-15 A | 2024-11-15 A | 111 | 100% |  | 2024-10-23 | 2024-10-23 | 1d |  |  | HBT |
| 113 | 1.1.1.3.8.3 | Set Up Integrations in the Quality/Test System | milestone | 0d | 2024-11-15 A | 2024-11-15 A | 112 | 100% |  | 2024-10-24 | 2024-10-24 | 1d |  |  | HBT |
| 114 | 1.1.1.3.9 | **System Integration Test** |  | 41d | 2024-10-21 A | 2024-12-18 |  |  | 41d | 2024-10-15 | 2024-12-18 | 45d | 34d |  |  |
| 115 | 1.1.1.3.9.1 | **Integration test Plan** |  | 24d | 2024-10-21 | 2024-11-25 |  |  |  | 2024-10-15 | 2024-11-22 | 27d | 11d |  |  |
| 116 | 1.1.1.3.9.1.1 | Identify scenerios for Integration test |  | 2d | 2024-11-21 | 2024-11-22 | 91 |  |  | 2024-11-21 | 2024-11-22 | 2d | 3d | 0d | HBT |
| 117 | 1.1.1.3.9.1.2 | Write scripts for Integration test |  | 1d | 2024-11-21 | 2024-11-21 | 116SS |  |  | 2024-11-21 | 2024-11-21 | 1d | 3d | 0d | HBT |
| 118 | 1.1.1.3.9.1.3 | **Master data** |  | 23d | 2024-10-21 | 2024-11-22 |  |  |  | 2024-10-15 | 2024-11-18 | 23d | 52d |  |  |
| 119 | 1.1.1.3.9.1.3.1 | Receipt Master Data from NL |  | 20d | 2024-10-21 | 2024-11-19 | 47 |  |  | 2024-10-15 | 2024-11-13 | 20d | 52d | 0d | NL |
| 120 | 1.1.1.3.9.1.3.2 | Upload Master data in QAS |  | 3d | 2024-11-20 | 2024-11-22 | 119 |  |  | 2024-11-14 | 2024-11-18 | 3d | 52d |  | HBT |
| 121 | 1.1.1.3.9.1.4 | **Identity and Access Management Planning and Design** |  | 20d | 2024-10-25 | 2024-11-25 |  |  |  | 2024-10-17 | 2024-11-15 | 20d | 7d |  |  |
| 122 | 1.1.1.3.9.1.4.1 | Finalize list of users |  | 15d | 2024-10-25 | 2024-11-18 | 70 |  |  | 2024-10-17 | 2024-11-08 | 15d | 7d | 0d | NL |
| 123 | 1.1.1.3.9.1.4.2 | Provide & Check roles and authorization |  | 5d | 2024-11-19 | 2024-11-25 | 122 |  |  | 2024-11-11 | 2024-11-15 | 5d | 7d | 1d | NL |
| 124 | 1.1.1.3.9.2 | **Conduct System integration test** |  | 14d | 2024-11-22 | 2024-12-11 |  |  |  | 2024-11-22 | 2024-12-11 | 14d | 3d |  |  |
| 125 | 1.1.1.3.9.2.1 | Perform Integration testing by Consultant |  | 6d | 2024-11-22 | 2024-11-29 | 117 |  |  | 2024-11-22 | 2024-11-29 | 6d | 3d | 0d | HBT |
| 126 | 1.1.1.3.9.2.2 | Perform User Acceptance test - CTM |  | 6d | 2024-12-02 | 2024-12-09 | 125, 123 |  |  | 2024-12-02 | 2024-12-09 | 6d | 3d | 0d | NL |
| 127 | 1.1.1.3.9.2.3 | Resolving the issues, if any |  | 6d | 2024-12-02 | 2024-12-09 | 126SS |  |  | 2024-12-02 | 2024-12-09 | 6d | 3d | 0d | HBT |
| 128 | 1.1.1.3.9.2.4 | Retesting of scenarios |  | 2d | 2024-12-10 | 2024-12-11 | 127 |  |  | 2024-12-10 | 2024-12-11 | 2d | 36d | 0d | NL |
| 129 | 1.1.1.3.9.2.5 | UAT (by CTM) signoff |  | 1d | 2024-12-11 | 2024-12-11 | 128FF |  |  | 2024-12-11 | 2024-12-11 | 1d | 36d | 0d | NL |
| 130 | 1.1.1.3.9.3 | **ABAP Development - SIT Critical** |  | 31d | 2024-11-06 A | 2024-12-18 |  |  | 31d | 2024-11-06 | 2024-12-18 | 31d | 34d |  |  |
| 131 | 1.1.1.3.9.3.1 | Develop reports |  | 25d | 2024-11-06 A | 2024-12-10 | 83 |  | 25d | 2024-11-06 | 2024-12-10 | 25d | 26d | 0d | HBT |
| 132 | 1.1.1.3.9.3.2 | Testing by consultant |  | 25d | 2024-11-11 | 2024-12-13 | 131SS+3d |  |  | 2024-11-11 | 2024-12-13 | 25d | 34d | 0d | HBT |
| 133 | 1.1.1.3.9.3.3 | Testing by CTM |  | 25d | 2024-11-14 | 2024-12-18 | 132SS+3d |  |  | 2024-11-14 | 2024-12-18 | 25d | 34d | 0d | NL |
| 134 | 1.1.1.3.9.3.4 | Sign off Development |  | 1d | 2024-12-18 | 2024-12-18 | 133FF |  |  | 2024-12-18 | 2024-12-18 | 1d | 34d |  | NL |

| ID | WBS | Task | Duration | Start | Finish | Predecessors | Baseline start | Baseline finish | Baseline duration | Total slack | Free slack | Text1 |
| --- | --- | --- | --- | --- | --- | --- | --- | --- | --- | --- | --- | --- |
| 135 | 1.1.1.3.9.4 | **Third Party Interface** | 31d | 2024-11-04 | 2024-12-16 |  | 2024-11-06 | 2024-12-18 | 31d | 36d |  |  |
| 136 | 1.1.1.3.9.4.1 | Development | 25d | 2024-11-04 | 2024-12-06 | 83 | 2024-11-06 | 2024-12-10 | 25d | 36d | 0d | HBT |
| 137 | 1.1.1.3.9.4.2 | Testing by consultant | 25d | 2024-11-07 | 2024-12-11 | 136SS+3d | 2024-11-11 | 2024-12-13 | 25d | 36d | 0d | HBT |
| 138 | 1.1.1.3.9.4.3 | Testing by CTM | 25d | 2024-11-12 | 2024-12-16 | 137SS+3d | 2024-11-14 | 2024-12-18 | 25d | 36d | 0d | NL |
| 139 | 1.1.1.3.9.4.4 | Sign off Development | 1d | 2024-12-16 | 2024-12-16 | 138FF | 2024-12-18 | 2024-12-18 | 1d | 36d |  | NL |
| 140 | 1.1.1.3.10 | **Cutover Strategy** | 3d | 2024-12-10 | 2024-12-12 |  | 2024-12-10 | 2024-12-12 | 3d | 3d |  |  |
| 141 | 1.1.1.3.10.1 | Discussion on cutover strategy | 2d | 2024-12-10 | 2024-12-11 | 127 | 2024-12-10 | 2024-12-11 | 2d | 3d | 0d | HBT & NL |
| 142 | 1.1.1.3.10.2 | Cutover & data responsibility Plan | 1d | 2024-12-12 | 2024-12-12 | 141 | 2024-12-12 | 2024-12-12 | 1d | 3d | 0d | HBT & NL |
| 143 | 1.1.1.3.10.3 | Communication to Organisation for Cutover | 1d | 2024-12-12 | 2024-12-12 | 142FF | 2024-12-12 | 2024-12-12 | 1d | 3d | 0d | NL |
| 144 | 1.1.1.3.11 | **End user training plan** | 2d | 2024-11-29 | 2024-12-02 |  | 2024-11-29 | 2024-12-02 | 2d | 42d |  |  |
| 145 | 1.1.1.3.11.1 | Preparation of End User training plan | 2d | 2024-11-29 | 2024-12-02 | 92 | 2024-11-29 | 2024-12-02 | 2d | 42d | 0d | HBT & NL |
| 146 | 1.1.1.3.11.2 | Communicate plan to NL | 1d | 2024-12-02 | 2024-12-02 | 145FF | 2024-12-02 | 2024-12-02 | 1d | 42d | 0d | NL |
| 147 | 1.1.1.3.12 | **Production System Request** | 2d | 2024-10-25 | 2024-10-28 |  | 2024-10-17 | 2024-10-18 | 2d | 67d |  |  |
| 148 | 1.1.1.3.12.1 | Request for Production System | 1d | 2024-10-25 | 2024-10-25 | 70 | 2024-10-17 | 2024-10-17 | 1d | 67d | 0d | HBT |
| 149 | 1.1.1.3.12.2 | Request Access to the SAP S/4HANA Cloud Release Assessment Tool. | 1d | 2024-10-28 | 2024-10-28 | 148 | 2024-10-18 | 2024-10-18 | 1d | 67d | 0d | HBT |
| 150 | 1.1.1.3.13 | **Production System Initial Access** | 2d | 2024-10-29 | 2024-10-30 |  | 2024-10-21 | 2024-10-22 | 2d | 67d |  |  |
| 151 | 1.1.1.3.13.1 | Receive Production System and Reset Password | 1d | 2024-10-29 | 2024-10-29 | 149 | 2024-10-21 | 2024-10-21 | 1d | 67d | 0d | NL |
| 152 | 1.1.1.3.13.2 | Transport Initial Change Project from Q-System to P-System | 1d | 2024-10-30 | 2024-10-30 | 151 | 2024-10-22 | 2024-10-22 | 1d | 67d |  | HBT |
| 153 | 1.1.1.3.14 | Phase Closure & Signoff Phase deliverables | 1d | 2024-12-12 | 2024-12-12 | 129 | 2024-12-12 | 2024-12-12 | 1d | 38d |  | ISC |
| 154 | 1.1.1.3.15 | **Deliverables** | 24d | 2024-11-11 | 2024-12-12 |  | 2024-11-13 | 2024-12-12 | 22d | 38d |  |  |
| 155 | 1.1.1.3.15.1 | D: Test scripts | 1d | 2024-11-22 | 2024-11-22 | 117 | 2024-11-22 | 2024-11-22 | 1d | 52d |  | HBT |
| 156 | 1.1.1.3.15.2 | D: Unit test result document | 1d | 2024-11-11 | 2024-11-11 | 87 | 2024-11-13 | 2024-11-13 | 1d | 61d |  | HBT |
| 157 | 1.1.1.3.15.3 | D: Integration testing document | 1d | 2024-12-02 | 2024-12-02 | 125 | 2024-12-02 | 2024-12-02 | 1d | 46d |  | HBT |
| 158 | 1.1.1.3.15.4 | D: User Acceptance testing document | 1d | 2024-12-11 | 2024-12-11 | 129FF | 2024-12-11 | 2024-12-11 | 1d | 39d |  | HBT |
| 159 | 1.1.1.3.15.5 | D: Final master data templates | 1d | 2024-12-12 | 2024-12-12 | 143FF | 2024-12-12 | 2024-12-12 | 1d | 38d |  | HBT |
| 160 | 1.1.1.3.15.6 | D: Data migration strategy document | 1d | 2024-12-12 | 2024-12-12 | 143FF | 2024-12-12 | 2024-12-12 | 1d | 38d |  | HBT |

| ID | WBS | Task | Duration | Start | Finish | Predecessors | Baseline start | Baseline finish | Baseline duration | Total slack | Free slack | Constraint | Text1 |
| --- | --- | --- | --- | --- | --- | --- | --- | --- | --- | --- | --- | --- | --- |
| 161 | 1.1.1.4 | **Deploy** | 51d | 2024-10-21 | 2025-01-02 |  | 2024-10-15 | 2024-12-31 | 53d | 0d |  |  |  |
| 162 | 1.1.1.4.1 | **ABAP Developments Pre Go Live** | 21d | 2024-12-02 | 2024-12-31 |  | 2024-12-02 | 2024-12-31 | 21d | 26d |  |  |  |
| 163 | 1.1.1.4.1.1 | Develop reports | 15d | 2024-12-02 | 2024-12-20 | 131FS-7d | 2024-12-02 | 2024-12-20 | 15d | 26d | 0d | start no earlier than 2022-12-20 | HBT |
| 164 | 1.1.1.4.1.2 | Testing by consultant | 15d | 2024-12-05 | 2024-12-26 | 163SS+3d | 2024-12-05 | 2024-12-26 | 15d | 26d | 0d |  | HBT |
| 165 | 1.1.1.4.1.3 | Testing by CTM | 15d | 2024-12-09 | 2024-12-30 | 164SS+2d | 2024-12-09 | 2024-12-30 | 15d | 26d | 0d |  | NL |
| 166 | 1.1.1.4.1.4 | Sign off Development | 1d | 2024-12-31 | 2024-12-31 | 165 | 2024-12-31 | 2024-12-31 | 1d | 26d |  |  | NL |
| 167 | 1.1.1.4.2 | **End User Training** | 10d | 2024-12-13 | 2024-12-27 |  | 2024-12-13 | 2024-12-27 | 10d | 27d |  |  |  |
| 168 | 1.1.1.4.2.1 | Prepare end user training manual | 2d | 2024-12-13 | 2024-12-16 | 143 | 2024-12-13 | 2024-12-16 | 2d | 27d | 0d |  | HBT |
| 169 | 1.1.1.4.2.2 | Conduct end user training | 5d | 2024-12-17 | 2024-12-23 | 168 | 2024-12-17 | 2024-12-23 | 5d | 27d | 0d |  | NL |
| 170 | 1.1.1.4.2.3 | Conduct training to HODs/Management | 3d | 2024-12-24 | 2024-12-27 | 169 | 2024-12-24 | 2024-12-27 | 3d | 28d |  |  | NL |
| 171 | 1.1.1.4.3 | **Production Environment Preparation** | 3d | 2024-12-12 | 2024-12-16 |  | 2024-12-12 | 2024-12-16 | 3d | 36d |  |  |  |
| 172 | 1.1.1.4.3.1 | Transport final configurations | 1d | 2024-12-12 | 2024-12-12 | 129 | 2024-12-12 | 2024-12-12 | 1d | 36d | 0d |  | HBT |
| 173 | 1.1.1.4.3.2 | Maintain number ranges | 1d | 2024-12-13 | 2024-12-13 | 172 | 2024-12-13 | 2024-12-13 | 1d | 36d | 0d |  | HBT |
| 174 | 1.1.1.4.3.3 | Maintain client specific data | 1d | 2024-12-16 | 2024-12-16 | 173 | 2024-12-16 | 2024-12-16 | 1d | 36d |  |  | HBT |
| 175 | 1.1.1.4.4 | **User creation** | 19d | 2024-12-03 | 2024-12-30 |  | 2024-12-03 | 2024-12-30 | 19d | 27d |  |  |  |
| 176 | 1.1.1.4.4.1 | Finalize list of users for production enviornment | 2d | 2024-12-03 | 2024-12-04 | 146 | 2024-12-03 | 2024-12-04 | 2d | 42d | 0d |  | HBT & NL |
| 177 | 1.1.1.4.4.2 | Finalise Authorization Matrix | 2d | 2024-12-05 | 2024-12-06 | 176 | 2024-12-05 | 2024-12-06 | 2d | 42d |  |  | HBT & NL |
| 178 | 1.1.1.4.4.3 | Check roles and authorization | 4d | 2024-12-24 | 2024-12-30 | 169 | 2024-12-24 | 2024-12-30 | 4d | 27d |  |  | HBT & NL |
| 179 | 1.1.1.4.5 | **Data preparation and upload** | 49d | 2024-10-21 | 2024-12-31 |  | 2024-10-15 | 2024-12-26 | 50d | 0d |  |  |  |
| 180 | 1.1.1.4.5.1 | Receipt of master data | 40d | 2024-10-21 | 2024-12-17 | 47 | 2024-10-15 | 2024-12-11 | 40d | 0d |  |  | NL |
| 181 | 1.1.1.4.5.2 | Validate & cleanse master data | 2d | 2024-12-18 | 2024-12-19 | 180 | 2024-12-12 | 2024-12-13 | 2d | 0d |  |  | NL |
| 182 | 1.1.1.4.5.3 | Upload master data in Production | 4d | 2024-12-20 | 2024-12-26 | 181 | 2024-12-16 | 2024-12-19 | 4d | 0d |  |  | HBT & NL |
| 183 | 1.1.1.4.5.4 | Confirm uploaded master data | 1d | 2024-12-27 | 2024-12-27 | 182 | 2024-12-20 | 2024-12-20 | 1d | 28d |  |  | NL |
| 184 | 1.1.1.4.5.5 | Receipt of cutover data | 6d | 2024-12-13 | 2024-12-20 | 143 | 2024-12-13 | 2024-12-20 | 6d | 3d |  |  | NL |
| 185 | 1.1.1.4.5.6 | Validate & cleanse cutover data | 6d | 2024-12-13 | 2024-12-20 | 143 | 2024-12-13 | 2024-12-20 | 6d | 32d |  |  | NL |
| 186 | 1.1.1.4.5.7 | Upload cutover data in production | 3d | 2024-12-27 | 2024-12-31 | 184, 182 | 2024-12-23 | 2024-12-26 | 3d | 0d |  |  | HBT & NL |
| 187 | 1.1.1.4.5.8 | Check and validate uploaded data | 1d | 2024-12-31 | 2024-12-31 | 186FF | 2024-12-26 | 2024-12-26 | 1d | 0d |  |  | NL |

| ID | WBS | Task | Duration | Start | Finish | Predecessors | Baseline start | Baseline finish | Baseline duration | Total slack | Text1 |
| --- | --- | --- | --- | --- | --- | --- | --- | --- | --- | --- | --- |
| 188 | 1.1.1.4.6 | **Deliverables** | 18d | 2024-12-05 | 2024-12-31 |  | 2024-12-05 | 2024-12-24 | 14d | 26d |  |
| 189 | 1.1.1.4.6.1 | D: End user training manual | 3d | 2024-12-17 | 2024-12-19 | 168 | 2024-12-17 | 2024-12-19 | 3d | 33d | HBT |
| 190 | 1.1.1.4.6.2 | D: Data migration plan & checklist | 3d | 2024-12-18 | 2024-12-20 | 180 | 2024-12-12 | 2024-12-16 | 3d | 32d | HBT |
| 191 | 1.1.1.4.6.3 | D: Master data upload programs | 3d | 2024-12-27 | 2024-12-31 | 182 | 2024-12-20 | 2024-12-24 | 3d | 26d | HBT |
| 192 | 1.1.1.4.6.4 | D: Sample data upload validation | 1d | 2024-12-27 | 2024-12-27 | 182 | 2024-12-20 | 2024-12-20 | 1d | 28d | HBT |
| 193 | 1.1.1.4.6.5 | D: Final SAP Authorization matrix | 1d | 2024-12-05 | 2024-12-05 | 176 | 2024-12-05 | 2024-12-05 | 1d | 43d | HBT |
| 194 | 1.1.1.4.7 | **Phase Closure & Sign Off Phase Deliverables** | 2d | 2025-01-01 | 2025-01-02 |  | 2024-12-27 | 2024-12-30 | 2d | 0d |  |
| 195 | 1.1.1.4.7.1 | Deploy signoff | 1d | 2025-01-01 | 2025-01-01 | 187 | 2024-12-27 | 2024-12-27 | 1d | 0d | NL |
| 196 | 1.1.1.4.7.2 | Completion of Final Preparation (Deploy) Phase | 1d | 2025-01-02 | 2025-01-02 | 195 | 2024-12-30 | 2024-12-30 | 1d | 0d | NL |
| 197 | 1.1.2 | Go Live | 1d | 2025-01-03 | 2025-01-03 | 196 | 2024-12-31 | 2024-12-31 | 1d | 0d | HBT & NL |
| 198 | 1.1.3 | **Stabilization** | 23d | 2025-01-06 | 2025-02-05 |  | 2025-01-01 | 2025-01-31 | 23d | 0d |  |
| 199 | 1.1.3.1 | Stabilization (Post Go live Support) | 23d | 2025-01-06 | 2025-02-05 | 197 | 2025-01-01 | 2025-01-31 | 23d | 0d | HBT & NL |
| 200 | 1.1.3.2 | **Deliverables** | 23d | 2025-01-06 | 2025-02-05 |  | 2025-01-01 | 2025-01-31 | 23d | 0d |  |
| 201 | 1.1.3.2.1 | D: Issue list with resolution status | 23d | 2025-01-06 | 2025-02-05 | 199SS | 2025-01-01 | 2025-01-31 | 23d | 0d | HBT |
| 202 | 1.1.3.2.2 | D: Configuration documents | 23d | 2025-01-06 | 2025-02-05 | 199SS | 2025-01-01 | 2025-01-31 | 23d | 0d | HBT |
| 203 | 1.1.3.2.3 | D: FS & TS | 23d | 2025-01-06 | 2025-02-05 | 199SS | 2025-01-01 | 2025-01-31 | 23d | 0d | HBT |
| 204 | 1.1.3.2.4 | D: Cre team training document | 23d | 2025-01-06 | 2025-02-05 | 199SS | 2025-01-01 | 2025-01-31 | 23d | 0d | HBT |
