# 2. Pharma Access Project Plan_06.08.2024_V1

Schedule from MS Project, 2024-09-02 to 2026-04-01, status date 2022-10-13, A marks actual dates.

## Calendars

- Standard: Mon-Fri 08:00-12:00, 13:00-17:00; Sat-Sun off. Exceptions (off unless hours are given): 2024-09-07 (Ganesh Chaturthi), 2024-10-01 to 2025-03-29 08:00-12:00, 13:00-17:00 (Saturday, recurring), 2024-10-02 (Gandhi Jayanti), 2024-10-31 to 2024-11-01 (Diwali), 2024-12-25 (Christmas).

## Schedule

| ID | WBS | Task | Type | Duration | Start | Finish | Predecessors | Complete | Remaining | Baseline start | Baseline finish | Baseline duration | Total slack | Constraint | Responsibility |
| --- | --- | --- | --- | --- | --- | --- | --- | --- | --- | --- | --- | --- | --- | --- | --- |
| 1 | 1 | **SAP Implementation at PA** |  | 434.8d | 2024-09-02 A | 2026-04-01 |  | 20% | 348.52d | 2024-09-02 | 2026-03-09 | 418d | 0d |  |  |
| 2 | 1.1 | **Phase 1: S4 HANA Implementation (Public Cloud)** |  | 173.8d | 2024-09-02 A | 2025-04-01 |  | 28% | 125.9d | 2024-09-02 | 2025-03-08 | 154d | 261d |  |  |
| 3 | 1.1.1 | **Implementation** |  | 122.8d | 2024-09-02 A | 2025-01-31 |  | 36% | 78.45d | 2024-09-02 | 2025-01-07 | 102d | 312d |  |  |
| 4 | 1.1.1.1 | **Prepare** |  | 7d | 2024-09-02 A | 2024-09-10 A |  | 100% |  | 2024-09-02 | 2024-09-10 | 7d |  |  |  |
| 5 | 1.1.1.1.1 | **Project Kick Off and On-Boarding** |  | 7d | 2024-09-02 A | 2024-09-10 A |  | 100% |  | 2024-09-02 | 2024-09-09 | 6d |  |  |  |
| 6 | 1.1.1.1.1.1 | On-board Project Team |  | 7d | 2024-09-02 A | 2024-09-10 A |  | 100% |  | 2024-09-02 | 2024-09-09 | 6d |  | finish no earlier than 2024-09-09 | HBT & PA |
| 7 | 1.1.1.1.1.2 | Conduct project kickoff |  | 1d | 2024-09-05 A | 2024-09-05 A | 6SS+3d | 100% |  | 2024-09-05 | 2024-09-05 | 1d |  | start no earlier than 2024-09-05 | HBT & PA |
| 8 | 1.1.1.1.2 | **Project Plan** |  | 4d | 2024-09-02 A | 2024-09-05 A |  | 100% |  | 2024-09-02 | 2024-09-05 | 4d |  |  |  |
| 9 | 1.1.1.1.2.1 | Prepare & submit Initial project plan |  | 1d | 2024-09-02 A | 2024-09-02 A | 6SS | 100% |  | 2024-09-02 | 2024-09-02 | 1d |  | start no earlier than 2024-01-02 | HBT |
| 10 | 1.1.1.1.2.2 | Review project plan |  | 1d | 2024-09-03 A | 2024-09-03 A | 9 | 100% |  | 2024-09-03 | 2024-09-03 | 1d |  |  | PA |
| 11 | 1.1.1.1.2.3 | Make necessary changes in the plan |  | 1d | 2024-09-04 A | 2024-09-04 A | 10 | 100% |  | 2024-09-04 | 2024-09-04 | 1d |  |  | HBT |
| 12 | 1.1.1.1.2.4 | Submit revised plan |  | 1d | 2024-09-04 A | 2024-09-04 A | 11FF | 100% |  | 2024-09-04 | 2024-09-04 | 1d |  |  | PA |
| 13 | 1.1.1.1.2.5 | Approval of project plan by PA |  | 1d | 2024-09-05 A | 2024-09-05 A | 12 | 100% |  | 2024-09-05 | 2024-09-05 | 1d |  |  | PA |
| 14 | 1.1.1.1.3 | **Project Governance** |  | 2d | 2024-09-06 A | 2024-09-09 A |  | 100% |  | 2024-09-09 | 2024-09-09 | 1d |  |  |  |
| 15 | 1.1.1.1.3.1 | Establish Project Governance Mechanism |  | 1d | 2024-09-06 A | 2024-09-09 A | 7FS+1d | 100% |  | 2024-09-09 | 2024-09-09 | 1d |  | start no earlier than 2023-12-04 | HBT |
| 16 | 1.1.1.1.3.2 | Define Project Communications and Reporting |  | 1d | 2024-09-06 A | 2024-09-09 A | 7FS+1d | 100% |  | 2024-09-09 | 2024-09-09 | 1d |  |  | HBT |
| 17 | 1.1.1.1.4 | **Project Standards, Infrastructure & Solution** |  | 1d | 2024-09-06 A | 2024-09-06 A |  | 100% |  | 2024-09-06 | 2024-09-06 | 1d |  |  |  |
| 18 | 1.1.1.1.4.1 | Set Up Project Team Logistics and Infrastructure |  | 1d | 2024-09-06 A | 2024-09-06 A | 7 | 100% |  | 2024-09-06 | 2024-09-06 | 1d |  | start no earlier than 2023-12-05 | PA & HBT |
| 19 | 1.1.1.1.4.2 | Create a Document Repository for the Implementation Project Team |  | 1d | 2024-09-06 A | 2024-09-06 A | 7 | 100% |  | 2024-09-06 | 2024-09-06 | 1d |  |  | PA & HBT |
| 20 | 1.1.1.1.5 | **Fit-to-Standard Analysis Preparation** |  | 1d | 2024-09-09 A | 2024-09-09 A |  | 100% |  | 2024-09-09 | 2024-09-09 | 1d |  |  |  |
| 21 | 1.1.1.1.5.1 | Prepare for Fit-to-Standard Workshops |  | 1d | 2024-09-09 A | 2024-09-09 A | 19 | 100% |  | 2024-09-09 | 2024-09-09 | 1d |  |  | HBT |
| 22 | 1.1.1.1.6 | **Phase Closure and Sign-Off Phase Deliverables** |  | 1d | 2024-09-10 A | 2024-09-10 A |  | 100% |  | 2024-09-10 | 2024-09-10 | 1d |  |  |  |
| 23 | 1.1.1.1.6.1 | Prepare Phase Signoff | milestone | 0d | 2024-09-10 A | 2024-09-10 A | 21 | 100% |  | 2024-09-10 | 2024-09-10 | 1d |  |  | PA |
| 24 | 1.1.1.1.7 | **Deliverables** |  | 1d | 2024-09-10 A | 2024-09-10 A |  | 100% |  | 2024-09-10 | 2024-09-10 | 1d |  |  |  |
| 25 | 1.1.1.1.7.1 | D: Baseline Project Plan |  | 1d | 2024-09-10 A | 2024-09-10 A | 23FF | 100% |  | 2024-09-10 | 2024-09-10 | 1d |  | start no earlier than 2022-11-07 | HBT |
| 26 | 1.1.1.1.7.2 | D: Project kickoff presentation |  | 1d | 2024-09-10 A | 2024-09-10 A | 23FF | 100% |  | 2024-09-10 | 2024-09-10 | 1d |  | start no earlier than 2022-11-07 | HBT |

| ID | WBS | Task | Type | Duration | Start | Finish | Predecessors | Complete | Remaining | Baseline start | Baseline finish | Baseline duration | Total slack | Constraint | Responsibility | remarks |
| --- | --- | --- | --- | --- | --- | --- | --- | --- | --- | --- | --- | --- | --- | --- | --- | --- |
| 27 | 1.1.1.2 | **Explore** |  | 56d | 2024-09-02 A | 2024-11-13 |  | 99% | 0.71d | 2024-09-10 | 2024-10-11 | 24d | 378.8d |  |  |  |
| 28 | 1.1.1.2.1 | **Requirement gathering** |  | 12d | 2024-09-02 A | 2024-09-17 A |  | 100% |  | 2024-09-10 | 2024-09-11 | 2d |  |  |  |  |
| 29 | 1.1.1.2.1.1 | Review AS IS document |  | 6d | 2024-09-02 A | 2024-09-17 A | 21 | 100% |  | 2024-09-10 | 2024-09-11 | 2d |  | start no earlier than 2022-11-04 | PA & HBT | Activity delayed by PAPL |
| 30 | 1.1.1.2.1.2 | Update AS IS document as per discussion |  | 12d | 2024-09-02 A | 2024-09-17 A | 29SS | 100% |  | 2024-09-10 | 2024-09-11 | 2d |  |  | PA | Activity delayed by PAPL |
| 31 | 1.1.1.2.2 | **Fit-to-Standard analysis** |  | 9d | 2024-09-17 A | 2024-09-27 A |  | 100% |  | 2024-09-12 | 2024-09-16 | 3d |  |  |  |  |
| 32 | 1.1.1.2.2.1 | Conduct workshop for all modules |  | 8d | 2024-09-17 A | 2024-09-27 A | 30 | 100% |  | 2024-09-12 | 2024-09-16 | 3d |  |  | HBT | Impacted activity due to AS-IS delay |
| 33 | 1.1.1.2.3 | **Fit to Standard analysis documentation** |  | 45d | 2024-09-16 A | 2024-11-12 |  | 98% | 0.92d | 2024-09-17 | 2024-10-11 | 19d | 379.8d |  |  |  |
| 34 | 1.1.1.2.3.1 | Document Initial Configuration Settings for SAP Central Business Configuration |  | 1d | 2024-09-16 A | 2024-09-16 A | 32 | 100% |  | 2024-09-17 | 2024-09-18 | 2d |  |  | HBT |  |
| 35 | 1.1.1.2.3.2 | Document Scope via SAP Central Business Configuration |  | 3d | 2024-09-17 A | 2024-09-19 A | 34 | 100% |  | 2024-09-19 | 2024-09-20 | 2d |  |  | HBT |  |
| 36 | 1.1.1.2.3.3 | **Document and Maintain Business Process Flows** |  | 37d | 2024-09-20 A | 2024-11-07 A |  | 100% |  | 2024-09-17 | 2024-10-04 | 13d |  |  |  |  |
| 37 | 1.1.1.2.3.3.1 | Prepare fit-to-standard Document and KDS |  | 2.5d | 2024-09-20 A | 2024-10-01 A | 32 | 100% |  | 2024-09-17 | 2024-09-23 | 5d |  |  | HBT | Impacted activity due to AS-IS delay |
| 38 | 1.1.1.2.3.3.2 | Submition of Fit-to-standard and KDS | milestone | 0d | 2024-09-23 A | 2024-10-01 A | 37 | 100% |  | 2024-09-24 | 2024-09-24 | 1d |  |  | HBT |  |
| 39 | 1.1.1.2.3.3.3 | Review of fit-to-standard & KDS by CTM | milestone | 0d | 2024-09-25 A | 2024-10-02 A | 38 | 100% |  | 2024-09-25 | 2024-10-01 | 5d |  |  | HBT & PA |  |
| 40 | 1.1.1.2.3.3.4 | Solution Walkthrough |  | 16d | 2024-10-03 A | 2024-10-21 A | 39 | 100% |  | 2024-10-03 | 2024-10-03 | 1d |  | finish no earlier than 2024-10-21 | HBT & PA |  |
| 41 | 1.1.1.2.3.3.5 | Fit-to-Standard document Signoff |  | 13d | 2024-10-22 A | 2024-11-07 A | 40 | 100% |  | 2024-10-04 | 2024-10-04 | 1d |  | finish no earlier than 2024-11-04 | PA |  |
| 42 | 1.1.1.2.3.4 | Document Configuration Values |  | 14d | 2024-10-14 A | 2024-11-08 | 40 | 85% | 2.1d | 2024-10-04 | 2024-10-05 | 2d | 382.8d | finish no earlier than 2024-11-08 | HBT |  |
| 43 | 1.1.1.2.3.5 | **Data migration requirements** |  | 14d | 2024-10-07 A | 2024-10-22 A |  | 100% |  | 2024-10-07 | 2024-10-09 | 3d |  |  |  |  |
| 44 | 1.1.1.2.3.5.1 | Identify master data requirement |  | 1d | 2024-10-07 A | 2024-10-07 A | 42 | 100% |  | 2024-10-07 | 2024-10-07 | 1d |  |  | HBT |  |
| 45 | 1.1.1.2.3.5.2 | Prepare and explain master data template |  | 11d | 2024-10-10 A | 2024-10-22 A | 44 | 100% |  | 2024-10-08 | 2024-10-09 | 2d |  | as late as possible | HBT |  |
| 46 | 1.1.1.2.3.5.3 | Circulate master data template |  | 8d | 2024-10-10 A | 2024-10-22 A | 45FF | 100% |  | 2024-10-09 | 2024-10-09 | 1d |  |  | HBT |  |
| 47 | 1.1.1.2.3.6 | Confirm Backlog and prioritise (SIT/UAT, Golive, Post-Golive) |  | 10d | 2024-10-11 A | 2024-11-12 A | 46 | 100% |  | 2024-10-10 | 2024-10-11 | 2d |  | as late as possible | HBT & PA |  |
| 48 | 1.1.1.2.3.7 | **Integration Planning and Design** |  | 28d | 2024-10-09 A | 2024-11-12 A |  | 100% |  | 2024-10-04 | 2024-10-09 | 5d |  |  |  |  |
| 49 | 1.1.1.2.3.7.1 | Integration with ASP/GSP |  | 1d | 2024-10-09 A | 2024-10-09 A | 40 | 100% |  | 2024-10-04 | 2024-10-09 | 5d |  |  | HBT & PA |  |
| 50 | 1.1.1.2.3.7.2 | Integration with bank host to host (upto 3) |  | 1d | 2024-10-09 A | 2024-10-09 A | 40 | 100% |  | 2024-10-04 | 2024-10-09 | 5d |  | as late as possible | HBT & PA |  |
| 51 | 1.1.1.2.3.7.3 | Integration with Primavera |  | 4d | 2024-10-11 A | 2024-10-25 A | 40 | 100% |  | 2024-10-04 | 2024-10-09 | 5d |  |  | HBT & PA |  |
| 52 | 1.1.1.2.3.7.4 | Integration with third party payroll |  | 17d | 2024-10-11 A | 2024-11-12 A | 40 | 100% |  | 2024-10-04 | 2024-10-09 | 5d |  | finish no earlier than 2024-11-12 | HBT & PA |  |

| ID | WBS | Task | Type | Duration | Start | Finish | Predecessors | Complete | Remaining | Baseline start | Baseline finish | Baseline duration | Total slack | Constraint | Responsibility |
| --- | --- | --- | --- | --- | --- | --- | --- | --- | --- | --- | --- | --- | --- | --- | --- |
| 53 | 1.1.1.2.4 | **Getting Started with your SAP Implementation** |  | 1d | 2024-10-07 A | 2024-10-07 A |  | 100% |  | 2024-09-23 | 2024-10-01 | 7d |  |  |  |
| 54 | 1.1.1.2.4.1 | Review Overview Documentation |  | 1d | 2024-10-07 A | 2024-10-07 A | 35 | 100% |  | 2024-09-23 | 2024-09-24 | 2d |  |  | HBT |
| 55 | 1.1.1.2.4.2 | Organize Provisioning Emails |  | 1d | 2024-10-07 A | 2024-10-07 A | 54 | 100% |  | 2024-09-25 | 2024-09-27 | 3d |  |  | HBT |
| 56 | 1.1.1.2.4.3 | Ensure Project Team Members Access to the SAP Support Portal, SAP Best Practices Explorer, and SAP Customer Communities |  | 1d | 2024-10-07 A | 2024-10-07 A | 55 | 100% |  | 2024-09-30 | 2024-10-01 | 2d |  |  | HBT |
| 57 | 1.1.1.2.5 | **SAP Cloud ALM Onboarding** |  | 9d | 2024-09-03 A | 2024-09-13 A |  | 100% |  | 2024-10-03 | 2024-10-04 | 2d |  |  |  |
| 58 | 1.1.1.2.5.1 | Request SAP Cloud ALM Tenant | milestone | 9d | 2024-09-03 A | 2024-09-13 A | 56 | 100% |  | 2024-10-03 | 2024-10-03 | 1d |  |  | HBT |
| 59 | 1.1.1.2.5.2 | Access SAP Cloud ALM and Create Users |  | 1d | 2024-09-13 A | 2024-09-13 A | 58 | 100% |  | 2024-10-04 | 2024-10-04 | 1d |  |  | HBT |
| 60 | 1.1.1.2.6 | **Initial System Access for Central Business Configuration** |  | 13d | 2024-09-03 A | 2024-09-19 A |  | 100% |  | 2024-10-05 | 2024-10-08 | 3d |  |  |  |
| 61 | 1.1.1.2.6.1 | Access the SAP Central Business Configuration | milestone | 6d | 2024-09-03 A | 2024-09-10 A | 59 | 100% |  | 2024-10-05 | 2024-10-05 | 1d |  |  | HBT |
| 62 | 1.1.1.2.6.2 | Set Up Starter Project in SAP Central Business Configuration |  | 1d | 2024-09-11 A | 2024-09-11 A | 61 | 100% |  | 2024-10-07 | 2024-10-07 | 1d |  |  | HBT |
| 63 | 1.1.1.2.6.3 | Set Up SAP Central Business Configuration Integration |  | 5d | 2024-09-13 A | 2024-09-19 A | 62 | 100% |  | 2024-10-08 | 2024-10-08 | 1d |  |  | HBT |
| 64 | 1.1.1.2.7 | **Initial System Access for SAP S/4HANA Cloud** |  | 14d | 2024-09-03 A | 2024-09-20 A |  | 100% |  | 2024-09-12 | 2024-09-16 | 3d |  |  |  |
| 65 | 1.1.1.2.7.1 | Access Starter System and Reset Password |  | 6d | 2024-09-03 A | 2024-09-10 A | 29 | 100% |  | 2024-09-12 | 2024-09-12 | 1d |  |  | HBT |
| 66 | 1.1.1.2.7.2 | Create Users in the Starter System |  | 1d | 2024-09-10 A | 2024-09-11 A | 65 | 100% |  | 2024-09-13 | 2024-09-13 | 1d |  |  | HBT |
| 67 | 1.1.1.2.7.3 | Self-Activation of Project Team Members in the Identity Authentication Service |  | 1d | 2024-09-20 A | 2024-09-20 A | 66 | 100% |  | 2024-09-16 | 2024-09-16 | 1d |  |  | HBT |
| 68 | 1.1.1.2.8 | **Phase Closure and Sign-Off Phase Deliverables** |  | 2d | 2024-11-12 A | 2024-11-13 A |  | 100% |  | 2024-10-11 | 2024-10-11 | 1d |  |  |  |
| 69 | 1.1.1.2.8.1 | Explore Phase Signoff |  | 2d | 2024-11-12 A | 2024-11-13 A | 47FF | 100% |  | 2024-10-11 | 2024-10-11 | 1d |  |  | PA |
| 70 | 1.1.1.2.9 | **Deliverables** |  | 19d | 2024-09-27 A | 2024-10-21 A |  | 100% |  | 2024-10-05 | 2024-10-10 | 5d |  |  |  |
| 71 | 1.1.1.2.9.1 | Fit to Standard documents with Process flow diagram, Gap Analysis |  | 1d | 2024-10-21 A | 2024-10-21 A | 41 | 100% |  | 2024-10-05 | 2024-10-05 | 1d |  |  | HBT |
| 72 | 1.1.1.2.9.2 | Core team training/ presentation |  | 1d | 2024-09-27 A | 2024-09-27 A | 41 | 100% |  | 2024-10-05 | 2024-10-05 | 1d |  |  | HBT |
| 73 | 1.1.1.2.9.3 | Initial Master data templates | milestone | 0d | 2024-10-18 A | 2024-10-18 A | 46 | 100% |  | 2024-10-10 | 2024-10-10 | 1d |  |  | HBT |
| 74 | 1.1.1.3 | **Realize** |  | 51.9d | 2024-10-29 A | 2024-12-31 |  | 1% | 51.44d | 2024-10-12 | 2024-12-05 | 45d | 338.9d |  |  |
| 75 | 1.1.1.3.1 | **Requirement gathering sheet (RGS)** |  | 16.75d | 2024-10-29 A | 2024-11-19 |  | 27% | 12.21d | 2024-10-12 | 2024-10-16 | 4d | 374.05d |  |  |
| 76 | 1.1.1.3.1.1 | Prepare RGS |  | 4.9d | 2024-10-29 A | 2024-11-18 | 47 | 28% | 3.55d | 2024-10-12 | 2024-10-15 | 3d | 0d | finish no earlier than 2024-11-18 | HBT & PAPL |
| 77 | 1.1.1.3.1.2 | Submit RGS |  | 1d | 2024-10-30 A | 2024-11-19 | 76 | 25% | 0.75d | 2024-10-16 | 2024-10-16 | 1d | 374.05d | finish no earlier than 2024-11-18 | HBT & PAPL |

| ID | WBS | Task | Duration | Start | Finish | Predecessors | Remaining | Baseline start | Baseline finish | Baseline duration | Total slack | Free slack | Constraint | Responsibility |
| --- | --- | --- | --- | --- | --- | --- | --- | --- | --- | --- | --- | --- | --- | --- |
| 78 | 1.1.1.3.2 | **Functional Specifications** | 6d | 2024-11-19 | 2024-11-25 |  |  | 2024-10-16 | 2024-10-22 | 6d | 0d |  |  |  |
| 79 | 1.1.1.3.2.1 | Prepare functional specfications | 4d | 2024-11-19 | 2024-11-22 | 76 |  | 2024-10-16 | 2024-10-19 | 4d | 0d |  |  | HBT |
| 80 | 1.1.1.3.2.2 | Finalize development tracker | 2d | 2024-11-23 | 2024-11-25 | 79 |  | 2024-10-21 | 2024-10-22 | 2d | 368.8d |  |  | HBT |
| 81 | 1.1.1.3.3 | **Solution Configuration** | 24.9d | 2024-10-29 A | 2024-11-28 |  | 24.9d | 2024-10-21 | 2024-11-02 | 10d | 0d |  |  |  |
| 82 | 1.1.1.3.3.1 | Configure Processes and Functions in golden master (100) | 1d | 2024-10-29 A | 2024-11-23 | 79 | 1d | 2024-10-21 | 2024-10-25 | 5d | 0d |  | finish no earlier than 2024-11-12 | HBT |
| 83 | 1.1.1.3.3.2 | Transfer of Configuration to Dev testing | 0.9d | 2024-11-25 | 2024-11-25 | 82 |  | 2024-10-26 | 2024-10-26 | 1d | 0d |  | finish no earlier than 2024-11-22 | HBT |
| 84 | 1.1.1.3.3.3 | Unit testing-1 (Consultant) | 2d | 2024-11-25 | 2024-11-27 | 83 |  | 2024-10-28 | 2024-10-30 | 3d | 0d |  |  | HBT |
| 85 | 1.1.1.3.3.4 | Document and Resolve Issues | 2d | 2024-11-25 | 2024-11-27 | 84SS |  | 2024-10-28 | 2024-10-30 | 3d | 0d |  |  | HBT |
| 86 | 1.1.1.3.3.5 | Submit Unit Testing result & completion of baseline config | 1d | 2024-11-27 | 2024-11-28 | 85 |  | 2024-11-02 | 2024-11-02 | 1d | 0d |  |  | HBT |
| 87 | 1.1.1.3.4 | **Core team training & UT** | 12d | 2024-11-27 | 2024-12-11 |  |  | 2024-11-02 | 2024-11-15 | 12d | 0d |  |  |  |
| 88 | 1.1.1.3.4.1 | Plan for CTM training | 1d | 2024-11-27 | 2024-11-28 | 86FF |  | 2024-11-02 | 2024-11-02 | 1d | 0d |  |  | HBT |
| 89 | 1.1.1.3.4.2 | Making necessery training arrangement - PPT + tutorial | 2d | 2024-11-28 | 2024-11-30 | 88 |  | 2024-11-04 | 2024-11-05 | 2d | 0d |  |  | HBT |
| 90 | 1.1.1.3.4.3 | Conducting CTM Training (Module wise) | 3d | 2024-11-30 | 2024-12-04 | 89 |  | 2024-11-06 | 2024-11-08 | 3d | 0d |  |  | HBT |
| 91 | 1.1.1.3.4.4 | Unit Testing by Core team | 6d | 2024-12-04 | 2024-12-11 | 90 |  | 2024-11-09 | 2024-11-15 | 6d | 348.9d | 0d |  | PA |
| 92 | 1.1.1.3.5 | **Quality System Request / Initial Setup** | 1d | 2024-11-14 | 2024-11-14 |  |  | 2024-10-12 | 2024-10-12 | 1d | 372.8d |  |  |  |
| 93 | 1.1.1.3.5.1 | Execute Initial Setup of the Quality System via SAP Central Business Configuration | 1d | 2024-11-14 | 2024-11-14 | 69 |  | 2024-10-12 | 2024-10-12 | 1d | 377.8d |  |  | HBT |
| 94 | 1.1.1.3.5.2 | Request Quality System via Manage Your Solution App | 1d | 2024-11-14 | 2024-11-14 | 69 |  | 2024-10-12 | 2024-10-12 | 1d | 372.8d | 0d |  | HBT |
| 95 | 1.1.1.3.6 | **Quality System Initial Access** | 6d | 2024-11-14 | 2024-11-20 |  |  | 2024-10-12 | 2024-10-19 | 7d | 372.8d |  |  |  |
| 96 | 1.1.1.3.6.1 | Receive Quality System and Reset Password | 1d | 2024-11-15 | 2024-11-15 | 94 |  | 2024-10-14 | 2024-10-14 | 1d | 372.8d | 0d |  | HBT |
| 97 | 1.1.1.3.6.2 | Create Preset Configuration User in the Quality System via Manage Your Solution App | 1d | 2024-11-16 | 2024-11-16 | 96 |  | 2024-10-15 | 2024-10-15 | 1d | 374.8d | 0d |  | HBT |
| 98 | 1.1.1.3.6.3 | Define Preset Parameters and Trigger System Activation via Manage Your Solution App | 1d | 2024-11-18 | 2024-11-18 | 97 |  | 2024-10-16 | 2024-10-16 | 1d | 374.8d |  |  | HBT |
| 99 | 1.1.1.3.6.4 | **Create Users in the Quality Server** | 5d | 2024-11-14 | 2024-11-19 |  |  | 2024-10-12 | 2024-10-18 | 6d | 372.8d |  |  | HBT |
| 100 | 1.1.1.3.6.4.1 | **Finalize list of users for QAS** | 5d | 2024-11-14 | 2024-11-19 |  |  | 2024-10-12 | 2024-10-18 | 6d | 372.8d |  |  | HBT |
| 101 | 1.1.1.3.6.4.1.1 | **Provide user authorization** | 5d | 2024-11-14 | 2024-11-19 |  |  | 2024-10-12 | 2024-10-18 | 6d | 372.8d |  |  | HBT |
| 102 | 1.1.1.3.6.4.1.1.1 | Finalize user authorization | 1d | 2024-11-14 | 2024-11-14 | 69 |  | 2024-10-12 | 2024-10-14 | 2d | 372.8d | 0d |  | HBT |
| 103 | 1.1.1.3.6.4.1.1.2 | Create roles and authorization | 1d | 2024-11-15 | 2024-11-15 | 102 |  | 2024-10-15 | 2024-10-15 | 1d | 372.8d | 0d |  | HBT |
| 104 | 1.1.1.3.6.4.1.1.3 | Testing of roles and authorization | 2d | 2024-11-16 | 2024-11-18 | 103 |  | 2024-10-16 | 2024-10-17 | 2d | 372.8d | 0d |  | HBT |
| 105 | 1.1.1.3.6.4.1.1.4 | Deployment of roles to users | 1d | 2024-11-19 | 2024-11-19 | 104 |  | 2024-10-18 | 2024-10-18 | 1d | 372.8d | 0d |  | HBT |
| 106 | 1.1.1.3.6.5 | Self-Activation of Project Team Members in the Identity Authentication Service | 1d | 2024-11-20 | 2024-11-20 | 105 |  | 2024-10-19 | 2024-10-19 | 1d | 372.8d |  |  | HBT |

| ID | WBS | Task | Duration | Start | Finish | Predecessors | Baseline start | Baseline finish | Baseline duration | Total slack | Free slack | Constraint | Responsibility |
| --- | --- | --- | --- | --- | --- | --- | --- | --- | --- | --- | --- | --- | --- |
| 107 | 1.1.1.3.7 | **Required Configuration Before System Use - SAP S/4HANA Cloud** | 1d | 2024-11-16 | 2024-11-16 |  | 2024-10-15 | 2024-10-15 | 1d | 372.8d |  |  |  |
| 108 | 1.1.1.3.7.1 | Configure system | 1d | 2024-11-16 | 2024-11-16 | 96 | 2024-10-15 | 2024-10-15 | 1d | 372.8d | 0d |  | HBT |
| 109 | 1.1.1.3.8 | **Standard Integration Setup in the Quality/Test System** | 3d | 2024-11-18 | 2024-11-20 |  | 2024-10-16 | 2024-10-18 | 3d | 372.8d |  |  |  |
| 110 | 1.1.1.3.8.1 | Set Up Integration using Cloud Integration Automation Service (CIAS) | 1d | 2024-11-18 | 2024-11-18 | 108 | 2024-10-16 | 2024-10-16 | 1d | 372.8d | 0d |  | HBT |
| 111 | 1.1.1.3.8.2 | Set Up Employee Central Integration (JB1) | 1d | 2024-11-19 | 2024-11-19 | 110 | 2024-10-17 | 2024-10-17 | 1d | 372.8d | 0d |  | HBT |
| 112 | 1.1.1.3.8.3 | Set Up Integrations in the Quality/Test System | 1d | 2024-11-20 | 2024-11-20 | 111 | 2024-10-18 | 2024-10-18 | 1d | 372.8d |  |  | HBT |
| 113 | 1.1.1.3.9 | **System Integration Test** | 37.9d | 2024-11-15 | 2024-12-30 |  | 2024-10-12 | 2024-12-04 | 44d | 14.9d |  |  |  |
| 114 | 1.1.1.3.9.1 | **Integration test Plan** | 17.9d | 2024-11-15 | 2024-12-05 |  | 2024-10-12 | 2024-11-11 | 24d | 14.9d |  |  |  |
| 115 | 1.1.1.3.9.1.1 | Identify scenerios for Integration test | 1d | 2024-12-04 | 2024-12-05 | 90 | 2024-11-09 | 2024-11-11 | 2d | 0d |  |  | HBT |
| 116 | 1.1.1.3.9.1.2 | Write scripts for Integration test | 1d | 2024-12-04 | 2024-12-05 | 115SS | 2024-11-09 | 2024-11-11 | 2d | 0d |  |  | HBT |
| 117 | 1.1.1.3.9.1.3 | **Master data** | 11d | 2024-11-21 | 2024-12-03 |  | 2024-10-22 | 2024-11-07 | 13d | 361.8d |  |  |  |
| 118 | 1.1.1.3.9.1.3.1 | Receipt Master Data from PA | 8d | 2024-11-21 | 2024-11-29 | 46FS+10d | 2024-10-22 | 2024-11-04 | 10d | 361.8d | 0d | finish no earlier than 2024-11-29 | PA |
| 119 | 1.1.1.3.9.1.3.2 | Upload Master data in QAS | 3d | 2024-11-30 | 2024-12-03 | 118 | 2024-11-05 | 2024-11-07 | 3d | 361.8d |  |  | HBT |
| 120 | 1.1.1.3.9.1.4 | **Identity and Access Management Planning and Design** | 10d | 2024-11-15 | 2024-11-26 |  | 2024-10-12 | 2024-11-06 | 20d | 14.9d |  |  |  |
| 121 | 1.1.1.3.9.1.4.1 | Finalize list of users | 5d | 2024-11-15 | 2024-11-20 | 69 | 2024-10-12 | 2024-10-29 | 15d | 14.9d | 0d | finish no earlier than 2024-11-20 | PA |
| 122 | 1.1.1.3.9.1.4.2 | Provide & Check roles and authorization | 5d | 2024-11-21 | 2024-11-26 | 121 | 2024-10-30 | 2024-11-06 | 5d | 14.9d |  |  | PA |
| 123 | 1.1.1.3.9.2 | **Conduct System integration test** | 20d | 2024-12-05 | 2024-12-30 |  | 2024-11-12 | 2024-12-04 | 20d | 0d |  |  |  |
| 124 | 1.1.1.3.9.2.1 | Perform Integration testing by Consultant | 7d | 2024-12-05 | 2024-12-13 | 116 | 2024-11-12 | 2024-11-19 | 7d | 0d |  |  | HBT |
| 125 | 1.1.1.3.9.2.2 | Perform User Acceptance test - CTM | 10d | 2024-12-13 | 2024-12-26 | 124, 122 | 2024-11-20 | 2024-11-30 | 10d | 0d |  |  | PA |
| 126 | 1.1.1.3.9.2.3 | Resolving the issues, if any | 10d | 2024-12-13 | 2024-12-26 | 125SS | 2024-11-20 | 2024-11-30 | 10d | 0d |  |  | HBT |
| 127 | 1.1.1.3.9.2.4 | Retesting of scenarios | 3d | 2024-12-26 | 2024-12-30 | 126 | 2024-12-02 | 2024-12-04 | 3d | 0d |  |  | PA |
| 128 | 1.1.1.3.9.2.5 | UAT (by CTM) signoff | 1d | 2024-12-28 | 2024-12-30 | 127FF | 2024-12-04 | 2024-12-04 | 1d | 0d |  |  | PA |
| 129 | 1.1.1.3.9.3 | **ABAP Development - SIT Critical** | 28d | 2024-11-25 | 2024-12-27 |  | 2024-10-26 | 2024-12-03 | 31d | 7.9d |  |  |  |
| 130 | 1.1.1.3.9.3.1 | Develop reports | 22d | 2024-11-25 | 2024-12-19 | 82 | 2024-10-26 | 2024-11-26 | 25d | 7.9d | 0d |  | HBT |
| 131 | 1.1.1.3.9.3.2 | Testing by consultant | 20d | 2024-11-28 | 2024-12-20 | 130SS+3d | 2024-10-30 | 2024-11-29 | 25d | 341.8d | 0d |  | HBT |
| 132 | 1.1.1.3.9.3.3 | Testing by CTM | 22d | 2024-12-02 | 2024-12-27 | 131SS+3d | 2024-11-05 | 2024-12-03 | 25d | 341.8d | 0d |  | PA |
| 133 | 1.1.1.3.9.3.4 | Sign off Development | 1d | 2024-12-27 | 2024-12-27 | 132FF | 2024-12-03 | 2024-12-03 | 1d | 341.8d |  |  | PA |

| ID | WBS | Task | Duration | Start | Finish | Predecessors | Baseline start | Baseline finish | Baseline duration | Total slack | Free slack | Constraint | Responsibility |
| --- | --- | --- | --- | --- | --- | --- | --- | --- | --- | --- | --- | --- | --- |
| 134 | 1.1.1.3.10 | **Cutover Strategy** | 1d | 2024-12-30 | 2024-12-31 |  | 2024-12-05 | 2024-12-05 | 1d | 0d |  |  |  |
| 135 | 1.1.1.3.10.1 | Discussion on cutover strategy | 1d | 2024-12-30 | 2024-12-31 | 128 | 2024-12-05 | 2024-12-05 | 1d | 0d |  |  | PA & HBT |
| 136 | 1.1.1.3.10.2 | Cutover & data responsibility Plan | 1d | 2024-12-30 | 2024-12-31 | 135FF | 2024-12-05 | 2024-12-05 | 1d | 0d |  |  | PA & HBT |
| 137 | 1.1.1.3.10.3 | Communication to Organisation for Cutover | 1d | 2024-12-30 | 2024-12-31 | 136FF | 2024-12-05 | 2024-12-05 | 1d | 0d |  |  | PA |
| 138 | 1.1.1.3.11 | **End user training plan** | 2d | 2024-12-11 | 2024-12-13 |  | 2024-11-16 | 2024-11-18 | 2d | 348.9d |  |  |  |
| 139 | 1.1.1.3.11.1 | Preparation of End User training plan | 2d | 2024-12-11 | 2024-12-13 | 91 | 2024-11-16 | 2024-11-18 | 2d | 348.9d | 0d |  | PA & HBT |
| 140 | 1.1.1.3.11.2 | Communicate plan to PA | 1d | 2024-12-12 | 2024-12-13 | 139FF | 2024-11-18 | 2024-11-18 | 1d | 348.9d | 0d |  | PA |
| 141 | 1.1.1.3.12 | **Production System Request** | 2d | 2024-11-14 | 2024-11-15 |  | 2024-10-12 | 2024-10-14 | 2d | 374.8d |  |  |  |
| 142 | 1.1.1.3.12.1 | Request for Production System | 1d | 2024-11-14 | 2024-11-14 | 69 | 2024-10-12 | 2024-10-12 | 1d | 374.8d | 0d |  | HBT |
| 143 | 1.1.1.3.12.2 | Request Access to the SAP S/4HANA Cloud Release Assessment Tool. | 1d | 2024-11-15 | 2024-11-15 | 142 | 2024-10-14 | 2024-10-14 | 1d | 374.8d | 0d |  | HBT |
| 144 | 1.1.1.3.13 | **Production System Initial Access** | 2d | 2024-11-16 | 2024-11-18 |  | 2024-10-15 | 2024-10-16 | 2d | 374.8d |  |  |  |
| 145 | 1.1.1.3.13.1 | Receive Production System and Reset Password | 1d | 2024-11-16 | 2024-11-16 | 143 | 2024-10-15 | 2024-10-15 | 1d | 374.8d | 0d |  | PA |
| 146 | 1.1.1.3.13.2 | Transport Initial Change Project from Q-System to P-System | 1d | 2024-11-18 | 2024-11-18 | 145 | 2024-10-16 | 2024-10-16 | 1d | 374.8d |  |  | HBT |
| 147 | 1.1.1.3.14 | Phase Closure & Signoff Phase deliverables | 1d | 2024-12-30 | 2024-12-31 | 128 | 2024-12-05 | 2024-12-05 | 1d | 338.9d |  |  | PA |
| 148 | 1.1.1.3.15 | **Deliverables** | 27d | 2024-11-28 | 2024-12-31 |  | 2024-11-04 | 2024-12-05 | 28d | 338.9d |  |  |  |
| 149 | 1.1.1.3.15.1 | D: Test scripts | 1d | 2024-12-05 | 2024-12-06 | 116 | 2024-11-12 | 2024-11-12 | 1d | 358.9d |  |  | HBT |
| 150 | 1.1.1.3.15.2 | D: Unit test result document | 1d | 2024-11-28 | 2024-11-29 | 86 | 2024-11-04 | 2024-11-04 | 1d | 364.9d |  |  | HBT |
| 151 | 1.1.1.3.15.3 | D: Integration testing document | 1d | 2024-12-13 | 2024-12-14 | 124 | 2024-11-20 | 2024-11-20 | 1d | 351.9d |  |  | HBT |
| 152 | 1.1.1.3.15.4 | D: User Acceptance testing document | 1d | 2024-12-28 | 2024-12-30 | 128FF | 2024-12-04 | 2024-12-04 | 1d | 339.9d |  |  | HBT |
| 153 | 1.1.1.3.15.5 | D: Final master data templates | 1d | 2024-12-30 | 2024-12-31 | 137FF | 2024-12-05 | 2024-12-05 | 1d | 338.9d |  |  | HBT |
| 154 | 1.1.1.3.15.6 | D: Data migration strategy document | 1d | 2024-12-30 | 2024-12-31 | 137FF | 2024-12-05 | 2024-12-05 | 1d | 338.9d |  |  | HBT |
| 155 | 1.1.1.4 | **Deploy** | 43.8d | 2024-12-11 | 2025-01-31 |  | 2024-11-19 | 2025-01-07 | 42d | 15.9d |  |  |  |
| 156 | 1.1.1.4.1 | **ABAP Developments Pre Go Live** | 27d | 2024-12-20 | 2025-01-21 |  | 2024-11-27 | 2025-01-06 | 34d | 7.9d |  |  |  |
| 157 | 1.1.1.4.1.1 | Develop reports | 20d | 2024-12-20 | 2025-01-13 | 130 | 2024-11-27 | 2024-12-28 | 27d | 7.9d | 0d | start no earlier than 2022-12-20 | HBT |
| 158 | 1.1.1.4.1.2 | Testing by consultant | 20d | 2024-12-24 | 2025-01-16 | 157SS+3d | 2024-11-30 | 2025-01-01 | 27d | 7.9d | 0d |  | HBT |
| 159 | 1.1.1.4.1.3 | Testing by CTM | 20d | 2024-12-27 | 2025-01-18 | 158SS+2d | 2024-12-03 | 2025-01-03 | 27d | 7.9d | 0d |  | PA |
| 160 | 1.1.1.4.1.4 | Sign off Development | 2d | 2025-01-20 | 2025-01-21 | 159 | 2025-01-04 | 2025-01-06 | 2d | 7.9d |  |  | PA |

| ID | WBS | Task | Duration | Start | Finish | Predecessors | Baseline start | Baseline finish | Baseline duration | Total slack | Free slack | Responsibility |
| --- | --- | --- | --- | --- | --- | --- | --- | --- | --- | --- | --- | --- |
| 161 | 1.1.1.4.2 | **End User Training** | 10d | 2024-12-31 | 2025-01-11 |  | 2024-12-06 | 2024-12-17 | 10d | 327.9d |  |  |
| 162 | 1.1.1.4.2.1 | Prepare end user training manual | 2d | 2024-12-31 | 2025-01-02 | 137 | 2024-12-06 | 2024-12-07 | 2d | 327.9d | 0d | PA |
| 163 | 1.1.1.4.2.2 | Conduct end user training | 5d | 2025-01-02 | 2025-01-08 | 162 | 2024-12-09 | 2024-12-13 | 5d | 327.9d | 0d | PA |
| 164 | 1.1.1.4.2.3 | Conduct training to HODs/Management | 3d | 2025-01-08 | 2025-01-11 | 163 | 2024-12-14 | 2024-12-17 | 3d | 328.9d |  | PA |
| 165 | 1.1.1.4.3 | **Production Environment Preparation** | 3d | 2024-12-30 | 2025-01-02 |  | 2024-12-05 | 2024-12-07 | 3d | 336.9d |  |  |
| 166 | 1.1.1.4.3.1 | Transport final configurations | 1d | 2024-12-30 | 2024-12-31 | 128 | 2024-12-05 | 2024-12-05 | 1d | 336.9d | 0d | HBT |
| 167 | 1.1.1.4.3.2 | Maintain number ranges | 1d | 2024-12-31 | 2025-01-01 | 166 | 2024-12-06 | 2024-12-06 | 1d | 336.9d | 0d | HBT |
| 168 | 1.1.1.4.3.3 | Maintain client specific data | 1d | 2025-01-01 | 2025-01-02 | 167 | 2024-12-07 | 2024-12-07 | 1d | 336.9d |  | HBT |
| 169 | 1.1.1.4.4 | **User creation** | 25d | 2024-12-13 | 2025-01-13 |  | 2024-11-19 | 2024-12-18 | 26d | 327.9d |  |  |
| 170 | 1.1.1.4.4.1 | Finalize list of users for production enviornment | 2d | 2024-12-13 | 2024-12-16 | 140 | 2024-11-19 | 2024-11-20 | 2d | 348.9d | 0d | PA & HBT |
| 171 | 1.1.1.4.4.2 | Finalise Authorization Matrix | 2d | 2024-12-16 | 2024-12-18 | 170 | 2024-11-21 | 2024-11-22 | 2d | 348.9d |  | PA & HBT |
| 172 | 1.1.1.4.4.3 | Check roles and authorization | 4d | 2025-01-08 | 2025-01-13 | 163 | 2024-12-14 | 2024-12-18 | 4d | 327.9d |  | PA & HBT |
| 173 | 1.1.1.4.5 | **Data preparation and upload** | 42.9d | 2024-12-11 | 2025-01-30 |  | 2024-11-28 | 2025-01-06 | 33d | 16.9d |  |  |
| 174 | 1.1.1.4.5.1 | Receipt of master data | 10d | 2024-12-11 | 2024-12-21 | 46FS+40d | 2024-11-28 | 2024-12-20 | 20d | 21.9d | 0d | PA |
| 175 | 1.1.1.4.5.2 | Validate & cleanse master data | 1d | 2024-12-23 | 2024-12-23 | 174 | 2024-12-21 | 2024-12-21 | 1d | 21.9d | 0d | PA |
| 176 | 1.1.1.4.5.3 | Upload master data in Production | 4d | 2024-12-24 | 2024-12-28 | 175 | 2024-12-23 | 2024-12-27 | 4d | 21.9d | 0d | PA & HBT |
| 177 | 1.1.1.4.5.4 | Confirm uploaded master data | 1d | 2024-12-30 | 2024-12-30 | 176 | 2024-12-28 | 2024-12-28 | 1d | 339.8d |  | PA |
| 178 | 1.1.1.4.5.5 | Receipt of cutover data | 20d | 2024-12-31 | 2025-01-23 | 137 | 2024-12-06 | 2024-12-30 | 20d | 0d |  | PA |
| 179 | 1.1.1.4.5.6 | Validate & cleanse cutover data | 6d | 2025-01-23 | 2025-01-30 | 178 | 2024-12-31 | 2025-01-06 | 6d | 312.9d |  | PA |
| 180 | 1.1.1.4.5.7 | Upload cutover data in production | 6d | 2025-01-23 | 2025-01-30 | 178, 176 | 2024-12-31 | 2025-01-06 | 6d | 0d |  | PA & HBT |
| 181 | 1.1.1.4.5.8 | Check and validate uploaded data | 1d | 2025-01-29 | 2025-01-30 | 180FF | 2025-01-06 | 2025-01-06 | 1d | 0d |  | PA |
| 182 | 1.1.1.4.6 | **Deliverables** | 17d | 2024-12-16 | 2025-01-06 |  | 2024-11-21 | 2024-12-31 | 34d | 333.9d |  |  |
| 183 | 1.1.1.4.6.1 | D: End user training manual | 3d | 2025-01-02 | 2025-01-06 | 162 | 2024-12-09 | 2024-12-11 | 3d | 333.9d |  | HBT |
| 184 | 1.1.1.4.6.2 | D: Data migration plan & checklist | 3d | 2024-12-23 | 2024-12-26 | 174 | 2024-12-21 | 2024-12-24 | 3d | 342.8d |  | HBT |
| 185 | 1.1.1.4.6.3 | D: Master data upload programs | 3d | 2024-12-30 | 2025-01-01 | 176 | 2024-12-28 | 2024-12-31 | 3d | 337.8d |  | HBT |
| 186 | 1.1.1.4.6.4 | D: Sample data upload validation | 1d | 2024-12-30 | 2024-12-30 | 176 | 2024-12-28 | 2024-12-28 | 1d | 339.8d |  | HBT |
| 187 | 1.1.1.4.6.5 | D: Final SAP Authorization matrix | 1d | 2024-12-16 | 2024-12-17 | 170 | 2024-11-21 | 2024-11-21 | 1d | 349.9d |  | HBT |

| ID | WBS | Task | Duration | Start | Finish | Predecessors | Baseline start | Baseline finish | Baseline duration | Total slack | Constraint | Responsibility |
| --- | --- | --- | --- | --- | --- | --- | --- | --- | --- | --- | --- | --- |
| 188 | 1.1.1.4.7 | **Phase Closure & Sign Off Phase Deliverables** | 1d | 2025-01-30 | 2025-01-31 |  | 2025-01-07 | 2025-01-07 | 1d | 0d |  |  |
| 189 | 1.1.1.4.7.1 | Deploy signoff | 0.9d | 2025-01-30 | 2025-01-31 | 181, 160 | 2025-01-07 | 2025-01-07 | 1d | 0d |  | PA |
| 190 | 1.1.1.4.7.2 | Completion of Final Preparation (Deploy) Phase | 1d | 2025-01-30 | 2025-01-31 | 189FF | 2025-01-07 | 2025-01-07 | 1d | 0d |  | PA |
| 191 | 1.1.2 | Go Live | 0.1d | 2025-01-31 | 2025-01-31 | 190FF | 2025-01-08 | 2025-01-08 | 1d | 0d |  | PA & HBT |
| 192 | 1.1.3 | **Stabilization** | 27d | 2025-01-31 | 2025-03-04 |  | 2025-01-09 | 2025-02-08 | 27d | 0d |  |  |
| 193 | 1.1.3.1 | Stabilization | 27d | 2025-01-31 | 2025-03-04 | 191 | 2025-01-09 | 2025-02-08 | 27d | 0d |  | PA & HBT |
| 194 | 1.1.3.2 | **Deliverables** | 27d | 2025-01-31 | 2025-03-04 |  | 2025-01-09 | 2025-02-08 | 27d | 285d |  |  |
| 195 | 1.1.3.2.1 | D: Issue list with resolution status | 27d | 2025-01-31 | 2025-03-04 | 193SS | 2025-01-09 | 2025-02-08 | 27d | 285d |  | HBT |
| 196 | 1.1.3.2.2 | D: Configuration documents | 27d | 2025-01-31 | 2025-03-04 | 193SS | 2025-01-09 | 2025-02-08 | 27d | 285d |  | HBT |
| 197 | 1.1.3.2.3 | D: FS & TS | 27d | 2025-01-31 | 2025-03-04 | 193SS | 2025-01-09 | 2025-02-08 | 27d | 285d |  | HBT |
| 198 | 1.1.3.2.4 | D: Cre team training document | 27d | 2025-01-31 | 2025-03-04 | 193SS | 2025-01-09 | 2025-02-08 | 27d | 285d |  | HBT |
| 199 | 1.1.4 | **Extended Support** | 24d | 2025-03-04 | 2025-04-01 |  | 2025-02-10 | 2025-03-08 | 24d | 0d |  |  |
| 200 | 1.1.4.1 | One month extended support | 24d | 2025-03-04 | 2025-04-01 | 193 | 2025-02-10 | 2025-03-08 | 24d | 0d |  | HBT |
| 201 | 1.2 | **Phase 2: One Year AMC** | 261d | 2025-04-01 | 2026-04-01 |  | 2025-03-13 | 2026-03-09 | 261d | 0d |  |  |
| 202 | 1.2.1 | AMC Support | 261d | 2025-04-01 | 2026-04-01 | 200 | 2025-03-13 | 2026-03-09 | 261d | 0d | finish no earlier than 2026-03-09 | HBT |
