# HOABL _ Project Plan_ V2_03.01.2024

Schedule from MS Project, 2024-12-02 to 2031-12-10, status date 2021-09-23, 9 hours a day, A marks actual dates.

## Calendars

- Copy of Standard: Mon-Fri 09:00-18:00; Sat-Sun off.

## Schedule

| ID | WBS | Task | Type | Duration | Start | Finish | Predecessors | Complete | Remaining | Baseline start | Baseline finish | Baseline duration | Baseline 1 start | Baseline 1 finish | Total slack | Constraint | Primery Responsibility | Core Team | HOD | Management |
| --- | --- | --- | --- | --- | --- | --- | --- | --- | --- | --- | --- | --- | --- | --- | --- | --- | --- | --- | --- | --- |
| 1 | 1 | **Rise with SAP S/4 HANA Private Cloud Implementation** |  | 1833d | 2024-12-02 A | 2031-12-10 |  | 1% | 1809.15d | 2024-12-02 | 2031-12-08 | 1831d | 2020-02-10 | 2021-03-08 | 0d |  |  |  |  |  |
| 2 | 1.1 | **Wave 1A, 3B & 3C - SAP Digital Core Solution Implementation** |  | 92d | 2024-12-02 A | 2025-04-08 |  | 16% | 77.13d | 2024-12-02 | 2025-04-04 | 90d |  |  | 1741d |  |  |  |  |  |
| 3 | 1.1.1 | **Prepare Phase** |  | 10d | 2024-12-02 A | 2024-12-13 A |  | 100% |  | 2024-12-02 | 2024-12-13 | 10d | 2020-02-10 | 2020-03-04 |  |  | HBT & HoABL | 100% | 10% | 5% |
| 4 | 1.1.1.1 | Submit Project Plan |  | 1d | 2024-12-09 A | 2024-12-09 A |  | 100% |  | 2024-12-09 | 2024-12-09 | 1d |  |  |  | start no earlier than 2024-12-09 | HBT |  |  |  |
| 5 | 1.1.1.2 | Project Plan review |  | 2d | 2024-12-09 A | 2024-12-10 A | 4SS | 100% |  | 2024-12-09 | 2024-12-10 | 2d |  |  |  |  | HoABL | 100% | 10% | 5% |
| 6 | 1.1.1.3 | Acceptance of Project Plan |  | 1d | 2024-12-10 A | 2024-12-10 A | 5FF | 100% |  | 2024-12-10 | 2024-12-10 | 1d |  |  |  |  | HoABL | 100% | 10% | 5% |
| 7 | 1.1.1.4 | Submit Training plan |  | 1d | 2024-12-10 A | 2024-12-10 A | 6FF | 100% |  | 2024-12-10 | 2024-12-10 | 1d |  |  |  |  | HBT |  |  |  |
| 8 | 1.1.1.5 | Acceptance of Training Plan |  | 3d | 2024-12-11 A | 2024-12-13 A | 7 | 100% |  | 2024-12-11 | 2024-12-13 | 3d |  |  |  |  | HoABL | 100% |  |  |
| 9 | 1.1.1.6 | Client Project Manager,Business Owners, Core Team alignment & introduction |  | 1d | 2024-12-02 A | 2024-12-02 A |  | 100% |  | 2024-12-02 | 2024-12-02 | 1d |  |  |  | start no earlier than 2024-12-02 | HoABL | 100% | 10% |  |
| 10 | 1.1.1.7 | Provision of Seating/WorkPlace in Office |  | 1d | 2024-12-09 A | 2024-12-09 A | 4SS | 100% |  | 2024-12-09 | 2024-12-09 | 1d |  |  |  |  | HoABL |  |  | 5% |
| 11 | 1.1.1.8 | Provision of Network Connectivity with Inetent |  | 1d | 2024-12-09 A | 2024-12-09 A | 4SS | 100% |  | 2024-12-09 | 2024-12-09 | 1d |  |  |  |  | HoABL |  |  | 5% |
| 12 | 1.1.1.9 | Finalize deliverable signoff matrix |  | 3d | 2024-12-09 A | 2024-12-11 A | 4SS | 100% |  | 2024-12-09 | 2024-12-11 | 3d |  |  |  |  | HoABL | 100% | 10% | 5% |
| 13 | 1.1.1.10 | SAP Onbaording |  | 5d | 2024-12-09 A | 2024-12-13 A | 4SS | 100% |  | 2024-12-09 | 2024-12-13 | 5d |  |  |  |  | HoABL |  |  | 5% |
| 14 | 1.1.1.11 | Sharing S User ID with HBT Team |  | 5d | 2024-12-09 A | 2024-12-13 A | 13SS | 100% |  | 2024-12-09 | 2024-12-13 | 5d |  |  |  |  | HoABL |  |  |  |
| 15 | 1.1.1.12 | Conduct Project Kick Off meeting With Key Stake holders |  | 1d | 2024-12-03 A | 2024-12-03 A | 9 | 100% |  | 2024-12-03 | 2024-12-03 | 1d |  |  |  |  | HBT & HoABL | 100% | 10% | 5% |
| 16 | 1.1.1.13 | Project Governanace templates explanation |  | 1d | 2024-12-10 A | 2024-12-10 A | 7FF | 100% |  | 2024-12-10 | 2024-12-10 | 1d |  |  |  |  | HBT | 100% | 10% | 5% |
| 17 | 1.1.1.14 | Prepare Phase Sign-off |  | 1d | 2024-12-10 A | 2024-12-10 A | 16SS | 100% |  | 2024-12-10 | 2024-12-10 | 1d |  |  |  |  | HoABL | 100% | 10% |  |
| 18 | 1.1.1.15 | **Deliverables** |  | 8d | 2024-12-03 A | 2024-12-13 A |  | 100% |  | 2024-12-03 | 2024-12-13 | 8d |  |  |  |  |  |  |  |  |
| 19 | 1.1.1.15.1 | Project Plan | milestone | 0d | 2024-12-10 A | 2024-12-10 A | 6 | 100% |  | 2024-12-10 | 2024-12-10 | 0d |  |  |  |  | HBT |  |  |  |
| 20 | 1.1.1.15.2 | Training plan. | milestone | 0d | 2024-12-13 A | 2024-12-13 A | 8 | 100% |  | 2024-12-13 | 2024-12-13 | 0d |  |  |  |  | HBT |  |  |  |
| 21 | 1.1.1.15.3 | Kick off PPT | milestone | 0d | 2024-12-03 A | 2024-12-03 A | 15 | 100% |  | 2024-12-03 | 2024-12-03 | 0d |  |  |  |  | HBT |  |  |  |
| 22 | 1.1.1.16 | **Key milestones** |  | 2d | 2024-12-11 A | 2024-12-12 A |  | 100% |  | 2024-12-11 | 2024-12-12 | 2d |  |  |  |  |  |  |  |  |
| 23 | 1.1.1.16.1 | Prepare Phase Sign-off |  | 2d | 2024-12-11 A | 2024-12-12 A | 17 | 100% |  | 2024-12-11 | 2024-12-12 | 2d |  |  |  |  | HBT & HoABL |  |  |  |
| 24 | 1.1.2 | **Explore Phase** |  | 29d | 2024-12-05 A | 2025-01-14 |  | 51% | 14.13d | 2024-12-05 | 2025-01-10 | 27d |  |  | 1801d |  | HBT & HoABL | 100% | 15% | 5% |
| 25 | 1.1.2.1 | **Prerequisite** |  | 1d | 2024-12-10 A | 2024-12-10 |  | 99% | 0d | 2024-12-10 | 2024-12-10 | 0d | 2020-02-27 | 2020-05-28 | 1826d |  |  |  |  |  |
| 26 | 1.1.2.1.1 | Onboarding of OEM for integration design finalization |  | 1d | 2024-12-10 A | 2024-12-10 A | 17 | 100% |  | 2024-12-10 | 2024-12-10 | 0d | 2020-02-27 | 2020-03-11 |  |  | HoABL | 100% | 15% | 5% |
| 27 | 1.1.2.1.2 | Availability of Management for BBP walkthrough | milestone | 0d | 2024-12-10 | 2024-12-10 | 17 |  |  | 2024-12-10 | 2024-12-10 | 0d | 2020-02-27 | 2020-03-11 | 1826d |  | HoABL | 100% | 15% | 5% |

| ID | WBS | Task | Type | Duration | Start | Finish | Predecessors | Complete | Remaining | Baseline start | Baseline finish | Baseline duration | Total slack | Free slack | Constraint | Primery Responsibility | Core Team | HOD | Management |
| --- | --- | --- | --- | --- | --- | --- | --- | --- | --- | --- | --- | --- | --- | --- | --- | --- | --- | --- | --- |
| 28 | 1.1.2.2 | **Requirement gathering** |  | 4d | 2024-12-05 A | 2024-12-10 A |  | 100% |  | 2024-12-05 | 2024-12-10 | 4d |  |  |  |  |  |  |  |
| 29 | 1.1.2.2.1 | AS IS document walkthrough by HoABL |  | 2d | 2024-12-05 A | 2024-12-06 A |  | 100% |  | 2024-12-05 | 2024-12-06 | 2d |  |  | must start on 2024-12-05 | HoABL | 100% | 15% |  |
| 30 | 1.1.2.2.2 | AS IS Tree Finalization |  | 2d | 2024-12-09 A | 2024-12-10 A | 29 | 100% |  | 2024-12-09 | 2024-12-10 | 2d |  |  |  | HoABL | 100% | 15% |  |
| 31 | 1.1.2.3 | **Level 1 training - L1** |  | 2d | 2024-12-11 A | 2024-12-12 A |  | 100% |  | 2024-12-11 | 2024-12-12 | 2d |  |  |  |  |  |  |  |
| 32 | 1.1.2.3.1 | Core Team Training Document |  | 1d | 2024-12-11 A | 2024-12-11 A | 30 | 100% |  | 2024-12-11 | 2024-12-11 | 1d |  |  |  | HBT |  |  |  |
| 33 | 1.1.2.3.2 | Conducting level-1 training (SAP Overview) |  | 1d | 2024-12-12 A | 2024-12-12 A | 32 | 100% |  | 2024-12-12 | 2024-12-12 | 1d |  |  |  | HBT | 100% | 15% |  |
| 34 | 1.1.2.4 | **Business Process definition** |  | 23d | 2024-12-13 A | 2025-01-14 |  | 67% | 7.52d | 2024-12-13 | 2025-01-10 | 21d | 1801d |  |  |  |  |  |  |
| 35 | 1.1.2.4.1 | **Enterprise structure** |  | 4d | 2024-12-13 A | 2024-12-18 |  | 95% | 0.2d | 2024-12-13 | 2024-12-18 | 4d | 1820d |  |  |  |  |  |  |
| 36 | 1.1.2.4.1.1 | Define Org structure |  | 1d | 2024-12-13 A | 2024-12-13 A | 33 | 100% |  | 2024-12-13 | 2024-12-13 | 1d |  |  |  | HBT & HoABL | 100% | 15% |  |
| 37 | 1.1.2.4.1.2 | Review & discuss Org Structure with Client |  | 1d | 2024-12-16 A | 2024-12-16 A | 36 | 100% |  | 2024-12-16 | 2024-12-16 | 1d |  |  |  | HoABL | 100% | 15% |  |
| 38 | 1.1.2.4.1.3 | Incorporate changes suggested by Client | milestone | 0d | 2024-12-16 A | 2024-12-16 A | 37 | 100% |  | 2024-12-16 | 2024-12-16 | 0d |  |  |  | HBT |  |  |  |
| 39 | 1.1.2.4.1.4 | Workshop for As-Is and Org Structure with BPO's & Management |  | 1d | 2024-12-17 A | 2024-12-17 A | 38 | 100% |  | 2024-12-17 | 2024-12-17 | 1d |  |  |  | HoABL | 100% | 15% |  |
| 40 | 1.1.2.4.1.5 | Sign off on Org structure |  | 1d | 2024-12-18 A | 2024-12-18 | 39 | 80% | 0.2d | 2024-12-18 | 2024-12-18 | 1d | 1820d | 0d |  | HoABL | 100% | 15% |  |
| 41 | 1.1.2.4.2 | **Business Blueprint** |  | 20d | 2024-12-18 A | 2025-01-14 | 40SS | 65% | 7.02d | 2024-12-18 | 2025-01-10 | 18d | 1801d |  |  |  |  |  |  |
| 42 | 1.1.2.4.2.1 | Listing of end to end business process |  | 2d | 2024-12-18 A | 2024-12-19 A | 36SS | 100% |  | 2024-12-18 | 2024-12-19 | 2d |  |  |  | HBT | 100% |  |  |
| 43 | 1.1.2.4.2.2 | Prepare & Discuss Business blueprint document & KDS |  | 10d | 2024-12-18 A | 2024-12-31 A | 36SS | 100% |  | 2024-12-18 | 2024-12-27 | 8d |  |  |  | HBT & HoABL | 100% | 15% |  |
| 44 | 1.1.2.4.2.3 | Review & discuss BBP with CTM |  | 4d | 2025-01-01 A | 2025-01-06 | 43 | 85% | 0.6d | 2024-12-30 | 2025-01-02 | 4d | 1.65d | 0d |  | HoABL | 100% |  |  |
| 45 | 1.1.2.4.2.4 | Incorporate changes suggested |  | 3d | 2025-01-06 A | 2025-01-09 | 44 | 55% | 1.35d | 2025-01-03 | 2025-01-07 | 3d | 1804d |  |  | HBT |  |  |  |
| 46 | 1.1.2.4.2.5 | Review Gap analysis & propose workaround |  | 4d | 2025-01-01 A | 2025-01-06 A | 44SS | 100% |  | 2024-12-30 | 2025-01-02 | 4d |  |  |  | HBT |  |  |  |
| 47 | 1.1.2.4.2.6 | Identify development requirement |  | 4d | 2024-12-30 A | 2025-01-02 | 44SS | 50% | 2d | 2024-12-30 | 2025-01-02 | 4d | 1809d |  |  | HBT & HoABL | 100% |  |  |
| 48 | 1.1.2.4.2.7 | Finalize FRICE List |  | 4d | 2024-12-30 A | 2025-01-02 | 44SS | 75% | 1d | 2024-12-30 | 2025-01-02 | 4d | 1809d | 0d |  | HBT & HoABL | 100% | 15% |  |
| 49 | 1.1.2.4.2.8 | Prioritisation of FRICE objects (UAT, Go-lIve & Post Go-live) |  | 4d | 2024-12-30 A | 2025-01-02 | 48SS | 55% | 1.8d | 2024-12-30 | 2025-01-02 | 4d | 1809d |  |  | HoABL | 100% | 15% |  |
| 50 | 1.1.2.4.2.9 | Acceptance of FRICE objects Prioritisation |  | 4d | 2024-12-30 A | 2025-01-02 | 48SS | 40% | 2.4d | 2024-12-30 | 2025-01-02 | 4d | 1809d |  |  | HoABL | 100% | 15% |  |
| 51 | 1.1.2.4.2.10 | BBP solution workshop for BPO |  | 4d | 2025-01-07 | 2025-01-10 | 46 |  |  | 2025-01-03 | 2025-01-08 | 4d | 0d |  |  | HBT & HoABL |  | 15% |  |
| 52 | 1.1.2.4.2.11 | Incorporate changes suggested |  | 1d | 2025-01-13 | 2025-01-13 | 51 |  |  | 2025-01-09 | 2025-01-09 | 1d | 0d |  |  | HBT |  |  |  |
| 53 | 1.1.2.4.2.12 | BBP solution workshop for Management |  | 1d | 2025-01-14 | 2025-01-14 | 52 |  |  | 2025-01-10 | 2025-01-10 | 1d | 0d |  |  | HBT |  |  | 5% |
| 54 | 1.1.2.4.2.13 | BBP sign off |  | 1d | 2025-01-14 | 2025-01-14 | 53SS |  |  | 2025-01-10 | 2025-01-10 | 1d | 0d |  |  | HoABL | 100% | 15% |  |

| ID | WBS | Task | Type | Duration | Start | Finish | Predecessors | Complete | Remaining | Baseline start | Baseline finish | Baseline duration | Total slack | Free slack | Primery Responsibility | Core Team | HOD | Management |
| --- | --- | --- | --- | --- | --- | --- | --- | --- | --- | --- | --- | --- | --- | --- | --- | --- | --- | --- |
| 55 | 1.1.2.5 | **Third Party System Integration** |  | 16d | 2024-12-13 | 2025-01-03 |  |  |  | 2024-12-13 | 2025-01-03 | 16d | 1808d |  |  |  |  |  |
| 56 | 1.1.2.5.1 | Onboarding of OEM for integration design finalization |  | 3d | 2024-12-13 | 2024-12-17 | 36SS |  |  | 2024-12-13 | 2024-12-17 | 3d | 1821d |  | HoABL | 100% | 15% |  |
| 57 | 1.1.2.5.2 | Receipt of Plan from Third Party Application Partner |  | 4d | 2024-12-13 | 2024-12-18 | 36SS |  |  | 2024-12-13 | 2024-12-18 | 4d | 1808d | 0d | HoABL | 100% | 15% |  |
| 58 | 1.1.2.5.3 | Alignment of the project plan with the TPA Plan |  | 4d | 2024-12-19 | 2024-12-24 | 57 |  |  | 2024-12-19 | 2024-12-24 | 4d | 1808d | 0d | HoABL | 100% | 15% |  |
| 59 | 1.1.2.5.4 | Intergration Touch points Discussion for 04 Banks (India) |  | 3d | 2024-12-25 | 2024-12-27 | 58 |  |  | 2024-12-25 | 2024-12-27 | 3d | 1808d | 0d | HBT & HoABL | 100% |  |  |
| 60 | 1.1.2.5.5 | Intergration Touch points Discussion for ASP/GSP |  | 3d | 2024-12-25 | 2024-12-27 | 59SS |  |  | 2024-12-25 | 2024-12-27 | 3d | 1808d | 0d | HBT & HoABL | 100% |  |  |
| 61 | 1.1.2.5.6 | Integration Design Document |  | 2d | 2024-12-30 | 2024-12-31 | 60 |  |  | 2024-12-30 | 2024-12-31 | 2d | 1808d | 0d | HBT |  |  |  |
| 62 | 1.1.2.5.7 | Integration Design Document Siggn Off |  | 3d | 2025-01-01 | 2025-01-03 | 61 |  |  | 2025-01-01 | 2025-01-03 | 3d | 1808d |  | HoABL | 100% | 15% |  |
| 63 | 1.1.2.6 | **Master & Cutover Data Migration Statergy** |  | 13d | 2024-12-27 A | 2025-01-14 | 42 | 50% | 6.5d | 2025-01-03 | 2025-01-10 | 6d | 1801d |  |  |  |  |  |
| 64 | 1.1.2.6.1 | Discussion on cutover strategy |  | 3d | 2025-01-07 A | 2025-01-09 | 51SS | 50% | 1.5d | 2025-01-03 | 2025-01-07 | 3d | 1804d |  | HBT & HoABL | 100% | 15% |  |
| 65 | 1.1.2.6.2 | Finalize Cutover Staergy & data responsibility Plan |  | 3d | 2025-01-07 A | 2025-01-09 | 51SS | 50% | 1.5d | 2025-01-03 | 2025-01-07 | 3d | 1801d | 0d | HBT & HoABL | 100% | 15% |  |
| 66 | 1.1.2.6.3 | Acceptance of Cutover Staergy |  | 2d | 2025-01-10 | 2025-01-13 | 65 |  |  | 2025-01-08 | 2025-01-09 | 2d | 1801d | 0d | HoABL | 100% | 15% |  |
| 67 | 1.1.2.6.4 | Communication to Organisation for Cutover |  | 1d | 2025-01-14 | 2025-01-14 | 66 |  |  | 2025-01-10 | 2025-01-10 | 1d | 1801d |  | HoABL | 100% | 15% |  |
| 68 | 1.1.2.6.5 | Identify master data requirement as per the BBP & Gaps |  | 1d | 2024-12-27 A | 2024-12-27 A | 51SS | 100% |  | 2025-01-03 | 2025-01-06 | 2d |  |  | HBT & HoABL | 100% |  |  |
| 69 | 1.1.2.6.6 | Prepare & explain master data template as per the BBP & Gaps |  | 1d | 2024-12-27 A | 2024-12-27 A | 51SS | 100% |  | 2025-01-03 | 2025-01-06 | 2d |  |  | HBT | 100% |  |  |
| 70 | 1.1.2.6.7 | Circulate master data template as per the BBP & Gaps |  | 1d | 2024-12-27 A | 2024-12-27 A | 51SS | 100% |  | 2025-01-03 | 2025-01-06 | 2d |  |  | HBT | 100% |  |  |
| 71 | 1.1.2.7 | **Deliverables** |  | 24d | 2024-12-11 | 2025-01-14 |  |  |  | 2024-12-11 | 2025-01-10 | 22d | 1801d |  |  |  |  |  |
| 72 | 1.1.2.7.1 | D: BPML ,Business Blueprint with end to end Process flow diagram, Gap Analysis | milestone | 0d | 2025-01-14 | 2025-01-14 | 54 |  |  | 2025-01-10 | 2025-01-10 | 0d | 1801d |  | HBT | 100% | 15% |  |
| 73 | 1.1.2.7.2 | D: Core team training document - PPT | milestone | 0d | 2024-12-11 | 2024-12-11 | 32 |  |  | 2024-12-11 | 2024-12-11 | 0d | 1825d |  | HBT | 100% |  |  |
| 74 | 1.1.2.7.3 | D: Initial Master data templates | milestone | 0d | 2024-12-27 | 2024-12-27 | 70 |  |  | 2025-01-06 | 2025-01-06 | 0d | 1813d |  | HBT | 100% |  |  |
| 75 | 1.1.2.8 | **Milestones** |  | 0d | 2025-01-14 | 2025-01-14 |  |  |  | 2025-01-10 | 2025-01-10 | 0d | 0d |  |  |  |  |  |
| 76 | 1.1.2.8.1 | Completion of Business Blueprint Explore phase sign off | milestone | 0d | 2025-01-14 | 2025-01-14 | 54 |  |  | 2025-01-10 | 2025-01-10 | 0d | 0d |  | HBT & HoABL | 100% | 15% |  |
| 77 | 1.1.3 | **Realize** |  | 47d | 2025-01-14 | 2025-03-20 |  |  |  | 2025-01-10 | 2025-03-18 | 47d | 0d |  | HBT & HoABL | 100% | 10% | 3% |
| 78 | 1.1.3.1 | **Preqrequisite** |  | 0d | 2025-01-14 | 2025-01-14 |  |  |  | 2025-01-10 | 2025-01-10 | 0d | 1801d |  |  |  |  |  |
| 79 | 1.1.3.1.1 | Availability of Development server for configuration | milestone | 0d | 2025-01-14 | 2025-01-14 | 76 |  |  | 2025-01-10 | 2025-01-10 | 0d | 1801d |  | HoABL |  |  |  |
| 80 | 1.1.3.1.2 | Availability of Third Party Vendor for Development API's | milestone | 0d | 2025-01-14 | 2025-01-14 | 76 |  |  | 2025-01-10 | 2025-01-10 | 0d | 1801d |  | HoABL | 100% |  |  |
| 81 | 1.1.3.1.3 | Finalized list and availability of End user for training | milestone | 0d | 2025-01-14 | 2025-01-14 | 76 |  |  | 2025-01-10 | 2025-01-10 | 0d | 1801d |  | HoABL | 100% |  |  |

| ID | WBS | Task | Duration | Start | Finish | Predecessors | Baseline start | Baseline finish | Baseline duration | Total slack | Free slack | Primery Responsibility | Core Team | HOD |
| --- | --- | --- | --- | --- | --- | --- | --- | --- | --- | --- | --- | --- | --- | --- |
| 82 | 1.1.3.2 | **Functional Specifications** | 9d | 2025-01-15 | 2025-01-27 |  | 2025-01-13 | 2025-01-23 | 9d | 0d |  |  |  |  |
| 83 | 1.1.3.2.1 | RGS Preparation | 4d | 2025-01-15 | 2025-01-20 | 76 | 2025-01-13 | 2025-01-16 | 4d | 0d |  | HBT |  |  |
| 84 | 1.1.3.2.2 | RGS Acceptance/Approval | 4d | 2025-01-22 | 2025-01-27 | 83SS+5d | 2025-01-20 | 2025-01-23 | 4d | 1792d |  | HoABL |  |  |
| 85 | 1.1.3.2.3 | Prepare functional specfications | 5d | 2025-01-21 | 2025-01-27 | 83 | 2025-01-17 | 2025-01-23 | 5d | 0d |  | HBT |  |  |
| 86 | 1.1.3.2.4 | Finalize development tracker | 5d | 2025-01-21 | 2025-01-27 | 85SS | 2025-01-17 | 2025-01-23 | 5d | 1774d | 0d | HBT |  |  |
| 87 | 1.1.3.3 | **Configure and Validate Baseline** | 7d | 2025-01-28 | 2025-02-05 |  | 2025-01-24 | 2025-02-03 | 7d | 1774d |  |  |  |  |
| 88 | 1.1.3.3.1 | Configure Processes and Functions in golden master (100) | 7d | 2025-01-28 | 2025-02-05 | 86 | 2025-01-24 | 2025-02-03 | 7d | 1774d | 0d | HBT |  |  |
| 89 | 1.1.3.3.2 | Transfer of Configuration to Dev testing | 7d | 2025-01-28 | 2025-02-05 | 88SS | 2025-01-24 | 2025-02-03 | 7d | 1785d |  | HBT |  |  |
| 90 | 1.1.3.3.3 | Unit testing-1 (Consultant) | 7d | 2025-01-28 | 2025-02-05 | 88SS | 2025-01-24 | 2025-02-03 | 7d | 1785d |  | HBT |  |  |
| 91 | 1.1.3.3.4 | Document and Resolve Issues | 7d | 2025-01-28 | 2025-02-05 | 88SS | 2025-01-24 | 2025-02-03 | 7d | 1785d |  | HBT |  |  |
| 92 | 1.1.3.3.5 | Verify Baseline Configuration Completion | 7d | 2025-01-28 | 2025-02-05 | 88SS | 2025-01-24 | 2025-02-03 | 7d | 1774d | 0d | HBT |  |  |
| 93 | 1.1.3.4 | **Core team training & UT** | 7d | 2025-02-06 | 2025-02-14 |  | 2025-02-04 | 2025-02-12 | 7d | 1774d |  |  |  |  |
| 94 | 1.1.3.4.1 | Plan for Level-2 training (CTM) | 1d | 2025-02-06 | 2025-02-06 | 92 | 2025-02-04 | 2025-02-04 | 1d | 1774d | 0d | HBT | 100% |  |
| 95 | 1.1.3.4.2 | Making necessery training arrangement - PPT + tutorial | 3d | 2025-02-07 | 2025-02-11 | 94 | 2025-02-05 | 2025-02-07 | 3d | 1774d | 0d | HBT | 100% |  |
| 96 | 1.1.3.4.3 | Conducting Level-2 Training (Module wise) | 3d | 2025-02-12 | 2025-02-14 | 95 | 2025-02-10 | 2025-02-12 | 3d | 1774d | 0d | HBT | 100% |  |
| 97 | 1.1.3.5 | **ABAP Development - SIT critical** | 40d | 2025-01-24 | 2025-03-20 |  | 2025-01-22 | 2025-03-18 | 40d | 0d |  |  |  |  |
| 98 | 1.1.3.5.1 | FRICE Developments SIT critical | 25d | 2025-01-24 | 2025-02-27 | 85SS+3d | 2025-01-22 | 2025-02-25 | 25d | 0d |  | HBT |  |  |
| 99 | 1.1.3.5.2 | Testing by consultant | 28d | 2025-01-31 | 2025-03-11 | 98SS+5d | 2025-01-29 | 2025-03-07 | 28d | 1754d | 0d | HBT |  |  |
| 100 | 1.1.3.5.3 | Testing by CTM | 5d | 2025-03-12 | 2025-03-18 | 99 | 2025-03-10 | 2025-03-14 | 5d | 1754d | 0d | HoABL | 100% |  |
| 101 | 1.1.3.5.4 | observations & Corrections | 5d | 2025-03-14 | 2025-03-20 | 100SS+2d | 2025-03-12 | 2025-03-18 | 5d | 1754d | 0d |  |  |  |
| 102 | 1.1.3.5.5 | Sign off Development | 5d | 2025-03-14 | 2025-03-20 | 101SS | 2025-03-12 | 2025-03-18 | 5d | 1754d |  | HoABL | 100% |  |
| 103 | 1.1.3.6 | **Third Party System Integration Development - SIT Critical** | 25d | 2025-01-24 | 2025-02-27 |  | 2025-01-22 | 2025-02-25 | 25d | 1769d |  |  |  |  |
| 104 | 1.1.3.6.1 | Interface Development - Third Party Application | 25d | 2025-01-24 | 2025-02-27 | 98SS | 2025-01-22 | 2025-02-25 | 25d | 1769d |  | HoABL | 100% | 10% |
| 105 | 1.1.3.6.2 | Monitor Third Party Application development as per the plan | 25d | 2025-01-24 | 2025-02-27 | 98SS | 2025-01-22 | 2025-02-25 | 25d | 1769d |  | HoABL | 100% |  |
| 106 | 1.1.3.6.3 | Interface Development - SAP Side | 25d | 2025-01-24 | 2025-02-27 | 98SS | 2025-01-22 | 2025-02-25 | 25d | 1769d | 0d | HBT |  |  |
| 107 | 1.1.3.6.4 | Interface Testing by consultant & TPA Partners | 10d | 2025-02-07 | 2025-02-20 | 106SS+10d | 2025-02-05 | 2025-02-18 | 10d | 1769d | 0d | HBT & HoABL | 100% |  |
| 108 | 1.1.3.6.5 | Interface Testing by CTM | 5d | 2025-02-21 | 2025-02-27 | 107 | 2025-02-19 | 2025-02-25 | 5d | 1769d |  | HoABL | 100% |  |
| 109 | 1.1.3.6.6 | Sign off Development | 5d | 2025-02-21 | 2025-02-27 | 107 | 2025-02-19 | 2025-02-25 | 5d | 1769d |  | HoABL | 100% |  |

| ID | WBS | Task | Type | Duration | Start | Finish | Predecessors | Baseline start | Baseline finish | Baseline duration | Total slack | Free slack | Primery Responsibility | Core Team | HOD |
| --- | --- | --- | --- | --- | --- | --- | --- | --- | --- | --- | --- | --- | --- | --- | --- |
| 110 | 1.1.3.7 | **System Integration Test** |  | 21d | 2025-02-06 | 2025-03-06 |  | 2025-02-04 | 2025-03-04 | 21d | 16d |  |  |  |  |
| 111 | 1.1.3.7.1 | **Integration testing plan** |  | 5d | 2025-02-06 | 2025-02-12 |  | 2025-02-04 | 2025-02-10 | 5d | 1780d |  |  |  |  |
| 112 | 1.1.3.7.1.1 | Identify scenerios for Integration test |  | 3d | 2025-02-06 | 2025-02-10 | 92 | 2025-02-04 | 2025-02-06 | 3d | 1780d | 0d | HoABL | 100% |  |
| 113 | 1.1.3.7.1.2 | Write scripts for Integration test |  | 3d | 2025-02-06 | 2025-02-10 | 112SS | 2025-02-04 | 2025-02-06 | 3d | 1780d | 0d | HBT |  |  |
| 114 | 1.1.3.7.1.3 | Integration Test Script Acceptance |  | 2d | 2025-02-11 | 2025-02-12 | 113 | 2025-02-07 | 2025-02-10 | 2d | 1780d |  | HoABL | 100% | 10% |
| 115 | 1.1.3.7.2 | **Conduct System integration test** |  | 5d | 2025-02-28 | 2025-03-06 |  | 2025-02-26 | 2025-03-04 | 5d | 0d |  |  |  |  |
| 116 | 1.1.3.7.2.1 | Perform Integration testing by Consultant |  | 5d | 2025-02-28 | 2025-03-06 | 98 | 2025-02-26 | 2025-03-04 | 5d | 0d |  | HBT |  |  |
| 117 | 1.1.3.7.3 | **User Roles & Authorization** |  | 7d | 2025-02-12 | 2025-02-20 |  | 2025-02-10 | 2025-02-18 | 7d | 1774d |  |  |  |  |
| 118 | 1.1.3.7.3.1 | Receipt of Final Authorization Matrix with User List |  | 3d | 2025-02-12 | 2025-02-14 | 96SS | 2025-02-10 | 2025-02-12 | 3d | 1774d | 0d | HoABL | 100% | 10% |
| 119 | 1.1.3.7.3.2 | Role Creation |  | 4d | 2025-02-17 | 2025-02-20 | 118 | 2025-02-13 | 2025-02-18 | 4d | 1774d | 0d |  |  |  |
| 120 | 1.1.3.7.3.3 | Role Testing & User assigning for UAT |  | 4d | 2025-02-17 | 2025-02-20 | 119SS | 2025-02-13 | 2025-02-18 | 4d | 1774d |  |  |  |  |
| 121 | 1.1.3.8 | **User Acceptance Test - UAT** |  | 10d | 2025-03-07 | 2025-03-20 |  | 2025-03-05 | 2025-03-18 | 10d | 0d |  |  |  |  |
| 122 | 1.1.3.8.1 | Perform User Acceptance test - CTM |  | 7d | 2025-03-07 | 2025-03-17 | 116 | 2025-03-05 | 2025-03-13 | 7d | 0d |  | HoABL | 100% |  |
| 123 | 1.1.3.8.2 | Resolving the issues, if any |  | 5d | 2025-03-07 | 2025-03-13 | 122SS | 2025-03-05 | 2025-03-11 | 5d | 0d |  | HBT |  |  |
| 124 | 1.1.3.8.3 | Retesting of scenarios |  | 5d | 2025-03-14 | 2025-03-20 | 123 | 2025-03-12 | 2025-03-18 | 5d | 0d |  | HoABL | 100% |  |
| 125 | 1.1.3.8.4 | Integration test signoff |  | 2d | 2025-03-14 | 2025-03-17 | 124SS | 2025-03-12 | 2025-03-13 | 2d | 0d |  | HoABL | 100% |  |
| 126 | 1.1.3.9 | **End user training plan** |  | 2d | 2025-02-12 | 2025-02-13 |  | 2025-02-10 | 2025-02-11 | 2d | 1779d |  |  |  |  |
| 127 | 1.1.3.9.1 | Preparation of End User training plan |  | 2d | 2025-02-12 | 2025-02-13 | 96SS | 2025-02-10 | 2025-02-11 | 2d | 1779d | 0d | HBT | 100% |  |
| 128 | 1.1.3.9.2 | Communicate plan |  | 2d | 2025-02-12 | 2025-02-13 | 127SS | 2025-02-10 | 2025-02-11 | 2d | 1779d |  | HBT & HoABL | 100% |  |
| 129 | 1.1.3.10 | **Production Server Check/Setup** |  | 2d | 2025-03-07 | 2025-03-10 |  | 2025-03-05 | 2025-03-06 | 2d | 1762d |  |  |  |  |
| 130 | 1.1.3.10.1 | Receipt of Production server |  | 1d | 2025-03-07 | 2025-03-07 | 122SS | 2025-03-05 | 2025-03-05 | 1d | 1762d | 0d | HoABL |  |  |
| 131 | 1.1.3.10.2 | Production server setup check |  | 2d | 2025-03-07 | 2025-03-10 | 130SS | 2025-03-05 | 2025-03-06 | 2d | 1762d |  | HBT |  |  |
| 132 | 1.1.3.11 | **Deliverables** |  | 28d | 2025-02-05 | 2025-03-17 |  | 2025-02-03 | 2025-03-13 | 28d | 1757d |  |  |  |  |
| 133 | 1.1.3.11.1 | D: Test Script | milestone | 0d | 2025-02-05 | 2025-02-05 | 92 | 2025-02-03 | 2025-02-03 | 0d | 1785d |  | HBT |  |  |
| 134 | 1.1.3.11.2 | D: Unit test result document | milestone | 0d | 2025-02-05 | 2025-02-05 | 92 | 2025-02-03 | 2025-02-03 | 0d | 1785d |  | HBT |  |  |
| 135 | 1.1.3.11.3 | D: Integration testing document | milestone | 0d | 2025-03-17 | 2025-03-17 | 125 | 2025-03-13 | 2025-03-13 | 0d | 1757d |  | HBT |  |  |
| 136 | 1.1.3.11.4 | D: Final Master/Cutover Data template | milestone | 0d | 2025-03-17 | 2025-03-17 | 125 | 2025-03-13 | 2025-03-13 | 0d | 1757d |  | HBT |  |  |
| 137 | 1.1.3.11.5 | D: Data Migration Statergy | milestone | 0d | 2025-03-17 | 2025-03-17 | 125 | 2025-03-13 | 2025-03-13 | 0d | 1757d |  | HBT |  |  |

| ID | WBS | Task | Type | Duration | Start | Finish | Predecessors | Baseline start | Baseline finish | Baseline duration | Total slack | Free slack | Primery Responsibility | Core Team | HOD | Management |
| --- | --- | --- | --- | --- | --- | --- | --- | --- | --- | --- | --- | --- | --- | --- | --- | --- |
| 138 | 1.1.3.12 | **Milestones** |  | 28d | 2025-02-05 | 2025-03-17 |  | 2025-02-03 | 2025-03-13 | 28d | 1757d |  |  |  |  |  |
| 139 | 1.1.3.12.1 | Base Line configuration & Unit testing by HBT | milestone | 0d | 2025-02-05 | 2025-02-05 | 92 | 2025-02-03 | 2025-02-03 | 0d | 1785d |  | HBT & HoABL |  |  |  |
| 140 | 1.1.3.12.2 | UAT Sign off by CTM | milestone | 0d | 2025-03-17 | 2025-03-17 | 125 | 2025-03-13 | 2025-03-13 | 0d | 1757d | 0d | HBT & HoABL |  |  |  |
| 141 | 1.1.4 | **Deploy** |  | 16d | 2025-03-17 | 2025-04-08 |  | 2025-03-13 | 2025-04-04 | 16d | 0d |  | HBT & HoABL | 100% | 10% | 3% |
| 142 | 1.1.4.1 | **Prerequisite** |  | 0d | 2025-03-17 | 2025-03-17 |  | 2025-03-13 | 2025-03-13 | 0d | 1757d |  |  |  |  |  |
| 143 | 1.1.4.1.1 | End user training plan | milestone | 0d | 2025-03-17 | 2025-03-17 | 140 | 2025-03-13 | 2025-03-13 | 0d | 1757d |  | HoABL | 100% |  |  |
| 144 | 1.1.4.1.2 | Availability of end users & Management for training | milestone | 0d | 2025-03-17 | 2025-03-17 | 140 | 2025-03-13 | 2025-03-13 | 0d | 1757d |  | HoABL | 100% | 10% | 3% |
| 145 | 1.1.4.1.3 | Availability of Master data | milestone | 0d | 2025-03-17 | 2025-03-17 | 140 | 2025-03-13 | 2025-03-13 | 0d | 1757d |  | HoABL | 100% | 10% | 3% |
| 146 | 1.1.4.1.4 | Availability of Cutover data | milestone | 0d | 2025-03-17 | 2025-03-17 | 140 | 2025-03-13 | 2025-03-13 | 0d | 1757d |  | HoABL | 100% | 10% | 3% |
| 147 | 1.1.4.1.5 | User list & authorizations | milestone | 0d | 2025-03-17 | 2025-03-17 | 140 | 2025-03-13 | 2025-03-13 | 0d | 1757d |  | HoABL | 100% | 10% | 3% |
| 148 | 1.1.4.2 | **ABAP Development Go Live Critical** |  | 12d | 2025-03-18 | 2025-04-02 |  | 2025-03-14 | 2025-03-31 | 12d | 1745d |  |  |  |  |  |
| 149 | 1.1.4.2.1 | Develop FRICE |  | 10d | 2025-03-18 | 2025-03-31 | 125 | 2025-03-14 | 2025-03-27 | 10d | 1745d | 0d | HBT |  |  |  |
| 150 | 1.1.4.2.2 | Testing by consultant |  | 7d | 2025-03-20 | 2025-03-28 | 149SS+2d | 2025-03-18 | 2025-03-26 | 7d | 1745d | 0d | HBT |  |  |  |
| 151 | 1.1.4.2.3 | Testing by CTM |  | 3d | 2025-03-31 | 2025-04-02 | 150 | 2025-03-27 | 2025-03-31 | 3d | 1745d |  | HoABL | 100% |  |  |
| 152 | 1.1.4.2.4 | Sign off Development |  | 3d | 2025-03-20 | 2025-03-24 | 150SS | 2025-03-18 | 2025-03-20 | 3d | 1752d |  | HoABL | 100% |  |  |
| 153 | 1.1.4.3 | **End User Training** |  | 7d | 2025-03-20 | 2025-03-28 |  | 2025-03-18 | 2025-03-26 | 7d | 1748d |  |  |  |  |  |
| 154 | 1.1.4.3.1 | Prepare end user training manual |  | 2d | 2025-03-20 | 2025-03-21 | 125FS+2d | 2025-03-18 | 2025-03-19 | 2d | 1748d | 0d | HoABL | 100% |  |  |
| 155 | 1.1.4.3.2 | Conduct end user training |  | 5d | 2025-03-24 | 2025-03-28 | 154 | 2025-03-20 | 2025-03-26 | 5d | 1748d | 0d | HoABL | 100% |  |  |
| 156 | 1.1.4.4 | **Production Environment Preparation** |  | 4d | 2025-03-18 | 2025-03-21 |  | 2025-03-14 | 2025-03-19 | 4d | 1753d |  |  |  |  |  |
| 157 | 1.1.4.4.1 | Transport final configurations |  | 2d | 2025-03-18 | 2025-03-19 | 125 | 2025-03-14 | 2025-03-17 | 2d | 1753d | 0d | HBT |  |  |  |
| 158 | 1.1.4.4.2 | Maintain number ranges |  | 2d | 2025-03-20 | 2025-03-21 | 157 | 2025-03-18 | 2025-03-19 | 2d | 1753d | 0d | HBT |  |  |  |
| 159 | 1.1.4.4.3 | Maintain client specific data |  | 2d | 2025-03-20 | 2025-03-21 | 158SS | 2025-03-18 | 2025-03-19 | 2d | 1753d |  | HBT |  |  |  |
| 160 | 1.1.4.5 | **User creation & authorization** |  | 7d | 2025-03-18 | 2025-03-26 |  | 2025-03-14 | 2025-03-24 | 7d | 1750d |  |  |  |  |  |
| 161 | 1.1.4.5.1 | Finalize list of users for production enviornment |  | 2d | 2025-03-18 | 2025-03-19 | 125 | 2025-03-14 | 2025-03-17 | 2d | 1750d | 0d | HoABL | 100% | 10% | 3% |
| 162 | 1.1.4.5.2 | Finalise Authorization Matrix |  | 2d | 2025-03-18 | 2025-03-19 | 161SS | 2025-03-14 | 2025-03-17 | 2d | 1750d | 0d | HoABL | 100% | 10% | 3% |
| 163 | 1.1.4.5.3 | Create roles and authorization |  | 3d | 2025-03-20 | 2025-03-24 | 162 | 2025-03-18 | 2025-03-20 | 3d | 1750d | 0d | HBT |  |  |  |
| 164 | 1.1.4.5.4 | Test roles and authorization |  | 3d | 2025-03-24 | 2025-03-26 | 163SS+2d | 2025-03-20 | 2025-03-24 | 3d | 1750d |  | HBT & HoABL | 100% |  |  |

| ID | WBS | Task | Type | Duration | Start | Finish | Predecessors | Baseline start | Baseline finish | Baseline duration | Total slack | Free slack | Primery Responsibility | Core Team | HOD | Management |
| --- | --- | --- | --- | --- | --- | --- | --- | --- | --- | --- | --- | --- | --- | --- | --- | --- |
| 165 | 1.1.4.6 | **Data preparation and upload** |  | 16d | 2025-03-18 | 2025-04-08 |  | 2025-03-14 | 2025-04-04 | 16d | 0d |  |  |  |  |  |
| 166 | 1.1.4.6.1 | Receipt of master data |  | 1d | 2025-03-18 | 2025-03-18 | 125 | 2025-03-14 | 2025-03-14 | 1d | 1756d |  | HoABL | 100% | 10% | 3% |
| 167 | 1.1.4.6.2 | Validate & cleanse master data |  | 5d | 2025-03-18 | 2025-03-24 | 125 | 2025-03-14 | 2025-03-20 | 5d | 0d |  | HoABL | 100% |  |  |
| 168 | 1.1.4.6.3 | Upload master data in Production |  | 3d | 2025-03-25 | 2025-03-27 | 167 | 2025-03-21 | 2025-03-25 | 3d | 0d |  | HBT & HoABL | 100% |  |  |
| 169 | 1.1.4.6.4 | Confirm uploaded master data |  | 2d | 2025-03-28 | 2025-03-31 | 168 | 2025-03-26 | 2025-03-27 | 2d | 0d |  | HoABL | 100% | 10% |  |
| 170 | 1.1.4.6.5 | Receipt of cutover data |  | 3d | 2025-04-02 | 2025-04-04 | 169SS+3d | 2025-03-31 | 2025-04-02 | 3d | 0d |  | HoABL | 100% | 10% | 3% |
| 171 | 1.1.4.6.6 | Validate & cleanse cutover data |  | 3d | 2025-04-02 | 2025-04-04 | 170SS | 2025-03-31 | 2025-04-02 | 3d | 0d |  | HoABL | 100% |  |  |
| 172 | 1.1.4.6.7 | Black Out Period |  | 2d | 2025-04-07 | 2025-04-08 | 171 | 2025-04-03 | 2025-04-04 | 2d | 1741d |  |  |  |  |  |
| 173 | 1.1.4.6.8 | Upload cutover data in production |  | 2d | 2025-04-07 | 2025-04-08 | 171 | 2025-04-03 | 2025-04-04 | 2d | 0d |  | HBT & HoABL | 100% |  |  |
| 174 | 1.1.4.6.9 | Check and validate uploaded data |  | 2d | 2025-04-07 | 2025-04-08 | 173SS | 2025-04-03 | 2025-04-04 | 2d | 0d |  | HoABL | 100% | 10% |  |
| 175 | 1.1.4.7 | **Establish Post Go-Live Support mechanism** |  | 4d | 2025-03-20 | 2025-03-25 |  | 2025-03-18 | 2025-03-21 | 4d | 1751d |  |  |  |  |  |
| 176 | 1.1.4.7.1 | Setup Mechanism for tracking & monitoring of support |  | 2d | 2025-03-20 | 2025-03-21 | 154SS | 2025-03-18 | 2025-03-19 | 2d | 1753d |  | HBT & HoABL | 100% |  |  |
| 177 | 1.1.4.7.2 | Conduct training for end users for Support Mechanism |  | 2d | 2025-03-24 | 2025-03-25 | 155SS | 2025-03-20 | 2025-03-21 | 2d | 1751d |  | HBT & HoABL | 100% |  |  |
| 178 | 1.1.4.8 | **Deliverables** |  | 12d | 2025-03-21 | 2025-04-08 |  | 2025-03-19 | 2025-04-04 | 12d | 1741d |  |  |  |  |  |
| 179 | 1.1.4.8.1 | D: End user training manual | milestone | 0d | 2025-03-21 | 2025-03-21 | 154 | 2025-03-19 | 2025-03-19 | 0d | 1753d |  | HBT |  |  |  |
| 180 | 1.1.4.8.2 | D: Data migration strategy document | milestone | 0d | 2025-04-08 | 2025-04-08 | 174 | 2025-04-04 | 2025-04-04 | 0d | 1741d |  | HBT |  |  |  |
| 181 | 1.1.4.8.3 | D: Master data upload programs | milestone | 0d | 2025-04-08 | 2025-04-08 | 174 | 2025-04-04 | 2025-04-04 | 0d | 1741d |  | HBT |  |  |  |
| 182 | 1.1.4.8.4 | D: Sample data upload validation | milestone | 0d | 2025-04-08 | 2025-04-08 | 174 | 2025-04-04 | 2025-04-04 | 0d | 1741d |  | HBT |  |  |  |
| 183 | 1.1.4.8.5 | D: Final authorization matrix, roles & authorizations | milestone | 0d | 2025-04-08 | 2025-04-08 | 174 | 2025-04-04 | 2025-04-04 | 0d | 1741d |  | HBT |  |  |  |
| 184 | 1.1.4.9 | **Obtain Approval & phase Sign Off** |  | 1d | 2025-04-08 | 2025-04-08 |  | 2025-04-04 | 2025-04-04 | 1d | 0d |  |  |  |  |  |
| 185 | 1.1.4.9.1 | Deploy signoff |  | 1d | 2025-04-08 | 2025-04-08 | 174FF | 2025-04-04 | 2025-04-04 | 1d | 1741d |  | HoABL | 100% | 10% | 3% |
| 186 | 1.1.4.9.2 | Go -Live |  | 1d | 2025-04-08 | 2025-04-08 | 174FF | 2025-04-04 | 2025-04-04 | 1d | 0d |  | HoABL | 100% | 10% | 3% |
| 187 | 1.2 | **Wave 1B - SAP - SFDC Integration** |  | 55d | 2025-01-22 | 2025-04-09 |  | 2025-01-22 | 2025-04-09 | 55d | 1740d |  |  |  |  |  |
| 188 | 1.2.1 | **Explore Phase** |  | 10d | 2025-01-22 | 2025-02-05 |  | 2025-01-22 | 2025-02-05 | 10d | 1785d |  | HBT & HoABL | 100% | 15% | 5% |
| 189 | 1.2.1.1 | **Prerequisite** |  | 0d | 2025-01-22 | 2025-01-22 |  | 2025-01-22 | 2025-01-22 | 0d | 1785d |  |  |  |  |  |
| 190 | 1.2.1.1.1 | Availability of SFDC system & Vendor for integration design finalization | milestone | 0d | 2025-01-22 | 2025-01-22 | 4SS+33d | 2025-01-22 | 2025-01-22 | 0d | 1785d | 0d | HoABL | 100% | 15% | 5% |
| 191 | 1.2.1.1.2 | Availability of Management for BBP walkthrough | milestone | 0d | 2025-01-22 | 2025-01-22 | 4SS+33d | 2025-01-22 | 2025-01-22 | 0d | 1795d |  | HoABL | 100% | 15% | 5% |

| ID | WBS | Task | Type | Duration | Start | Finish | Predecessors | Baseline start | Baseline finish | Baseline duration | Total slack | Free slack | Primery Responsibility | Core Team | HOD | Management |
| --- | --- | --- | --- | --- | --- | --- | --- | --- | --- | --- | --- | --- | --- | --- | --- | --- |
| 192 | 1.2.1.2 | **Third Party System Integration** |  | 10d | 2025-01-23 | 2025-02-05 |  | 2025-01-23 | 2025-02-05 | 10d | 1785d |  |  |  |  |  |
| 193 | 1.2.1.2.1 | Intergration Touch points Discussion for SP - SFDC |  | 4d | 2025-01-23 | 2025-01-28 | 190 | 2025-01-23 | 2025-01-28 | 4d | 1785d | 0d | HBT & HoABL | 100% |  |  |
| 194 | 1.2.1.2.2 | Integration Design Document |  | 4d | 2025-01-29 | 2025-02-03 | 193 | 2025-01-29 | 2025-02-03 | 4d | 1785d | 0d | HBT |  |  |  |
| 195 | 1.2.1.2.3 | Integration Design Document Sign Off |  | 2d | 2025-02-04 | 2025-02-05 | 194 | 2025-02-04 | 2025-02-05 | 2d | 1785d | 0d | HoABL | 100% | 15% |  |
| 196 | 1.2.1.3 | **Deliverables** |  | 0d | 2025-02-05 | 2025-02-05 |  | 2025-02-05 | 2025-02-05 | 0d | 1785d |  |  |  |  |  |
| 197 | 1.2.1.3.1 | D: Business Blueprint with Integration Touch Points | milestone | 0d | 2025-02-05 | 2025-02-05 | 195 | 2025-02-05 | 2025-02-05 | 0d | 1785d | 0d | HBT | 100% | 15% |  |
| 198 | 1.2.1.3.2 | D: Core team training document - PPT | milestone | 0d | 2025-02-05 | 2025-02-05 | 195 | 2025-02-05 | 2025-02-05 | 0d | 1785d |  | HBT | 100% |  |  |
| 199 | 1.2.1.4 | **Milestones** |  | 0d | 2025-02-05 | 2025-02-05 |  | 2025-02-05 | 2025-02-05 | 0d | 1785d |  |  |  |  |  |
| 200 | 1.2.1.4.1 | Completion of Business Blueprint Explore phase sign off | milestone | 0d | 2025-02-05 | 2025-02-05 | 197 | 2025-02-05 | 2025-02-05 | 0d | 1785d |  | HBT & HoABL | 100% | 15% |  |
| 201 | 1.2.2 | **Realize** |  | 43d | 2025-01-22 | 2025-03-24 |  | 2025-01-22 | 2025-03-24 | 43d | 1740d |  | HBT & HoABL | 100% | 10% | 3% |
| 202 | 1.2.2.1 | **Preqrequisite** |  | 0d | 2025-01-22 | 2025-01-22 |  | 2025-01-22 | 2025-01-22 | 0d | 1740d |  |  |  |  |  |
| 203 | 1.2.2.1.1 | Availability of Third Party Vendor for Development API's | milestone | 0d | 2025-01-22 | 2025-01-22 | 4SS+33d | 2025-01-22 | 2025-01-22 | 0d | 1740d | 0d | HoABL | 100% |  |  |
| 204 | 1.2.2.1.2 | Finalized list and availability of End user for training | milestone | 0d | 2025-01-22 | 2025-01-22 | 4SS+33d | 2025-01-22 | 2025-01-22 | 0d | 1795d |  | HoABL | 100% |  |  |
| 205 | 1.2.2.2 | **Functional Specifications** |  | 4d | 2025-01-23 | 2025-01-28 |  | 2025-01-23 | 2025-01-28 | 4d | 1740d |  |  |  |  |  |
| 206 | 1.2.2.2.1 | Prepare functional specfications |  | 4d | 2025-01-23 | 2025-01-28 | 203 | 2025-01-23 | 2025-01-28 | 4d | 1740d | 0d | HBT |  |  |  |
| 207 | 1.2.2.2.2 | Finalize development tracker |  | 4d | 2025-01-23 | 2025-01-28 | 206SS | 2025-01-23 | 2025-01-28 | 4d | 1791d |  | HBT |  |  |  |
| 208 | 1.2.2.3 | **ABAP Development for Interface** |  | 15d | 2025-01-29 | 2025-02-18 |  | 2025-01-29 | 2025-02-18 | 15d | 1776d |  |  |  |  |  |
| 209 | 1.2.2.3.1 | FRICE Developments |  | 15d | 2025-01-29 | 2025-02-18 | 206 | 2025-01-29 | 2025-02-18 | 15d | 1776d | 0d | HBT |  |  |  |
| 210 | 1.2.2.3.2 | Testing by consultant |  | 5d | 2025-02-05 | 2025-02-11 | 209SS+5d | 2025-02-05 | 2025-02-11 | 5d | 1778d | 0d | HBT |  |  |  |
| 211 | 1.2.2.3.3 | Sign off Development |  | 3d | 2025-02-12 | 2025-02-14 | 210 | 2025-02-12 | 2025-02-14 | 3d | 1778d |  | HoABL | 100% |  |  |
| 212 | 1.2.2.4 | **Third Party System Integration Development - SAP - SFDC** |  | 25d | 2025-01-29 | 2025-03-04 |  | 2025-01-29 | 2025-03-04 | 25d | 1740d |  |  |  |  |  |
| 213 | 1.2.2.4.1 | Interface Development - Third Party Application |  | 25d | 2025-01-29 | 2025-03-04 | 206 | 2025-01-29 | 2025-03-04 | 25d | 1740d | 0d | HBT |  |  |  |
| 214 | 1.2.2.4.2 | Interface Testing by consultant |  | 5d | 2025-02-12 | 2025-02-18 | 213SS+10d | 2025-02-12 | 2025-02-18 | 5d | 1740d | 0d | HBT |  |  |  |
| 215 | 1.2.2.5 | **System Integration Test** |  | 12d | 2025-02-19 | 2025-03-06 |  | 2025-02-19 | 2025-03-06 | 12d | 1740d |  |  |  |  |  |
| 216 | 1.2.2.5.1 | **Integration testing plan** |  | 6d | 2025-02-19 | 2025-02-26 |  | 2025-02-19 | 2025-02-26 | 6d | 1740d |  |  |  |  |  |
| 217 | 1.2.2.5.1.1 | Identify scenerios for Integration test |  | 1d | 2025-02-19 | 2025-02-19 | 214 | 2025-02-19 | 2025-02-19 | 1d | 1740d | 0d | HoABL | 100% |  |  |
| 218 | 1.2.2.5.1.2 | Write scripts for Integration test |  | 2d | 2025-02-20 | 2025-02-21 | 217 | 2025-02-20 | 2025-02-21 | 2d | 1740d | 0d | HBT |  |  |  |
| 219 | 1.2.2.5.1.3 | Acceptance of Test script |  | 3d | 2025-02-24 | 2025-02-26 | 218 | 2025-02-24 | 2025-02-26 | 3d | 1740d | 0d |  |  |  |  |

| ID | WBS | Task | Type | Duration | Start | Finish | Predecessors | Baseline start | Baseline finish | Baseline duration | Total slack | Free slack | Primery Responsibility | Core Team | HOD | Management |
| --- | --- | --- | --- | --- | --- | --- | --- | --- | --- | --- | --- | --- | --- | --- | --- | --- |
| 220 | 1.2.2.5.2 | **Conduct System integration test** |  | 6d | 2025-02-27 | 2025-03-06 |  | 2025-02-27 | 2025-03-06 | 6d | 1740d |  |  |  |  |  |
| 221 | 1.2.2.5.2.1 | Perform Integration testing by Consultant |  | 6d | 2025-02-27 | 2025-03-06 | 219 | 2025-02-27 | 2025-03-06 | 6d | 1740d | 0d | HBT |  |  |  |
| 222 | 1.2.2.6 | **User Acceptance Test - UAT** |  | 14d | 2025-03-05 | 2025-03-24 |  | 2025-03-05 | 2025-03-24 | 14d | 1742d |  |  |  |  |  |
| 223 | 1.2.2.6.1 | Perform User Acceptance test - CTM |  | 6d | 2025-03-07 | 2025-03-14 | 221 | 2025-03-07 | 2025-03-14 | 6d | 1740d | 0d | HoABL | 100% |  |  |
| 224 | 1.2.2.6.2 | Resolving the issues, if any |  | 5d | 2025-03-05 | 2025-03-11 | 221SS+4d | 2025-03-05 | 2025-03-11 | 5d | 1761d |  | HBT |  |  |  |
| 225 | 1.2.2.6.3 | Retesting of scenarios |  | 3d | 2025-03-17 | 2025-03-19 | 223 | 2025-03-17 | 2025-03-19 | 3d | 1740d | 0d | HoABL | 100% |  |  |
| 226 | 1.2.2.6.4 | Integration test signoff |  | 3d | 2025-03-20 | 2025-03-24 | 225 | 2025-03-20 | 2025-03-24 | 3d | 1740d | 0d | HoABL | 100% |  |  |
| 227 | 1.2.2.7 | **Cutover Strategy** |  | 1d | 2025-03-17 | 2025-03-17 |  | 2025-03-17 | 2025-03-17 | 1d | 1757d |  |  |  |  |  |
| 228 | 1.2.2.7.1 | Discussion on cutover strategy |  | 1d | 2025-03-17 | 2025-03-17 | 223 | 2025-03-17 | 2025-03-17 | 1d | 1757d | 0d | HBT & HoABL | 100% | 10% |  |
| 229 | 1.2.2.7.2 | Cutover & data responsibility Plan |  | 1d | 2025-03-17 | 2025-03-17 | 228SS | 2025-03-17 | 2025-03-17 | 1d | 1757d |  | HoABL | 100% | 10% |  |
| 230 | 1.2.2.7.3 | Communication to Organisation for Cutover |  | 1d | 2025-03-17 | 2025-03-17 | 228SS | 2025-03-17 | 2025-03-17 | 1d | 1757d | 0d | HoABL | 100% | 10% |  |
| 231 | 1.2.2.8 | **End user training plan** |  | 1d | 2025-03-17 | 2025-03-17 |  | 2025-03-17 | 2025-03-17 | 1d | 1757d |  |  |  |  |  |
| 232 | 1.2.2.8.1 | Preparation of End User training plan |  | 1d | 2025-03-17 | 2025-03-17 | 228SS | 2025-03-17 | 2025-03-17 | 1d | 1757d | 0d |  |  |  |  |
| 233 | 1.2.2.8.2 | Communicate plan |  | 1d | 2025-03-17 | 2025-03-17 | 232SS | 2025-03-17 | 2025-03-17 | 1d | 1757d |  |  |  |  |  |
| 234 | 1.2.2.9 | **Deliverables** |  | 12d | 2025-03-06 | 2025-03-24 |  | 2025-03-06 | 2025-03-24 | 12d | 1752d |  |  |  |  |  |
| 235 | 1.2.2.9.1 | D: Test Script | milestone | 0d | 2025-03-06 | 2025-03-06 | 221 | 2025-03-06 | 2025-03-06 | 0d | 1764d |  |  |  |  |  |
| 236 | 1.2.2.9.2 | D: Unit test result document | milestone | 0d | 2025-03-06 | 2025-03-06 | 221 | 2025-03-06 | 2025-03-06 | 0d | 1764d |  |  |  |  |  |
| 237 | 1.2.2.9.3 | D: Integration testing document | milestone | 0d | 2025-03-24 | 2025-03-24 | 226 | 2025-03-24 | 2025-03-24 | 0d | 1752d |  |  |  |  |  |
| 238 | 1.2.2.9.4 | D: Final Master/Cutover Data template | milestone | 0d | 2025-03-17 | 2025-03-17 | 230 | 2025-03-17 | 2025-03-17 | 0d | 1757d |  |  |  |  |  |
| 239 | 1.2.2.9.5 | D: Data Migration Statergy | milestone | 0d | 2025-03-17 | 2025-03-17 | 230 | 2025-03-17 | 2025-03-17 | 0d | 1757d |  |  |  |  |  |
| 240 | 1.2.2.10 | **Milestones** |  | 12d | 2025-03-06 | 2025-03-24 |  | 2025-03-06 | 2025-03-24 | 12d | 1752d |  |  |  |  |  |
| 241 | 1.2.2.10.1 | Base Line configuration & Unit testing by HBT | milestone | 0d | 2025-03-06 | 2025-03-06 | 221 | 2025-03-06 | 2025-03-06 | 0d | 1764d |  |  |  |  |  |
| 242 | 1.2.2.10.2 | UAT Sign off by CTM | milestone | 0d | 2025-03-24 | 2025-03-24 | 226 | 2025-03-24 | 2025-03-24 | 0d | 1752d |  |  |  |  |  |
| 243 | 1.2.3 | **Deploy** |  | 12d | 2025-03-24 | 2025-04-09 |  | 2025-03-24 | 2025-04-09 | 12d | 1740d |  | HBT & HoABL | 100% | 10% | 3% |
| 244 | 1.2.3.1 | **Prerequisite** |  | 0d | 2025-03-24 | 2025-03-24 |  | 2025-03-24 | 2025-03-24 | 0d | 1752d |  |  |  |  |  |
| 245 | 1.2.3.1.1 | End user training plan | milestone | 0d | 2025-03-24 | 2025-03-24 | 226 | 2025-03-24 | 2025-03-24 | 0d | 1752d |  | HoABL | 100% |  |  |
| 246 | 1.2.3.1.2 | Availability of end users & Management for training | milestone | 0d | 2025-03-24 | 2025-03-24 | 226 | 2025-03-24 | 2025-03-24 | 0d | 1752d |  | HoABL | 100% | 10% | 3% |
| 247 | 1.2.3.1.3 | Availability of Master data | milestone | 0d | 2025-03-24 | 2025-03-24 | 226 | 2025-03-24 | 2025-03-24 | 0d | 1752d |  | HoABL | 100% | 10% | 3% |
| 248 | 1.2.3.1.4 | Availability of Cutover data | milestone | 0d | 2025-03-24 | 2025-03-24 | 226 | 2025-03-24 | 2025-03-24 | 0d | 1752d |  | HoABL | 100% | 10% | 3% |
| 249 | 1.2.3.1.5 | User list & authorizations | milestone | 0d | 2025-03-24 | 2025-03-24 | 226 | 2025-03-24 | 2025-03-24 | 0d | 1752d |  | HoABL | 100% | 10% | 3% |

| ID | WBS | Task | Type | Duration | Start | Finish | Predecessors | Baseline start | Baseline finish | Baseline duration | Total slack | Free slack | Primery Responsibility | Core Team | HOD | Management |
| --- | --- | --- | --- | --- | --- | --- | --- | --- | --- | --- | --- | --- | --- | --- | --- | --- |
| 250 | 1.2.3.2 | **End User Training** |  | 3d | 2025-03-25 | 2025-03-27 |  | 2025-03-25 | 2025-03-27 | 3d | 1749d |  |  |  |  |  |
| 251 | 1.2.3.2.1 | Prepare end user training manual |  | 1d | 2025-03-25 | 2025-03-25 | 226 | 2025-03-25 | 2025-03-25 | 1d | 1749d | 0d | HoABL | 100% |  |  |
| 252 | 1.2.3.2.2 | Conduct end user training |  | 2d | 2025-03-26 | 2025-03-27 | 251 | 2025-03-26 | 2025-03-27 | 2d | 1749d |  | HoABL | 100% |  |  |
| 253 | 1.2.3.3 | **Production Environment Preparation** |  | 1d | 2025-03-25 | 2025-03-25 |  | 2025-03-25 | 2025-03-25 | 1d | 1751d |  |  |  |  |  |
| 254 | 1.2.3.3.1 | Transport final configurations |  | 1d | 2025-03-25 | 2025-03-25 | 226 | 2025-03-25 | 2025-03-25 | 1d | 1751d | 0d | HBT |  |  |  |
| 255 | 1.2.3.3.2 | Maintain number ranges |  | 1d | 2025-03-25 | 2025-03-25 | 254SS | 2025-03-25 | 2025-03-25 | 1d | 1751d |  | HBT |  |  |  |
| 256 | 1.2.3.3.3 | Maintain client specific data |  | 1d | 2025-03-25 | 2025-03-25 | 254SS | 2025-03-25 | 2025-03-25 | 1d | 1751d |  | HBT |  |  |  |
| 257 | 1.2.3.4 | **User creation & authorization** |  | 6d | 2025-03-25 | 2025-04-01 |  | 2025-03-25 | 2025-04-01 | 6d | 1746d |  |  |  |  |  |
| 258 | 1.2.3.4.1 | Finalize list of users for production enviornment |  | 3d | 2025-03-25 | 2025-03-27 | 226 | 2025-03-25 | 2025-03-27 | 3d | 1746d | 0d | HoABL | 100% | 10% | 3% |
| 259 | 1.2.3.4.2 | Finalise Authorization Matrix |  | 3d | 2025-03-25 | 2025-03-27 | 258SS | 2025-03-25 | 2025-03-27 | 3d | 1746d | 0d | HoABL | 100% | 10% | 3% |
| 260 | 1.2.3.4.3 | Create roles and authorization |  | 3d | 2025-03-28 | 2025-04-01 | 259 | 2025-03-28 | 2025-04-01 | 3d | 1746d | 0d | HBT |  |  |  |
| 261 | 1.2.3.4.4 | Test roles and authorization |  | 3d | 2025-03-28 | 2025-04-01 | 260SS | 2025-03-28 | 2025-04-01 | 3d | 1746d |  | HBT & HoABL | 100% |  |  |
| 262 | 1.2.3.5 | **Data preparation and upload** |  | 12d | 2025-03-25 | 2025-04-09 |  | 2025-03-25 | 2025-04-09 | 12d | 1740d |  |  |  |  |  |
| 263 | 1.2.3.5.1 | Receipt of master data |  | 2d | 2025-03-25 | 2025-03-26 | 226 | 2025-03-25 | 2025-03-26 | 2d | 1740d | 0d | HoABL | 100% | 10% | 3% |
| 264 | 1.2.3.5.2 | Validate & cleanse master data |  | 4d | 2025-03-25 | 2025-03-28 | 263SS | 2025-03-25 | 2025-03-28 | 4d | 1740d | 0d | HoABL | 100% |  |  |
| 265 | 1.2.3.5.3 | Upload master data in Production |  | 3d | 2025-03-31 | 2025-04-02 | 264 | 2025-03-31 | 2025-04-02 | 3d | 1740d | 0d | HBT & HoABL | 100% |  |  |
| 266 | 1.2.3.5.4 | Confirm uploaded master data |  | 2d | 2025-03-31 | 2025-04-01 | 265SS | 2025-03-31 | 2025-04-01 | 2d | 1746d |  | HoABL | 100% | 10% |  |
| 267 | 1.2.3.5.5 | Receipt of cutover data |  | 1d | 2025-03-31 | 2025-03-31 | 265SS | 2025-03-31 | 2025-03-31 | 1d | 1740d | 0d | HoABL | 100% | 10% | 3% |
| 268 | 1.2.3.5.6 | Validate & cleanse cutover data |  | 3d | 2025-04-01 | 2025-04-03 | 267 | 2025-04-01 | 2025-04-03 | 3d | 1740d | 0d | HoABL | 100% |  |  |
| 269 | 1.2.3.5.7 | Upload cutover data in production |  | 3d | 2025-04-04 | 2025-04-08 | 268 | 2025-04-04 | 2025-04-08 | 3d | 1740d | 0d | HBT & HoABL | 100% |  |  |
| 270 | 1.2.3.5.8 | Check and validate uploaded data |  | 4d | 2025-04-04 | 2025-04-09 | 269SS | 2025-04-04 | 2025-04-09 | 4d | 1740d | 0d | HoABL | 100% | 10% |  |
| 271 | 1.2.3.6 | **Deliverables** |  | 0d | 2025-04-09 | 2025-04-09 |  | 2025-04-09 | 2025-04-09 | 0d | 1740d |  |  |  |  |  |
| 272 | 1.2.3.6.1 | D: End user training manual | milestone | 0d | 2025-04-09 | 2025-04-09 | 270 | 2025-04-09 | 2025-04-09 | 0d | 1740d |  | HBT |  |  |  |
| 273 | 1.2.3.6.2 | D: Data migration strategy document | milestone | 0d | 2025-04-09 | 2025-04-09 | 270 | 2025-04-09 | 2025-04-09 | 0d | 1740d |  | HBT |  |  |  |
| 274 | 1.2.3.6.3 | D: Master data upload programs | milestone | 0d | 2025-04-09 | 2025-04-09 | 270 | 2025-04-09 | 2025-04-09 | 0d | 1740d |  | HBT |  |  |  |
| 275 | 1.2.3.6.4 | D: Sample data upload validation | milestone | 0d | 2025-04-09 | 2025-04-09 | 270 | 2025-04-09 | 2025-04-09 | 0d | 1740d |  | HBT |  |  |  |
| 276 | 1.2.3.6.5 | D: Final authorization matrix, roles & authorizations | milestone | 0d | 2025-04-09 | 2025-04-09 | 270 | 2025-04-09 | 2025-04-09 | 0d | 1740d |  | HBT |  |  |  |

| ID | WBS | Task | Type | Duration | Start | Finish | Predecessors | Baseline start | Baseline finish | Baseline duration | Total slack | Free slack | Constraint | Primery Responsibility | Core Team | HOD | Management |
| --- | --- | --- | --- | --- | --- | --- | --- | --- | --- | --- | --- | --- | --- | --- | --- | --- | --- |
| 277 | 1.2.3.7 | **Obtain Approval & phase Sign Off** |  | 0d | 2025-04-09 | 2025-04-09 |  | 2025-04-09 | 2025-04-09 | 0d | 1740d |  |  |  |  |  |  |
| 278 | 1.2.3.7.1 | Deploy signoff | milestone | 0d | 2025-04-09 | 2025-04-09 | 270 | 2025-04-09 | 2025-04-09 | 0d | 1740d |  |  | HoABL | 100% | 10% | 3% |
| 279 | 1.2.3.7.2 | Go -Live | milestone | 0d | 2025-04-09 | 2025-04-09 | 270 | 2025-04-09 | 2025-04-09 | 0d | 1740d |  |  | HoABL | 100% | 10% | 3% |
| 280 | 1.3 | **Post Go-Live Support** |  | 22d | 2025-04-09 | 2025-05-08 |  | 2025-04-07 | 2025-05-06 | 22d | 0d |  |  | HBT & HoABL | 100% | 100% | 100% |
| 281 | 1.3.1 | One month post Go-Live support |  | 22d | 2025-04-09 | 2025-05-08 | 186 | 2025-04-07 | 2025-05-06 | 22d | 0d |  |  | HBT & HoABL | 100% | 100% | 100% |
| 282 | 1.3.2 | **Deliverables** |  | 0d | 2025-05-08 | 2025-05-08 |  | 2025-05-06 | 2025-05-06 | 0d | 1719d |  |  |  |  |  |  |
| 283 | 1.3.2.1 | D: Issue log & resolutions | milestone | 0d | 2025-05-08 | 2025-05-08 | 281FF | 2025-05-06 | 2025-05-06 | 0d | 1719d |  |  | HBT |  |  |  |
| 284 | 1.3.2.2 | D: FS & TS | milestone | 0d | 2025-05-08 | 2025-05-08 | 281FF | 2025-05-06 | 2025-05-06 | 0d | 1719d |  |  | HBT |  |  |  |
| 285 | 1.4 | **Wave 3A One month after post Go-Live support after 1A,1B,3B &3C** |  | 22d | 2025-05-09 | 2025-06-09 |  | 2025-05-07 | 2025-06-05 | 22d | 1697d |  |  |  |  |  |  |
| 286 | 1.4.1 | One month after post Go-Live support |  | 22d | 2025-05-09 | 2025-06-09 | 281 | 2025-05-07 | 2025-06-05 | 22d | 1697d | 0d | start no earlier than 2025-04-03 |  |  |  |  |
| 287 | 1.4.2 | **Deliverables** |  | 0d | 2025-06-09 | 2025-06-09 |  | 2025-06-05 | 2025-06-05 | 0d | 1697d |  |  |  |  |  |  |
| 288 | 1.4.2.1 | D: Issue log & resolutions | milestone | 0d | 2025-06-09 | 2025-06-09 | 286FF | 2025-06-05 | 2025-06-05 | 0d | 1697d |  |  |  |  |  |  |
| 289 | 1.4.2.2 | D: FS & TS | milestone | 0d | 2025-06-09 | 2025-06-09 | 286FF | 2025-06-05 | 2025-06-05 | 0d | 1697d |  |  |  |  |  |  |
| 290 | 1.5 | **Wave 2A Support - for 06 Year 07 months** |  | 1719d | 2025-05-09 | 2031-12-10 |  | 2025-05-07 | 2031-12-08 | 1719d | 0d |  |  | HBT & HoABL | 100% | 100% | 100% |
| 291 | 1.5.1 | 07 month of 1st Year AMS |  | 153d | 2025-05-09 | 2025-12-09 | 281 | 2025-05-07 | 2025-12-05 | 153d | 0d |  |  |  |  |  |  |
| 292 | 1.5.2 | 12 month of 2nd Year AMS |  | 261d | 2025-12-10 | 2026-12-09 | 291 | 2025-12-08 | 2026-12-07 | 261d | 0d |  |  |  |  |  |  |
| 293 | 1.5.3 | 12 month of 3rd Year AMS |  | 261d | 2026-12-10 | 2027-12-09 | 292 | 2026-12-08 | 2027-12-07 | 261d | 0d |  |  |  |  |  |  |
| 294 | 1.5.4 | 12 month of 4th Year AMS |  | 262d | 2027-12-10 | 2028-12-11 | 293 | 2027-12-08 | 2028-12-07 | 262d | 0d |  |  |  |  |  |  |
| 295 | 1.5.5 | 12 month of 5th Year AMS |  | 261d | 2028-12-12 | 2029-12-11 | 294 | 2028-12-08 | 2029-12-07 | 261d | 0d |  |  |  |  |  |  |
| 296 | 1.5.6 | 12 month of 6th Year AMS |  | 261d | 2029-12-12 | 2030-12-11 | 295 | 2029-12-10 | 2030-12-09 | 261d | 0d |  |  |  |  |  |  |
| 297 | 1.5.7 | 12 month of 7th Year AMS |  | 260d | 2030-12-12 | 2031-12-10 | 296 | 2030-12-10 | 2031-12-08 | 260d | 0d |  |  |  |  |  |  |
| 298 | 1.5.8 | **Deliverables** |  | 1719d | 2025-05-09 | 2031-12-10 |  | 2025-05-07 | 2031-12-08 | 1719d | 0d |  |  |  |  |  |  |
| 299 | 1.5.8.1 | D: Issue log & resolutions |  | 1719d | 2025-05-09 | 2031-12-10 | 291SS | 2025-05-07 | 2031-12-08 | 1719d | 0d |  |  |  |  |  |  |
| 300 | 1.5.8.2 | D: FS & TS |  | 1719d | 2025-05-09 | 2031-12-10 | 291SS | 2025-05-07 | 2031-12-08 | 1719d | 0d |  |  |  |  |  |  |
