# 8. TE_Project Plan_06.11.2024_V7-% completion

Schedule from MS Project, 2024-08-05 to 2030-03-11, status date 2022-10-13, A marks actual dates.

## Calendars

- Standard: Mon-Fri 08:00-12:00, 13:00-17:00; Sat-Sun off. Exceptions (off unless hours are given): 2024-10-02 (Gandhi Jayanti), 2024-10-11 (Maha Navami), 2024-10-31 (Diwali), 2024-11-01 (Kannda Rajyothsava), 2024-12-25 (Christmas), 2025-01-01 (New Year), 2025-01-15 (Makar Sankranti).

## Schedule

| ID | WBS | Task | Duration | Start | Finish | Predecessors | Complete | Remaining | Total slack | Constraint | Text1 |
| --- | --- | --- | --- | --- | --- | --- | --- | --- | --- | --- | --- |
| 1 | 1 | **SAP Implementation at Total Environment** | 1454d | 2024-08-05 A | 2030-03-11 |  | 3% | 1408.68d | 0d |  |  |
| 2 | 1.1 | **Phase 1A & 3C: S4 HANA Implementation** | 150d | 2024-08-05 A | 2025-03-11 |  | 12% | 132.68d | 1304d |  |  |
| 3 | 1.1.1 | **Implementation** | 130d | 2024-08-05 A | 2025-02-11 |  | 13% | 113.2d | 1324d |  |  |
| 4 | 1.1.1.1 | **Prepare** | 26d | 2024-08-05 A | 2024-09-09 A |  | 100% |  |  |  |  |
| 5 | 1.1.1.1.1 | **Kick off** | 6d | 2024-08-05 A | 2024-08-12 A |  | 100% |  |  |  |  |
| 6 | 1.1.1.1.1.1 | Prepare kickoff presentation in consultation with TE | 3d | 2024-08-05 A | 2024-08-07 A |  | 100% |  |  | start no earlier than 2024-08-05 | HBT |
| 7 | 1.1.1.1.1.2 | Review & finalize kickoff presentation | 2d | 2024-08-08 A | 2024-08-09 A | 6 | 100% |  |  |  | HBT & TE |
| 8 | 1.1.1.1.1.3 | Project Kick off with Key stakeholders | 1d | 2024-08-12 A | 2024-08-12 A | 7 | 100% |  |  |  | HBT & TE |
| 9 | 1.1.1.1.2 | **Project Plan** | 9d | 2024-08-13 A | 2024-08-23 A |  | 100% |  |  |  |  |
| 10 | 1.1.1.1.2.1 | Prepare & submit Initial project plan | 5d | 2024-08-13 A | 2024-08-19 A | 8 | 100% |  |  | start no earlier than 2024-01-02 | HBT |
| 11 | 1.1.1.1.2.2 | Review project plan | 2d | 2024-08-20 A | 2024-08-21 A | 10 | 100% |  |  |  | TE |
| 12 | 1.1.1.1.2.3 | Make necessary changes in the plan | 1d | 2024-08-22 A | 2024-08-22 A | 11 | 100% |  |  |  | HBT |
| 13 | 1.1.1.1.2.4 | Submit revised plan | 1d | 2024-08-22 A | 2024-08-22 A | 12FF | 100% |  |  |  | HBT |
| 14 | 1.1.1.1.2.5 | Approval of project plan by TE | 1d | 2024-08-23 A | 2024-08-23 A | 13 | 100% |  |  |  | TE |
| 15 | 1.1.1.1.3 | **Project Governance** | 2d | 2024-08-22 A | 2024-08-23 A |  | 100% |  |  |  |  |
| 16 | 1.1.1.1.3.1 | Finalize communication plan | 1d | 2024-08-22 A | 2024-08-22 A | 10FS+2d | 100% |  |  | start no earlier than 2023-12-05 | TE & HBT |
| 17 | 1.1.1.1.3.2 | Finalize deliverable signoff matrix | 1d | 2024-08-23 A | 2024-08-23 A | 16 | 100% |  |  |  | TE & HBT |
| 18 | 1.1.1.1.4 | **Mobilize team** | 1d | 2024-09-06 A | 2024-09-06 A |  | 100% |  |  |  |  |
| 19 | 1.1.1.1.4.1 | HBT Team mobilization | 1d | 2024-09-06 A | 2024-09-06 A | 17FS+9d | 100% |  |  |  | HBT |
| 20 | 1.1.1.1.4.2 | Total Environment team mobilization | 1d | 2024-09-06 A | 2024-09-06 A | 19SS | 100% |  |  |  | TE |
| 21 | 1.1.1.1.5 | Project preparation phase sign off by TE | 1d | 2024-09-09 A | 2024-09-09 A | 20 | 100% |  |  |  | TE & HBT |
| 22 | 1.1.1.1.6 | **Deliverables** | 9d | 2024-08-13 A | 2024-08-23 A |  | 100% |  |  |  |  |
| 23 | 1.1.1.1.6.1 | D: Baseline Project Plan | 1d | 2024-08-23 A | 2024-08-23 A | 14FF | 100% |  |  | start no earlier than 2022-11-07 | HBT |
| 24 | 1.1.1.1.6.2 | D: Project kickoff presentation | 1d | 2024-08-13 A | 2024-08-13 A | 8 | 100% |  |  | start no earlier than 2022-11-07 | HBT |

| ID | WBS | Task | Duration | Start | Finish | Predecessors | Complete | Remaining | Total slack | Free slack | Constraint | Text1 |
| --- | --- | --- | --- | --- | --- | --- | --- | --- | --- | --- | --- | --- |
| 25 | 1.1.1.2 | **PS, MM, SD, PP, QM, FICO, REFX, Cash Mgmt** | 120d | 2024-08-19 A | 2025-02-11 |  | 16% | 100.24d | 1324d |  |  |  |
| 26 | 1.1.1.2.1 | **Explore** | 52d | 2024-08-19 A | 2024-11-04 |  | 74% | 13.43d | 1392d |  |  |  |
| 27 | 1.1.1.2.1.1 | **Requirement gathering & Conceptual design** | 42d | 2024-08-19 A | 2024-10-17 A |  | 100% |  |  |  |  |  |
| 28 | 1.1.1.2.1.1.1 | Explain & share AS IS template | 1d | 2024-08-19 A | 2024-08-19 A | 8FS+4d | 100% |  |  |  |  | HBT |
| 29 | 1.1.1.2.1.1.2 | Prepare AS-IS document | 5d | 2024-08-20 A | 2024-08-26 A | 28 | 100% |  |  |  |  | TE |
| 30 | 1.1.1.2.1.1.3 | AS IS document review with TE | 20d | 2024-08-27 A | 2024-09-23 A | 29 | 100% |  |  |  | start no earlier than 2022-11-04 | TE & HBT |
| 31 | 1.1.1.2.1.1.4 | Update AS IS document as per discussion | 20d | 2024-08-27 A | 2024-09-23 A | 30SS | 100% |  |  |  |  | TE & HBT |
| 32 | 1.1.1.2.1.1.5 | Prepare end to end cycle (holistic view) for AS IS | 4d | 2024-09-24 A | 2024-09-27 A | 31 | 100% |  |  |  |  | TE & HBT |
| 33 | 1.1.1.2.1.1.6 | Presentation to Management for AS IS process | 10d | 2024-09-30 A | 2024-10-15 A | 32 | 100% |  |  |  |  | TE & HBT |
| 34 | 1.1.1.2.1.1.7 | Making final changes in AS IS | 2d | 2024-10-16 A | 2024-10-17 A | 33 | 100% |  |  |  |  | TE & HBT |
| 35 | 1.1.1.2.1.2 | **Level 1 training - L1** | 4d | 2024-09-24 A | 2024-09-27 A |  | 100% |  |  |  |  |  |
| 36 | 1.1.1.2.1.2.1 | Making necessary training preparation and Plan | 2d | 2024-09-24 A | 2024-09-25 A | 31 | 100% |  |  |  |  | HBT |
| 37 | 1.1.1.2.1.2.2 | Conducting level-1 training (SAP Overview) | 2d | 2024-09-26 A | 2024-09-27 A | 36 | 100% |  |  |  |  | HBT |
| 38 | 1.1.1.2.1.3 | **Business Process definition** | 26d | 2024-09-24 A | 2024-11-04 |  | 39% | 15.76d | 1392d |  |  |  |
| 39 | 1.1.1.2.1.3.1 | **Enterprise structure** | 8d | 2024-09-24 A | 2024-10-04 |  | 99% | 0.08d | 1410d |  |  |  |
| 40 | 1.1.1.2.1.3.1.1 | Define Org structure | 3d | 2024-09-24 A | 2024-09-26 A | 31 | 100% |  |  |  |  | HBT |
| 41 | 1.1.1.2.1.3.1.2 | Review & discuss Org Structure with TE | 1d | 2024-09-27 A | 2024-09-27 A | 40 | 100% |  |  |  |  | TE & HBT |
| 42 | 1.1.1.2.1.3.1.3 | Review of Org structure by KPMG | 2d | 2024-09-27 A | 2024-09-30 A | 41SS | 100% |  |  |  |  | KPMG |
| 43 | 1.1.1.2.1.3.1.4 | Incorporate changes suggested by TE & KPMG | 2d | 2024-10-01 A | 2024-10-03 A | 42 | 100% |  |  |  |  | HBT |
| 44 | 1.1.1.2.1.3.1.5 | Finalize & submit Org structure | 1d | 2024-10-04 A | 2024-10-04 A | 43 | 100% |  |  |  |  | HBT |
| 45 | 1.1.1.2.1.3.1.6 | Sign off on Org structure by TE | 1d | 2024-10-04 A | 2024-10-04 | 44FF | 90% | 0.1d | 1410d |  |  | TE |
| 46 | 1.1.1.2.1.3.2 | **Business Blueprint** | 14d | 2024-09-27 A | 2024-10-18 |  | 39% | 8.52d | 1401d |  |  |  |
| 47 | 1.1.1.2.1.3.2.1 | Prepare Business blueprint document & KDS | 5d | 2024-09-27 A | 2024-10-04 A | 40 | 100% |  |  |  |  | HBT |
| 48 | 1.1.1.2.1.3.2.2 | Review Gap analysis, propose workaround, identify development list | 2d | 2024-10-03 A | 2024-10-04 | 47SS+3d | 80% | 0.4d | 0.6d | 0d |  | HBT |
| 49 | 1.1.1.2.1.3.2.3 | Submit BBP to CTM | 1d | 2024-10-07 A | 2024-10-07 | 48 | 60% | 0.4d | 1409d | 0d |  | HBT |
| 50 | 1.1.1.2.1.3.2.4 | Review BBP with CTM & BPO | 4d | 2024-10-07 A | 2024-10-10 | 49SS | 20% | 3.2d | 1406d | 0d |  | HBT & TE |
| 51 | 1.1.1.2.1.3.2.5 | Review of BBP by KPMG | 4d | 2024-10-07 A | 2024-10-10 | 50SS | 20% | 3.2d | 0.6d | 0d |  | KPMG |
| 52 | 1.1.1.2.1.3.2.6 | Incorporate changes suggested | 3d | 2024-10-14 A | 2024-10-16 | 51 | 20% | 2.4d | 0d |  |  | HBT |
| 53 | 1.1.1.2.1.3.2.7 | BBP solution workshop for Management | 2d | 2024-10-17 | 2024-10-18 | 52 |  |  | 0d |  |  | TE & HBT |
| 54 | 1.1.1.2.1.3.2.8 | Submit final BBP for signoff | 1d | 2024-10-18 | 2024-10-18 | 53FF |  |  | 0d |  |  | HBT |
| 55 | 1.1.1.2.1.3.2.9 | BBP sign off by TE | 1d | 2024-10-18 | 2024-10-18 | 54SS |  |  | 1400d | 0d |  | TE |
| 56 | 1.1.1.2.1.3.2.10 | Completion of Business Blueprint Phase | 1d | 2024-10-18 | 2024-10-18 | 55FF |  |  | 1401d |  |  | TE & HBT |

| ID | WBS | Task | Duration | Start | Finish | Predecessors | Total slack | Free slack | Text1 |
| --- | --- | --- | --- | --- | --- | --- | --- | --- | --- |
| 57 | 1.1.1.2.1.3.3 | **Master Data & Cutover data** | 4d | 2024-10-21 | 2024-10-24 |  | 0d |  |  |
| 58 | 1.1.1.2.1.3.3.1 | Identify master data & Cutover data requirement | 2d | 2024-10-21 | 2024-10-22 | 54 | 0d |  | HBT |
| 59 | 1.1.1.2.1.3.3.2 | Prepare & explain master data & cutover data template | 1d | 2024-10-23 | 2024-10-23 | 58 | 0d |  | HBT |
| 60 | 1.1.1.2.1.3.3.3 | Circulate master data & cutover data template | 1d | 2024-10-24 | 2024-10-24 | 59 | 5d | 0d | HBT |
| 61 | 1.1.1.2.1.3.4 | **Requirement gathering sheet (RGS)** | 6d | 2024-10-24 | 2024-11-04 |  | 0d |  |  |
| 62 | 1.1.1.2.1.3.4.1 | Prepare RGS | 5d | 2024-10-24 | 2024-10-30 | 59 | 0d |  | HBT |
| 63 | 1.1.1.2.1.3.4.2 | Submit RGS | 1d | 2024-11-04 | 2024-11-04 | 62 | 0d |  | HBT |
| 64 | 1.1.1.2.1.3.5 | **Deliverables** | 17d | 2024-09-30 | 2024-10-24 |  | 1397d |  |  |
| 65 | 1.1.1.2.1.3.5.1 | D: BBP document | 1d | 2024-10-21 | 2024-10-21 | 55 | 1400d |  | HBT |
| 66 | 1.1.1.2.1.3.5.2 | D: Gap Analysis | 1d | 2024-10-21 | 2024-10-21 | 55 | 1400d |  | HBT |
| 67 | 1.1.1.2.1.3.5.3 | D: Core team training presentation | 1d | 2024-09-30 | 2024-09-30 | 37 | 1413d |  | HBT |
| 68 | 1.1.1.2.1.3.5.4 | D: Final WRICEF list | 1d | 2024-10-21 | 2024-10-21 | 55 | 1400d |  | HBT |
| 69 | 1.1.1.2.1.3.5.5 | D: Initial master data templates | 1d | 2024-10-24 | 2024-10-24 | 60FF | 1397d |  | HBT |
| 70 | 1.1.1.2.2 | **Realize** | 47d | 2024-11-05 | 2025-01-10 |  | 0d |  |  |
| 71 | 1.1.1.2.2.1 | **Functional Specifications** | 7d | 2024-11-05 | 2024-11-13 |  | 0d |  |  |
| 72 | 1.1.1.2.2.1.1 | Prepare functional specfications | 5d | 2024-11-05 | 2024-11-11 | 63 | 0d |  | HBT |
| 73 | 1.1.1.2.2.1.2 | Finalize development tracker | 2d | 2024-11-12 | 2024-11-13 | 72 | 1385d |  | HBT |
| 74 | 1.1.1.2.2.2 | **Configure and Validate Baseline** | 11d | 2024-11-12 | 2024-11-26 |  | 0d |  |  |
| 75 | 1.1.1.2.2.2.1 | Configure Processes and Functions in golden master (100) | 6d | 2024-11-12 | 2024-11-19 | 72 | 0d |  | HBT |
| 76 | 1.1.1.2.2.2.2 | Config review by KPMG | 5d | 2024-11-13 | 2024-11-19 | 75SS+1d | 0d |  | KPMG |
| 77 | 1.1.1.2.2.2.3 | Transfer of Configuration to Dev testing | 1d | 2024-11-20 | 2024-11-20 | 76 | 0d |  | HBT |
| 78 | 1.1.1.2.2.2.4 | Unit testing-1 (Consultant) | 3d | 2024-11-21 | 2024-11-25 | 77 | 0d |  | HBT |
| 79 | 1.1.1.2.2.2.5 | Document and Resolve Issues | 3d | 2024-11-21 | 2024-11-25 | 78SS | 0d |  | HBT |
| 80 | 1.1.1.2.2.2.6 | Submit Unit Testing result & completion of baselune config | 1d | 2024-11-26 | 2024-11-26 | 79 | 0d |  | HBT |

| ID | WBS | Task | Duration | Start | Finish | Predecessors | Total slack | Free slack | Text1 |
| --- | --- | --- | --- | --- | --- | --- | --- | --- | --- |
| 81 | 1.1.1.2.2.3 | **System Integration Test** | 29d | 2024-11-26 | 2025-01-07 |  | 0d |  |  |
| 82 | 1.1.1.2.2.3.1 | **Integration test Plan** | 3d | 2024-11-26 | 2024-11-28 |  | 0d |  |  |
| 83 | 1.1.1.2.2.3.1.1 | Identify scenerios for Integration test | 3d | 2024-11-26 | 2024-11-28 | 80SS | 0d |  | TE & HBT |
| 84 | 1.1.1.2.2.3.1.2 | Write scripts for Integration test | 3d | 2024-11-26 | 2024-11-28 | 83SS | 1373d | 0d | TE & HBT |
| 85 | 1.1.1.2.2.3.1.3 | Test scripts review by KPMG | 3d | 2024-11-26 | 2024-11-28 | 83SS | 0d |  | KPMG |
| 86 | 1.1.1.2.2.3.2 | **Conduct System integration test** | 26d | 2024-11-29 | 2025-01-07 |  | 0d |  |  |
| 87 | 1.1.1.2.2.3.2.1 | Perform Integration testing by Consultant | 7d | 2024-11-29 | 2024-12-09 | 85 | 0d |  | HBT |
| 88 | 1.1.1.2.2.3.2.2 | Plan for Level-2 training (CTM) | 1d | 2024-12-10 | 2024-12-10 | 87 | 0d |  | HBT |
| 89 | 1.1.1.2.2.3.2.3 | Making necessery training arrangement - PPT + tutorial | 2d | 2024-12-11 | 2024-12-12 | 88 | 0d |  | HBT |
| 90 | 1.1.1.2.2.3.2.4 | Conducting Level-2 Training (Module wise) | 3d | 2024-12-13 | 2024-12-17 | 89 | 0d |  | TE & HBT |
| 91 | 1.1.1.2.2.3.2.5 | Perform User Acceptance test - CTM | 9d | 2024-12-18 | 2024-12-31 | 90 | 0d |  | TE |
| 92 | 1.1.1.2.2.3.2.6 | Resolving the issues, if any | 9d | 2024-12-18 | 2024-12-31 | 91SS | 0d |  | HBT |
| 93 | 1.1.1.2.2.3.2.7 | Retesting of scenarios | 3d | 2025-01-02 | 2025-01-06 | 92 | 0d |  | TE |
| 94 | 1.1.1.2.2.3.2.8 | UAT (by CTM) signoff | 1d | 2025-01-07 | 2025-01-07 | 93 | 1237d | 0d | TE |
| 95 | 1.1.1.2.2.4 | **ABAP Development - SIT critical** | 31d | 2024-11-20 | 2025-01-03 |  | 1328d |  |  |
| 96 | 1.1.1.2.2.4.1 | Develop reports | 22d | 2024-11-20 | 2024-12-19 | 75 | 1328d | 0d | HBT |
| 97 | 1.1.1.2.2.4.2 | Testing by consultant | 22d | 2024-11-25 | 2024-12-24 | 96SS+3d | 1350d | 0d | HBT |
| 98 | 1.1.1.2.2.4.3 | Testing by CTM | 22d | 2024-11-28 | 2024-12-30 | 97SS+3d | 1350d | 0d | TE |
| 99 | 1.1.1.2.2.4.4 | Sign off Development | 22d | 2024-12-03 | 2025-01-03 | 98SS+3d | 1350d |  | TE |
| 100 | 1.1.1.2.2.5 | **Cutover Strategy** | 4d | 2025-01-07 | 2025-01-10 |  | 0d |  |  |
| 101 | 1.1.1.2.2.5.1 | Discussion on cutover strategy | 2d | 2025-01-07 | 2025-01-08 | 93 | 0d |  | TE & HBT |
| 102 | 1.1.1.2.2.5.2 | Cutover & data responsibility Plan | 1d | 2025-01-09 | 2025-01-09 | 101 | 1346d |  | TE & HBT |
| 103 | 1.1.1.2.2.5.3 | Review of cutover data migration strategy by KPMG | 3d | 2025-01-07 | 2025-01-09 | 101SS | 0d |  | KPMG |
| 104 | 1.1.1.2.2.5.4 | Communication to Organisation for Cutover | 1d | 2025-01-10 | 2025-01-10 | 103 | 0d |  | TE |

| ID | WBS | Task | Duration | Start | Finish | Predecessors | Total slack | Free slack | Constraint | Text1 |
| --- | --- | --- | --- | --- | --- | --- | --- | --- | --- | --- |
| 105 | 1.1.1.2.2.6 | **End user training plan** | 2d | 2025-01-08 | 2025-01-09 |  | 1237d |  |  |  |
| 106 | 1.1.1.2.2.6.1 | Preparation of End User training plan | 2d | 2025-01-08 | 2025-01-09 | 94 | 1237d | 0d |  | TE & HBT |
| 107 | 1.1.1.2.2.6.2 | Communicate plan to TE | 1d | 2025-01-09 | 2025-01-09 | 106FF | 1237d | 0d |  | TE |
| 108 | 1.1.1.2.2.6.3 | Completion of Realization Phase | 1d | 2025-01-09 | 2025-01-09 | 107FF | 1237d | 0d |  | TE & HBT |
| 109 | 1.1.1.2.2.7 | **Deliverables** | 32d | 2024-11-26 | 2025-01-10 |  | 1345d |  |  |  |
| 110 | 1.1.1.2.2.7.1 | D: Test scripts | 1d | 2024-11-29 | 2024-11-29 | 84 | 1373d |  |  | HBT |
| 111 | 1.1.1.2.2.7.2 | D: Unit test result document | 1d | 2024-11-26 | 2024-11-26 | 78 | 1376d |  |  | HBT |
| 112 | 1.1.1.2.2.7.3 | D: Integration testing document | 1d | 2024-12-10 | 2024-12-10 | 87 | 1366d |  |  | HBT |
| 113 | 1.1.1.2.2.7.4 | D: User Acceptance testing document | 1d | 2025-01-07 | 2025-01-07 | 94FF | 1348d |  |  | HBT |
| 114 | 1.1.1.2.2.7.5 | D: Final master data templates | 1d | 2025-01-10 | 2025-01-10 | 104FF | 1345d |  |  | HBT |
| 115 | 1.1.1.2.2.7.6 | D: Data migration strategy document | 1d | 2025-01-10 | 2025-01-10 | 104FF | 1345d |  |  | HBT |
| 116 | 1.1.1.2.3 | **Deploy** | 72d | 2024-10-25 | 2025-02-10 |  | 5d |  |  |  |
| 117 | 1.1.1.2.3.1 | **Coordinate ABAP Development Pre Go Live** | 31d | 2024-12-20 | 2025-02-05 |  | 1328d |  |  |  |
| 118 | 1.1.1.2.3.1.1 | Develop reports | 22d | 2024-12-20 | 2025-01-23 | 96 | 1328d | 0d | start no earlier than 2022-12-20 | HBT |
| 119 | 1.1.1.2.3.1.2 | Testing by consultant | 22d | 2024-12-26 | 2025-01-28 | 118SS+3d | 1328d | 0d |  | HBT |
| 120 | 1.1.1.2.3.1.3 | Testing by CTM | 22d | 2024-12-31 | 2025-01-31 | 119SS+3d | 1328d | 0d |  | TE |
| 121 | 1.1.1.2.3.1.4 | Sign off Development | 22d | 2025-01-06 | 2025-02-05 | 120SS+3d | 1328d |  |  | TE |
| 122 | 1.1.1.2.3.2 | **End User Training** | 10d | 2025-01-10 | 2025-01-24 |  | 1335d |  |  |  |
| 123 | 1.1.1.2.3.2.1 | Prepare end user training manual | 2d | 2025-01-10 | 2025-01-13 | 104SS | 1335d | 0d |  | HBT |
| 124 | 1.1.1.2.3.2.2 | Conduct end user training | 5d | 2025-01-14 | 2025-01-21 | 123 | 1335d | 0d |  | TE |
| 125 | 1.1.1.2.3.2.3 | Conduct training to HODs/Management | 3d | 2025-01-22 | 2025-01-24 | 124 | 1336d |  |  | TE |
| 126 | 1.1.1.2.3.3 | **Production Environment Preparation** | 3d | 2025-01-08 | 2025-01-10 |  | 1345d |  |  |  |
| 127 | 1.1.1.2.3.3.1 | Transport final configurations | 1d | 2025-01-08 | 2025-01-08 | 94 | 1345d | 0d |  | HBT |
| 128 | 1.1.1.2.3.3.2 | Maintain number ranges | 1d | 2025-01-09 | 2025-01-09 | 127 | 1345d | 0d |  | HBT |
| 129 | 1.1.1.2.3.3.3 | Maintain client specific data | 1d | 2025-01-10 | 2025-01-10 | 128 | 1345d |  |  | HBT |

| ID | WBS | Task | Duration | Start | Finish | Predecessors | Total slack | Free slack | Text1 |
| --- | --- | --- | --- | --- | --- | --- | --- | --- | --- |
| 130 | 1.1.1.2.3.4 | **User creation** | 11d | 2025-01-10 | 2025-01-27 |  | 1335d |  |  |
| 131 | 1.1.1.2.3.4.1 | Finalize list of users for production enviornment | 2d | 2025-01-10 | 2025-01-13 | 107 | 1342d | 0d | TE & HBT |
| 132 | 1.1.1.2.3.4.2 | Finalise Authorization Matrix | 2d | 2025-01-14 | 2025-01-16 | 131 | 1342d |  | TE & HBT |
| 133 | 1.1.1.2.3.4.3 | Check roles and authorization | 4d | 2025-01-22 | 2025-01-27 | 124 | 1335d |  | HBT |
| 134 | 1.1.1.2.3.5 | **Data preparation and upload** | 71d | 2024-10-25 | 2025-02-07 |  | 5d |  |  |
| 135 | 1.1.1.2.3.5.1 | Receipt of master data | 55d | 2024-10-25 | 2025-01-16 | 60 | 5d | 0d | TE |
| 136 | 1.1.1.2.3.5.2 | Validate & cleanse master data | 2d | 2025-01-17 | 2025-01-20 | 135 | 5d | 0d | TE |
| 137 | 1.1.1.2.3.5.3 | Upload master data in Production | 4d | 2025-01-21 | 2025-01-24 | 136 | 5d | 0d | TE & HBT |
| 138 | 1.1.1.2.3.5.4 | Confirm uploaded master data | 1d | 2025-01-27 | 2025-01-27 | 137 | 1328d | 0d | TE |
| 139 | 1.1.1.2.3.5.5 | Receipt of cutover data | 15d | 2025-01-10 | 2025-01-31 | 104SS | 0d |  | TE |
| 140 | 1.1.1.2.3.5.6 | Validate & cleanse cutover data | 15d | 2025-01-10 | 2025-01-31 | 139SS | 1331d |  | TE |
| 141 | 1.1.1.2.3.5.7 | Upload cutover data in production | 5d | 2025-02-03 | 2025-02-07 | 139, 137 | 0d |  | TE & HBT |
| 142 | 1.1.1.2.3.5.8 | Check and validate uploaded data | 1d | 2025-02-07 | 2025-02-07 | 141FF | 0d |  | TE |
| 143 | 1.1.1.2.3.6 | **Deliverables** | 11d | 2025-01-14 | 2025-01-29 |  | 1333d |  |  |
| 144 | 1.1.1.2.3.6.1 | D: End user training manual | 3d | 2025-01-14 | 2025-01-17 | 123 | 1341d |  | HBT |
| 145 | 1.1.1.2.3.6.2 | D: Data migration plan & checklist | 3d | 2025-01-17 | 2025-01-21 | 135 | 1339d |  | HBT |
| 146 | 1.1.1.2.3.6.3 | D: Master data upload programs | 3d | 2025-01-27 | 2025-01-29 | 137 | 1333d |  | HBT |
| 147 | 1.1.1.2.3.6.4 | D: Sample data upload validation | 1d | 2025-01-27 | 2025-01-27 | 137 | 1335d |  | HBT |
| 148 | 1.1.1.2.3.6.5 | D: Final SAP Authorization matrix | 1d | 2025-01-14 | 2025-01-14 | 131 | 1343d |  | HBT |
| 149 | 1.1.1.2.3.7 | **Obtain Approval & phase Sign Off** | 10d | 2025-01-28 | 2025-02-10 |  | 9d |  |  |
| 150 | 1.1.1.2.3.7.1 | Deploy signoff | 1d | 2025-02-10 | 2025-02-10 | 142 | 0d |  | TE |
| 151 | 1.1.1.2.3.7.2 | Completion of Final Preparation (Deploy) Phase | 1d | 2025-02-10 | 2025-02-10 | 150FF | 1325d |  | TE & HBT |
| 152 | 1.1.1.2.3.7.3 | Pre-Go Live readiness Check | 7d | 2025-01-28 | 2025-02-05 | 138 | 1328d |  | KPMG |
| 153 | 1.1.1.2.4 | Go Live | 1d | 2025-02-11 | 2025-02-11 | 150 | 0d |  | TE & HBT |

| ID | WBS | Task | Duration | Start | Finish | Predecessors | Total slack | Free slack | Constraint | Text1 |
| --- | --- | --- | --- | --- | --- | --- | --- | --- | --- | --- |
| 154 | 1.1.1.3 | **QM** | 69d | 2024-11-04 | 2025-02-11 |  | 1324d |  |  |  |
| 155 | 1.1.1.3.1 | **Explore** | 22d | 2024-11-04 | 2024-12-03 |  | 1324d |  |  |  |
| 156 | 1.1.1.3.1.1 | **Requirement gathering & Conceptual design** | 7d | 2024-11-04 | 2024-11-12 |  | 1324d |  |  |  |
| 157 | 1.1.1.3.1.1.1 | Explain & share AS IS template | 1d | 2024-11-04 | 2024-11-04 |  | 1324d | 0d | start no earlier than 2024-11-04 | HBT |
| 158 | 1.1.1.3.1.1.2 | Prepare AS-IS document | 3d | 2024-11-05 | 2024-11-07 | 157 | 1324d | 0d |  | TE |
| 159 | 1.1.1.3.1.1.3 | AS IS document review with TE | 3d | 2024-11-08 | 2024-11-12 | 158 | 1324d | 0d |  | TE & HBT |
| 160 | 1.1.1.3.1.1.4 | Update AS IS document as per discussion | 1d | 2024-11-08 | 2024-11-08 | 159SS | 1324d | 0d |  | TE & HBT |
| 161 | 1.1.1.3.1.1.5 | Prepare end to end cycle (holistic view) for AS IS | 1d | 2024-11-11 | 2024-11-11 | 160 | 1324d | 0d |  | TE & HBT |
| 162 | 1.1.1.3.1.1.6 | Making final changes in AS IS | 1d | 2024-11-12 | 2024-11-12 | 161 | 1324d | 0d |  | TE & HBT |
| 163 | 1.1.1.3.1.2 | **Level 1 training - L1** | 3d | 2024-11-13 | 2024-11-15 |  | 1324d |  |  |  |
| 164 | 1.1.1.3.1.2.1 | Making necessary training preparation and Plan | 2d | 2024-11-13 | 2024-11-14 | 162 | 1324d | 0d |  | HBT |
| 165 | 1.1.1.3.1.2.2 | Conducting level-1 training (SAP Overview) | 1d | 2024-11-15 | 2024-11-15 | 164 | 1324d | 0d |  | HBT |
| 166 | 1.1.1.3.1.3 | **Business Process definition** | 12d | 2024-11-18 | 2024-12-03 |  | 1324d |  |  |  |
| 167 | 1.1.1.3.1.3.1 | **Business Blueprint** | 10d | 2024-11-18 | 2024-11-29 |  | 1324d |  |  |  |
| 168 | 1.1.1.3.1.3.1.1 | Prepare Business blueprint document & KDS | 3d | 2024-11-18 | 2024-11-20 | 165 | 1324d | 0d |  | HBT |
| 169 | 1.1.1.3.1.3.1.2 | Review Gap analysis, propose workaround, identify development list | 3d | 2024-11-18 | 2024-11-20 | 168SS | 1324d | 0d |  | HBT |
| 170 | 1.1.1.3.1.3.1.3 | Submit BBP to CTM | 1d | 2024-11-21 | 2024-11-21 | 169 | 1324d | 0d |  | HBT |
| 171 | 1.1.1.3.1.3.1.4 | Review BBP with CTM & BPO | 3d | 2024-11-21 | 2024-11-25 | 170SS | 1324d | 0d |  | TE |
| 172 | 1.1.1.3.1.3.1.5 | Review of BBP by KPMG | 3d | 2024-11-21 | 2024-11-25 | 171SS | 1324d | 0d |  | KPMG |
| 173 | 1.1.1.3.1.3.1.6 | Incorporate changes suggested | 1d | 2024-11-26 | 2024-11-26 | 172 | 1324d | 0d |  | HBT |
| 174 | 1.1.1.3.1.3.1.7 | BBP solution workshop for Management | 1d | 2024-11-27 | 2024-11-27 | 173 | 1324d | 0d |  | HBT |
| 175 | 1.1.1.3.1.3.1.8 | Submit final BBP for signoff | 1d | 2024-11-28 | 2024-11-28 | 174 | 1324d | 0d |  | HBT |
| 176 | 1.1.1.3.1.3.1.9 | BBP sign off by TE | 1d | 2024-11-29 | 2024-11-29 | 175 | 1373d | 0d |  | TE |
| 177 | 1.1.1.3.1.3.1.10 | Completion of Business Blueprint Phase | 1d | 2024-11-29 | 2024-11-29 | 176FF | 1373d |  |  | TE & HBT |

| ID | WBS | Task | Duration | Start | Finish | Predecessors | Total slack | Free slack | Text1 |
| --- | --- | --- | --- | --- | --- | --- | --- | --- | --- |
| 178 | 1.1.1.3.1.3.2 | **Master Data & cutover data** | 2d | 2024-11-29 | 2024-12-02 |  | 1324d |  |  |
| 179 | 1.1.1.3.1.3.2.1 | Identify master data & cutover data requirement | 1d | 2024-11-29 | 2024-11-29 | 175 | 1324d | 0d | HBT |
| 180 | 1.1.1.3.1.3.2.2 | Prepare & explain master data & cutover data template | 1d | 2024-12-02 | 2024-12-02 | 179 | 1324d | 0d | HBT |
| 181 | 1.1.1.3.1.3.2.3 | Circulate master data & cutover data template | 1d | 2024-12-02 | 2024-12-02 | 180FF | 1324d | 0d | HBT |
| 182 | 1.1.1.3.1.3.3 | **Requirement gathering sheet (RGS)** | 3d | 2024-11-29 | 2024-12-03 |  | 1371d |  |  |
| 183 | 1.1.1.3.1.3.3.1 | Prepare RGS | 2d | 2024-11-29 | 2024-12-02 | 179SS | 1371d | 0d | HBT |
| 184 | 1.1.1.3.1.3.3.2 | Submit RGS | 1d | 2024-12-03 | 2024-12-03 | 183 | 1371d |  | HBT |
| 185 | 1.1.1.3.1.3.4 | **Deliverables** | 11d | 2024-11-18 | 2024-12-02 |  | 1372d |  |  |
| 186 | 1.1.1.3.1.3.4.1 | D: BBP document | 1d | 2024-11-29 | 2024-11-29 | 176FF | 1373d |  | HBT |
| 187 | 1.1.1.3.1.3.4.2 | D: Gap Analysis | 1d | 2024-11-29 | 2024-11-29 | 176FF | 1373d |  | HBT |
| 188 | 1.1.1.3.1.3.4.3 | D: Core team training presentation | 1d | 2024-11-18 | 2024-11-18 | 165 | 1382d |  | HBT |
| 189 | 1.1.1.3.1.3.4.4 | D: Final WRICEF list | 1d | 2024-11-29 | 2024-11-29 | 176FF | 1373d |  | HBT |
| 190 | 1.1.1.3.1.3.4.5 | D: Initial master data templates | 1d | 2024-12-02 | 2024-12-02 | 181FF | 1372d |  | HBT |
| 191 | 1.1.1.3.2 | **Realize** | 34d | 2024-12-03 | 2025-01-22 |  | 1326d |  |  |
| 192 | 1.1.1.3.2.1 | **FS** | 3d | 2024-12-03 | 2024-12-05 |  | 1326d |  |  |
| 193 | 1.1.1.3.2.1.1 | Prepare FS | 3d | 2024-12-03 | 2024-12-05 | 181 | 1326d | 0d | HBT |
| 194 | 1.1.1.3.2.2 | **Configure and Validate Baseline** | 12d | 2024-12-06 | 2024-12-23 |  | 1326d |  |  |
| 195 | 1.1.1.3.2.2.1 | Configure Processes and Functions in golden master (100) | 4d | 2024-12-06 | 2024-12-11 | 193 | 1326d | 0d | HBT |
| 196 | 1.1.1.3.2.2.2 | Config review by KPMG | 4d | 2024-12-06 | 2024-12-11 | 195SS | 1332d | 0d | KPMG |
| 197 | 1.1.1.3.2.2.3 | Transfer of Configuration to Dev testing | 1d | 2024-12-12 | 2024-12-12 | 196 | 1332d | 0d | HBT |
| 198 | 1.1.1.3.2.2.4 | Unit testing-1 (Consultant) | 3d | 2024-12-13 | 2024-12-17 | 197 | 1332d | 0d | HBT |
| 199 | 1.1.1.3.2.2.5 | Document and Resolve Issues | 3d | 2024-12-18 | 2024-12-20 | 198 | 1332d | 0d | HBT |
| 200 | 1.1.1.3.2.2.6 | Submit Unit Testing result & completion of baselune config | 1d | 2024-12-23 | 2024-12-23 | 199 | 1332d | 0d | HBT |
| 201 | 1.1.1.3.2.3 | **System Integration Test** | 20d | 2024-12-23 | 2025-01-22 |  | 1332d |  |  |
| 202 | 1.1.1.3.2.3.1 | **Integration test Plan** | 2d | 2024-12-23 | 2024-12-24 |  | 1332d |  |  |
| 203 | 1.1.1.3.2.3.1.1 | Identify scenerios for Integration test | 2d | 2024-12-23 | 2024-12-24 | 200SS | 1332d | 0d | TE & HBT |
| 204 | 1.1.1.3.2.3.1.2 | Write scripts for Integration test | 2d | 2024-12-23 | 2024-12-24 | 203SS | 1356d |  | HBT |
| 205 | 1.1.1.3.2.3.1.3 | Test scripts review by KPMG | 2d | 2024-12-23 | 2024-12-24 | 203SS | 1332d | 0d | KPMG |

| ID | WBS | Task | Duration | Start | Finish | Predecessors | Total slack | Free slack | Text1 |
| --- | --- | --- | --- | --- | --- | --- | --- | --- | --- |
| 206 | 1.1.1.3.2.3.2 | **Conduct System integration test** | 18d | 2024-12-26 | 2025-01-22 |  | 1332d |  |  |
| 207 | 1.1.1.3.2.3.2.1 | Perform Integration testing by Consultant | 5d | 2024-12-26 | 2025-01-02 | 205 | 1332d | 0d | HBT |
| 208 | 1.1.1.3.2.3.2.2 | Plan for Level-2 training (CTM) | 1d | 2025-01-03 | 2025-01-03 | 207 | 1332d | 0d | HBT |
| 209 | 1.1.1.3.2.3.2.3 | Making necessery training arrangement - PPT + tutorial | 1d | 2025-01-06 | 2025-01-06 | 208 | 1332d | 0d | HBT |
| 210 | 1.1.1.3.2.3.2.4 | Conducting Level-2 Training (Module wise) | 3d | 2025-01-07 | 2025-01-09 | 209 | 1332d | 0d | TE & HBT |
| 211 | 1.1.1.3.2.3.2.5 | Perform User Acceptance test - CTM | 5d | 2025-01-10 | 2025-01-17 | 210 | 1332d | 0d | TE |
| 212 | 1.1.1.3.2.3.2.6 | Resolving the issues, if any | 5d | 2025-01-10 | 2025-01-17 | 211SS | 1332d | 0d | HBT |
| 213 | 1.1.1.3.2.3.2.7 | Retesting of scenarios | 2d | 2025-01-20 | 2025-01-21 | 212 | 1332d | 0d | TE |
| 214 | 1.1.1.3.2.3.2.8 | UAT (by CTM) signoff | 1d | 2025-01-22 | 2025-01-22 | 213 | 1332d | 0d | TE |
| 215 | 1.1.1.3.2.4 | **ABAP Development - SIT critical** | 24d | 2024-12-12 | 2025-01-17 |  | 1326d |  |  |
| 216 | 1.1.1.3.2.4.1 | Develop reports | 15d | 2024-12-12 | 2025-01-03 | 195 | 1326d | 0d | HBT |
| 217 | 1.1.1.3.2.4.2 | Testing by consultant | 15d | 2024-12-17 | 2025-01-08 | 216SS+3d | 1341d | 0d | HBT |
| 218 | 1.1.1.3.2.4.3 | Testing by CTM | 15d | 2024-12-20 | 2025-01-13 | 217SS+3d | 1341d | 0d | TE |
| 219 | 1.1.1.3.2.4.4 | Sign off Development | 15d | 2024-12-26 | 2025-01-17 | 218SS+3d | 1341d |  | TE |
| 220 | 1.1.1.3.2.5 | **Cutover Strategy** | 3d | 2025-01-07 | 2025-01-09 |  | 1344d |  |  |
| 221 | 1.1.1.3.2.5.1 | Discussion on cutover strategy | 1d | 2025-01-07 | 2025-01-07 | 210SS | 1344d | 0d | HBT |
| 222 | 1.1.1.3.2.5.2 | Cutover & data responsibility Plan | 1d | 2025-01-08 | 2025-01-08 | 221 | 1344d | 0d | HBT |
| 223 | 1.1.1.3.2.5.3 | Review of cutover data migration strategy by KPMG | 1d | 2025-01-08 | 2025-01-08 | 222SS | 1344d | 0d | KPMG |
| 224 | 1.1.1.3.2.5.4 | Communication to Organisation for Cutover | 1d | 2025-01-09 | 2025-01-09 | 223 | 1344d | 0d | HBT |
| 225 | 1.1.1.3.2.6 | **End user training plan** | 8d | 2025-01-10 | 2025-01-22 |  | 1338d |  |  |
| 226 | 1.1.1.3.2.6.1 | Preparation of End User training plan | 1d | 2025-01-10 | 2025-01-10 | 224 | 1344d | 0d | TE & HBT |
| 227 | 1.1.1.3.2.6.2 | Communicate plan to TE | 1d | 2025-01-13 | 2025-01-13 | 226 | 1344d |  | TE |
| 228 | 1.1.1.3.2.6.3 | Completion of Realization Phase | 1d | 2025-01-22 | 2025-01-22 | 214FF | 1338d |  | TE & HBT |
| 229 | 1.1.1.3.2.7 | **Deliverables** | 23d | 2024-12-18 | 2025-01-22 |  | 1338d |  |  |
| 230 | 1.1.1.3.2.7.1 | D: Test scripts | 1d | 2024-12-26 | 2024-12-26 | 205 | 1355d |  | HBT |
| 231 | 1.1.1.3.2.7.2 | D: Unit test result document | 1d | 2024-12-18 | 2024-12-18 | 198 | 1360d |  | HBT |
| 232 | 1.1.1.3.2.7.3 | D: Integration testing document | 1d | 2025-01-03 | 2025-01-03 | 207 | 1350d |  | HBT |
| 233 | 1.1.1.3.2.7.4 | D: User Acceptance testing document | 1d | 2025-01-22 | 2025-01-22 | 214FF | 1338d |  | HBT |
| 234 | 1.1.1.3.2.7.5 | D: Final master data templates | 1d | 2025-01-10 | 2025-01-10 | 224 | 1345d |  | HBT |
| 235 | 1.1.1.3.2.7.6 | D: Data migration strategy document | 1d | 2025-01-10 | 2025-01-10 | 224 | 1345d |  | HBT |

| ID | WBS | Task | Duration | Start | Finish | Predecessors | Total slack | Free slack | Text1 |
| --- | --- | --- | --- | --- | --- | --- | --- | --- | --- |
| 236 | 1.1.1.3.3 | **Deploy** | 47d | 2024-12-03 | 2025-02-10 |  | 1324d |  |  |
| 237 | 1.1.1.3.3.1 | **Coordinate ABAP Development Pre Go Live** | 24d | 2025-01-06 | 2025-02-07 |  | 1326d |  |  |
| 238 | 1.1.1.3.3.1.1 | Develop reports | 15d | 2025-01-06 | 2025-01-27 | 216 | 1326d | 0d | HBT |
| 239 | 1.1.1.3.3.1.2 | Testing by consultant | 15d | 2025-01-09 | 2025-01-30 | 238SS+3d | 1326d | 0d | HBT |
| 240 | 1.1.1.3.3.1.3 | Testing by CTM | 15d | 2025-01-14 | 2025-02-04 | 239SS+3d | 1326d | 0d | TE |
| 241 | 1.1.1.3.3.1.4 | Sign off Development | 15d | 2025-01-20 | 2025-02-07 | 240SS+3d | 1326d |  | TE |
| 242 | 1.1.1.3.3.2 | **End User Training** | 17d | 2025-01-03 | 2025-01-28 |  | 1334d |  |  |
| 243 | 1.1.1.3.3.2.1 | Prepare end user training manual | 1d | 2025-01-03 | 2025-01-03 | 207 | 1349d | 0d | HBT |
| 244 | 1.1.1.3.3.2.2 | Conduct end user training | 3d | 2025-01-23 | 2025-01-27 | 214 | 1332d | 0d | TE |
| 245 | 1.1.1.3.3.2.3 | Conduct training to HODs/Management | 1d | 2025-01-28 | 2025-01-28 | 244 | 1334d |  | TE |
| 246 | 1.1.1.3.3.3 | **Production Environment Preparation** | 3d | 2025-01-23 | 2025-01-27 |  | 1335d |  |  |
| 247 | 1.1.1.3.3.3.1 | Transport final configurations | 1d | 2025-01-23 | 2025-01-23 | 214 | 1335d | 0d | HBT |
| 248 | 1.1.1.3.3.3.2 | Maintain number ranges | 1d | 2025-01-24 | 2025-01-24 | 247 | 1335d | 0d | HBT |
| 249 | 1.1.1.3.3.3.3 | Maintain client specific data | 1d | 2025-01-27 | 2025-01-27 | 248 | 1335d |  | HBT |
| 250 | 1.1.1.3.3.4 | **User creation** | 19d | 2025-01-03 | 2025-01-30 |  | 1332d |  |  |
| 251 | 1.1.1.3.3.4.1 | Finalize list of users for production enviornment | 1d | 2025-01-03 | 2025-01-03 | 207 | 1346d | 0d | TE & HBT |
| 252 | 1.1.1.3.3.4.2 | Finalise Authorization Matrix | 3d | 2025-01-06 | 2025-01-08 | 251 | 1346d | 0d | TE & HBT |
| 253 | 1.1.1.3.3.4.3 | Check roles and authorization | 3d | 2025-01-28 | 2025-01-30 | 244 | 1332d |  | HBT |
| 254 | 1.1.1.3.3.5 | **Data preparation and upload** | 46d | 2024-12-03 | 2025-02-07 |  | 1324d |  |  |
| 255 | 1.1.1.3.3.5.1 | Receipt of master data | 35d | 2024-12-03 | 2025-01-23 | 181 | 1324d | 0d | TE |
| 256 | 1.1.1.3.3.5.2 | Validate & cleanse master data | 2d | 2025-01-24 | 2025-01-27 | 255 | 1324d | 0d | TE |
| 257 | 1.1.1.3.3.5.3 | Upload master data in Production | 4d | 2025-01-28 | 2025-01-31 | 256 | 1324d | 0d | TE & HBT |
| 258 | 1.1.1.3.3.5.4 | Confirm uploaded master data | 1d | 2025-01-31 | 2025-01-31 | 257FF | 1324d | 0d | TE |
| 259 | 1.1.1.3.3.5.5 | Receipt of cutover data | 1d | 2025-02-03 | 2025-02-03 | 258 | 1324d | 0d | TE |
| 260 | 1.1.1.3.3.5.6 | Validate & cleanse cutover data | 1d | 2025-02-04 | 2025-02-04 | 259 | 1324d | 0d | TE |
| 261 | 1.1.1.3.3.5.7 | Upload cutover data in production | 3d | 2025-02-05 | 2025-02-07 | 260 | 1324d | 0d | TE & HBT |
| 262 | 1.1.1.3.3.5.8 | Check and validate uploaded data | 1d | 2025-02-07 | 2025-02-07 | 261FF | 1324d | 0d | TE |

| ID | WBS | Task | Duration | Start | Finish | Predecessors | Complete | Remaining | Total slack | Free slack | Constraint | Text1 |
| --- | --- | --- | --- | --- | --- | --- | --- | --- | --- | --- | --- | --- |
| 263 | 1.1.1.3.3.6 | **Deliverables** | 25d | 2025-01-06 | 2025-02-10 |  |  |  | 1325d |  |  |  |
| 264 | 1.1.1.3.3.6.1 | D: End user training manual | 1d | 2025-01-06 | 2025-01-06 | 243 |  |  | 1349d |  |  | HBT |
| 265 | 1.1.1.3.3.6.2 | D: Data migration plan & checklist | 1d | 2025-01-10 | 2025-01-10 | 224 |  |  | 1345d |  |  | HBT |
| 266 | 1.1.1.3.3.6.3 | D: Master data upload programs | 1d | 2025-02-03 | 2025-02-03 | 258 |  |  | 1330d |  |  | HBT |
| 267 | 1.1.1.3.3.6.4 | D: Sample data upload validation | 1d | 2025-02-10 | 2025-02-10 | 261 |  |  | 1325d |  |  | HBT |
| 268 | 1.1.1.3.3.6.5 | D: Final SAP Authorization matrix | 1d | 2025-01-09 | 2025-01-09 | 252 |  |  | 1346d |  |  | HBT |
| 269 | 1.1.1.3.3.7 | **Obtain Approval & phase Sign Off** | 6d | 2025-02-03 | 2025-02-10 |  |  |  | 1325d |  |  |  |
| 270 | 1.1.1.3.3.7.1 | Deploy signoff | 1d | 2025-02-10 | 2025-02-10 | 262 |  |  | 1324d | 0d |  | TE |
| 271 | 1.1.1.3.3.7.2 | Completion of Final Preparation (Deploy) Phase | 1d | 2025-02-10 | 2025-02-10 | 270FF |  |  | 1324d | 0d |  | TE & HBT |
| 272 | 1.1.1.3.3.7.3 | Pre-Go Live readiness Check | 3d | 2025-02-03 | 2025-02-05 | 258 |  |  | 1328d |  |  | KPMG |
| 273 | 1.1.1.3.4 | Go Live | 1d | 2025-02-11 | 2025-02-11 | 271 |  |  | 1324d |  |  | TE & HBT |
| 274 | 1.1.2 | **Stabilization** | 20d | 2025-02-12 | 2025-03-11 |  |  |  | 0d |  |  |  |
| 275 | 1.1.2.1 | Hand holding & issue resolution | 20d | 2025-02-12 | 2025-03-11 | 153 |  |  | 0d |  |  | TE & HBT |
| 276 | 1.1.2.2 | **Deliverables** | 20d | 2025-02-12 | 2025-03-11 |  |  |  | 1304d |  |  |  |
| 277 | 1.1.2.2.1 | D: Issue list with resolution status | 20d | 2025-02-12 | 2025-03-11 | 275SS |  |  | 1304d |  |  | HBT |
| 278 | 1.1.2.2.2 | D: Configuration documents | 20d | 2025-02-12 | 2025-03-11 | 275SS |  |  | 1304d |  |  | HBT |
| 279 | 1.1.2.2.3 | D: FS & TS | 20d | 2025-02-12 | 2025-03-11 | 275SS |  |  | 1304d |  |  | HBT |
| 280 | 1.1.2.2.4 | D: Core team training document | 20d | 2025-02-12 | 2025-03-11 | 275SS |  |  | 1304d |  |  | HBT |
| 281 | 1.2 | **Phase 1B & 1C: Success Factor Implementation** | 176d | 2024-10-01 A | 2025-06-12 |  | 1% | 174.75d | 1237d |  |  |  |
| 282 | 1.2.1 | **PMGM** | 97d | 2024-10-01 A | 2025-02-21 |  | 1% | 96.14d | 1316d |  |  |  |
| 283 | 1.2.1.1 | **Explore** | 22d | 2024-10-01 A | 2024-11-05 |  | 7% | 20.51d | 1391d |  |  |  |
| 284 | 1.2.1.1.1 | Requirement gathering | 3d | 2024-10-01 A | 2024-10-04 |  | 70% | 0.9d | 1316d | 0d | start no earlier than 2024-10-01 | HBT |
| 285 | 1.2.1.1.2 | Prepare business blueprint document | 3d | 2024-10-07 | 2024-10-09 | 284 |  |  | 1316d | 0d |  | HBT |
| 286 | 1.2.1.1.3 | Review BBP with CTM & BPO | 3d | 2024-10-10 | 2024-10-15 | 285 |  |  | 1316d | 0d |  | HBT & TE |
| 287 | 1.2.1.1.4 | Review of BBP by KPMG | 3d | 2024-10-10 | 2024-10-15 | 286SS |  |  | 1316d | 0d |  | KPMG |
| 288 | 1.2.1.1.5 | Incorporate changes suggested | 2d | 2024-10-16 | 2024-10-17 | 287 |  |  | 1316d | 0d |  | HBT |
| 289 | 1.2.1.1.6 | BBP walkthrough to BPO & Management | 2d | 2024-10-18 | 2024-10-21 | 288 |  |  | 1316d | 0d |  | HBT |
| 290 | 1.2.1.1.7 | Incorporate changes & submit final BBP | 1d | 2024-10-22 | 2024-10-22 | 289 |  |  | 1316d | 0d |  | HBT |
| 291 | 1.2.1.1.8 | Approval & signoff of BBP document | 2d | 2024-10-23 | 2024-10-24 | 290 |  |  | 1316d | 0d |  | TE |
| 292 | 1.2.1.1.9 | Explain master data & cutover data template | 2d | 2024-10-25 | 2024-10-28 | 291 |  |  | 1316d | 0d |  | HBT |
| 293 | 1.2.1.1.10 | Circulate master data template | 1d | 2024-10-28 | 2024-10-28 | 292FF |  |  | 1316d | 0d |  | HBT |
| 294 | 1.2.1.1.11 | Prepare RGS | 3d | 2024-10-29 | 2024-11-04 | 293 |  |  | 1351d | 0d |  | HBT |
| 295 | 1.2.1.1.12 | Submit RGS | 1d | 2024-11-05 | 2024-11-05 | 294 |  |  | 1351d | 0d |  | HBT |
| 296 | 1.2.1.1.13 | Explore Phase Completion | 1d | 2024-11-05 | 2024-11-05 | 295FF |  |  | 1391d |  |  | HBT & TE |

| ID | WBS | Task | Duration | Start | Finish | Predecessors | Total slack | Free slack | Text1 |
| --- | --- | --- | --- | --- | --- | --- | --- | --- | --- |
| 297 | 1.2.1.1.14 | **Deliverables** | 6d | 2024-10-25 | 2024-11-05 |  | 1391d |  |  |
| 298 | 1.2.1.1.14.1 | D: Filled Workbook | 1d | 2024-10-25 | 2024-10-25 | 291 | 1396d |  | HBT |
| 299 | 1.2.1.1.14.2 | D: Data template | 1d | 2024-10-29 | 2024-10-29 | 293 | 1394d |  | HBT |
| 300 | 1.2.1.1.14.3 | D: Integration Architecture document | 1d | 2024-10-25 | 2024-10-25 | 291 | 1396d |  | HBT |
| 301 | 1.2.1.1.14.4 | D: FS & TS for interfaces | 1d | 2024-11-05 | 2024-11-05 | 294 | 1391d |  | HBT |
| 302 | 1.2.1.2 | **Realize** | 38d | 2024-11-05 | 2024-12-27 |  | 1351d |  |  |
| 303 | 1.2.1.2.1 | Prepare FS | 3d | 2024-11-05 | 2024-11-07 | 295SS | 1351d | 0d | HBT |
| 304 | 1.2.1.2.2 | Configuration of finalized business process | 7d | 2024-11-08 | 2024-11-18 | 303 | 1351d | 0d | HBT |
| 305 | 1.2.1.2.3 | Review of config by KPMG | 7d | 2024-11-08 | 2024-11-18 | 304SS | 1351d | 0d | KPMG |
| 306 | 1.2.1.2.4 | Unit Testing by HBT | 3d | 2024-11-19 | 2024-11-21 | 305 | 1351d | 0d | HBT |
| 307 | 1.2.1.2.5 | Development of identified custom objects | 25d | 2024-11-19 | 2024-12-23 | 304 | 1354d | 0d | HBT |
| 308 | 1.2.1.2.6 | Testing of developed objects | 25d | 2024-11-22 | 2024-12-27 | 307SS+3d | 1354d |  | TE & HBT |
| 309 | 1.2.1.2.7 | Prepare test scripts | 2d | 2024-11-22 | 2024-11-25 | 306 | 1351d | 0d | HBT |
| 310 | 1.2.1.2.8 | Review of test scripts by TE | 2d | 2024-11-26 | 2024-11-27 | 309 | 1351d | 0d | TE & HBT |
| 311 | 1.2.1.2.9 | Review of test scripts by KPMG | 2d | 2024-11-26 | 2024-11-27 | 310SS | 1351d | 0d | KPMG |
| 312 | 1.2.1.2.10 | Perform Integration testing | 5d | 2024-11-28 | 2024-12-04 | 311 | 1351d | 0d | HBT |
| 313 | 1.2.1.2.11 | Conduct L-2 training | 4d | 2024-12-05 | 2024-12-10 | 312 | 1351d | 0d | HBT |
| 314 | 1.2.1.2.12 | Perform User Acceptance testing | 7d | 2024-12-11 | 2024-12-19 | 313 | 1351d | 0d | TE |
| 315 | 1.2.1.2.13 | Resolve issues, if any | 7d | 2024-12-11 | 2024-12-19 | 314SS | 1351d | 0d | HBT |
| 316 | 1.2.1.2.14 | Retesting of scenarios | 3d | 2024-12-20 | 2024-12-24 | 315 | 1351d | 0d | TE |
| 317 | 1.2.1.2.15 | Realize Phase signoff | 1d | 2024-12-24 | 2024-12-24 | 316FF | 1351d | 0d | TE |
| 318 | 1.2.1.2.16 | Prepare end user training plan | 2d | 2024-12-05 | 2024-12-06 | 312 | 1368d |  | HBT & TE |
| 319 | 1.2.1.2.17 | Data migration strategy | 2d | 2024-12-05 | 2024-12-06 | 313SS | 1367d | 0d | HBT |
| 320 | 1.2.1.2.18 | Review of data migration strategy by KPMG | 2d | 2024-12-05 | 2024-12-06 | 319SS | 1367d | 0d | KPMG |
| 321 | 1.2.1.2.19 | Circulate cutover data template | 1d | 2024-12-09 | 2024-12-09 | 320 | 1367d |  | HBT |

| ID | WBS | Task | Duration | Start | Finish | Predecessors | Complete | Remaining | Total slack | Free slack | Constraint | Text1 |
| --- | --- | --- | --- | --- | --- | --- | --- | --- | --- | --- | --- | --- |
| 322 | 1.2.1.2.20 | **Deliverables** | 8d | 2024-12-11 | 2024-12-20 |  |  |  | 1358d |  |  |  |
| 323 | 1.2.1.2.20.1 | D: Updated workbook | 1d | 2024-12-20 | 2024-12-20 | 314 |  |  | 1358d |  |  | HBT |
| 324 | 1.2.1.2.20.2 | D: SIT & UAT | 1d | 2024-12-20 | 2024-12-20 | 314 |  |  | 1358d |  |  | HBT |
| 325 | 1.2.1.2.20.3 | D: CTM Admin Training Guide | 1d | 2024-12-11 | 2024-12-11 | 313 |  |  | 1365d |  |  | HBT |
| 326 | 1.2.1.3 | **Deploy** | 56d | 2024-10-29 | 2025-01-21 |  |  |  | 1316d |  |  |  |
| 327 | 1.2.1.3.1 | Transport request to Production | 1d | 2024-12-26 | 2024-12-26 | 316 |  |  | 1352d | 0d |  | HBT |
| 328 | 1.2.1.3.2 | Conduct end user training | 4d | 2024-12-26 | 2024-12-31 | 317 |  |  | 1351d | 0d |  | TE |
| 329 | 1.2.1.3.3 | Provide & check roles & authorization | 3d | 2024-12-27 | 2024-12-31 | 327 |  |  | 1352d |  |  | HBT |
| 330 | 1.2.1.3.4 | Receipt of master data | 43d | 2024-10-29 | 2024-12-31 | 293 |  |  | 1316d | 0d |  | TE |
| 331 | 1.2.1.3.5 | Upload master data in Production | 4d | 2025-01-02 | 2025-01-07 | 330 |  |  | 1316d | 0d |  | HBT & TE |
| 332 | 1.2.1.3.6 | Receipt of cutover data | 3d | 2025-01-08 | 2025-01-10 | 331 |  |  | 1316d | 0d |  | TE |
| 333 | 1.2.1.3.7 | Upload cutover data in production | 4d | 2025-01-13 | 2025-01-17 | 332 |  |  | 1316d | 0d |  | HBT & TE |
| 334 | 1.2.1.3.8 | Pre-GoLive readiness by KPMG | 4d | 2025-01-02 | 2025-01-07 | 331SS |  |  | 1348d |  |  | KPMG |
| 335 | 1.2.1.3.9 | Deploy Phase signoff | 1d | 2025-01-20 | 2025-01-20 | 333 |  |  | 1316d | 0d |  | TE & HBT |
| 336 | 1.2.1.3.10 | **Deliverables** | 16d | 2024-12-27 | 2025-01-21 |  |  |  | 1339d |  |  |  |
| 337 | 1.2.1.3.10.1 | D: End user training guide | 1d | 2025-01-02 | 2025-01-02 | 328 |  |  | 1351d |  |  | HBT |
| 338 | 1.2.1.3.10.2 | D: Production Sanity Test | 1d | 2024-12-27 | 2024-12-27 | 327 |  |  | 1354d |  |  | HBT |
| 339 | 1.2.1.3.10.3 | D: Go Live signoff | 1d | 2025-01-21 | 2025-01-21 | 335 |  |  | 1339d |  |  | HBT |
| 340 | 1.2.1.4 | Go Live | 1d | 2025-01-21 | 2025-01-21 | 335 |  |  | 1316d | 0d |  | TE & HBT |
| 341 | 1.2.1.5 | **Stabilization** | 23d | 2025-01-22 | 2025-02-21 |  |  |  | 1316d |  |  |  |
| 342 | 1.2.1.5.1 | Hand holding & issue resolution | 23d | 2025-01-22 | 2025-02-21 | 340 |  |  | 1316d |  |  | HBT |
| 343 | 1.2.2 | **EC** | 97d | 2024-10-01 A | 2025-02-21 |  | 1% | 95.71d | 1316d |  |  |  |
| 344 | 1.2.2.1 | **Explore** | 26d | 2024-10-01 A | 2024-11-11 |  | 9% | 23.62d | 1387d |  |  |  |
| 345 | 1.2.2.1.1 | Requirement gathering | 4d | 2024-10-01 A | 2024-10-07 |  | 80% | 0.8d | 1401d | 0d | start no earlier than 2024-10-01 | HBT |
| 346 | 1.2.2.1.2 | Prepare business blueprint document | 4d | 2024-10-08 | 2024-10-14 | 345 |  |  | 1401d | 0d | finish no earlier than 2024-09-30 | HBT |
| 347 | 1.2.2.1.3 | Review BBP with CTM & BPO | 4d | 2024-10-15 | 2024-10-18 | 346 |  |  | 1401d | 0d | finish no earlier than 2024-10-04 | HBT & TE |
| 348 | 1.2.2.1.4 | Review of BBP by KPMG | 4d | 2024-10-15 | 2024-10-18 | 347SS |  |  | 1346d | 0d | finish no earlier than 2024-10-04 | KPMG |
| 349 | 1.2.2.1.5 | Incorporate changes suggested | 2d | 2024-10-21 | 2024-10-22 | 348 |  |  | 1346d | 0d | finish no earlier than 2024-10-08 | HBT |
| 350 | 1.2.2.1.6 | BBP walkthrough to BPO & Management | 2d | 2024-10-23 | 2024-10-24 | 349 |  |  | 1346d | 0d | finish no earlier than 2024-10-10 | HBT |
| 351 | 1.2.2.1.7 | Incorporate changes & submit final BBP | 1d | 2024-10-25 | 2024-10-25 | 350 |  |  | 1346d | 0d | start no earlier than 2024-10-14 | HBT |
| 352 | 1.2.2.1.8 | Approval & signoff of BBP document | 2d | 2024-10-28 | 2024-10-29 | 351 |  |  | 1346d | 0d | finish no earlier than 2024-10-16 | TE |
| 353 | 1.2.2.1.9 | Explain master data & cutover data template | 2d | 2024-10-30 | 2024-11-04 | 352 |  |  | 1346d | 0d | finish no earlier than 2024-10-18 | HBT |
| 354 | 1.2.2.1.10 | Circulate master data template | 1d | 2024-11-04 | 2024-11-04 | 353FF |  |  | 1346d | 0d | start no earlier than 2024-10-18 | HBT |
| 355 | 1.2.2.1.11 | Prepare RGS | 3d | 2024-11-05 | 2024-11-07 | 354 |  |  | 1356d | 0d | finish no earlier than 2024-10-23 | HBT |
| 356 | 1.2.2.1.12 | Submit RGS | 1d | 2024-11-08 | 2024-11-08 | 355 |  |  | 1356d | 0d | start no earlier than 2024-10-24 | HBT |
| 357 | 1.2.2.1.13 | Explore Phase Completion | 1d | 2024-11-08 | 2024-11-08 | 356FF |  |  | 1388d |  | start no earlier than 2024-10-24 | HBT & TE |

| ID | WBS | Task | Duration | Start | Finish | Predecessors | Total slack | Free slack | Constraint | Text1 |
| --- | --- | --- | --- | --- | --- | --- | --- | --- | --- | --- |
| 358 | 1.2.2.1.14 | **Deliverables** | 7d | 2024-10-30 | 2024-11-11 |  | 1387d |  |  |  |
| 359 | 1.2.2.1.14.1 | D: Filled Workbook | 1d | 2024-10-30 | 2024-10-30 | 352 | 1393d |  | start no earlier than 2024-10-17 | HBT |
| 360 | 1.2.2.1.14.2 | D: Data template | 1d | 2024-11-05 | 2024-11-05 | 354 | 1391d |  | start no earlier than 2024-10-21 | HBT |
| 361 | 1.2.2.1.14.3 | D: Integration Architecture document | 1d | 2024-10-30 | 2024-10-30 | 352 | 1393d |  | start no earlier than 2024-10-17 | HBT |
| 362 | 1.2.2.1.14.4 | D: FS & TS for interfaces | 1d | 2024-11-11 | 2024-11-11 | 356 | 1387d |  | start no earlier than 2024-10-24 | HBT |
| 363 | 1.2.2.2 | **Realize** | 38d | 2024-11-08 | 2025-01-02 |  | 1351d |  |  |  |
| 364 | 1.2.2.2.1 | Prepare FS | 3d | 2024-11-08 | 2024-11-12 | 356SS | 1356d | 0d | finish no earlier than 2024-10-28 | HBT |
| 365 | 1.2.2.2.2 | Configuration of finalized business process | 5d | 2024-11-13 | 2024-11-19 | 364 | 1356d | 0d | finish no earlier than 2024-11-06 | HBT |
| 366 | 1.2.2.2.3 | Review of config by KPMG | 5d | 2024-11-13 | 2024-11-19 | 365SS | 1373d | 0d | finish no earlier than 2024-11-06 | KPMG |
| 367 | 1.2.2.2.4 | Unit Testing by HBT | 4d | 2024-11-20 | 2024-11-25 | 366 | 1373d | 0d | finish no earlier than 2024-11-11 | HBT |
| 368 | 1.2.2.2.5 | Development of identified custom objects | 25d | 2024-11-20 | 2024-12-24 | 365 | 1356d | 0d | finish no earlier than 2024-12-11 | HBT |
| 369 | 1.2.2.2.6 | Testing of developed objects | 25d | 2024-11-25 | 2024-12-30 | 368SS+3d | 1353d |  | finish no earlier than 2024-12-16 | TE & HBT |
| 370 | 1.2.2.2.7 | Prepare test scripts | 2d | 2024-11-26 | 2024-11-27 | 367 | 1373d | 0d | finish no earlier than 2024-11-13 | HBT |
| 371 | 1.2.2.2.8 | Review of test scripts by TE | 2d | 2024-11-28 | 2024-11-29 | 370 | 1373d | 0d | finish no earlier than 2024-11-15 | TE & HBT |
| 372 | 1.2.2.2.9 | Review of test scripts by KPMG | 2d | 2024-11-28 | 2024-11-29 | 371SS | 1353d | 0d | finish no earlier than 2024-11-15 | KPMG |
| 373 | 1.2.2.2.10 | Perform Integration testing | 7d | 2024-12-02 | 2024-12-10 | 372 | 1353d | 0d | finish no earlier than 2024-11-22 | HBT |
| 374 | 1.2.2.2.11 | Conduct L-2 training | 5d | 2024-12-11 | 2024-12-17 | 373 | 1353d | 0d | finish no earlier than 2024-11-28 | HBT |
| 375 | 1.2.2.2.12 | Perform User Acceptance testing | 7d | 2024-12-18 | 2024-12-27 | 374 | 1353d | 0d | finish no earlier than 2024-12-09 | TE |
| 376 | 1.2.2.2.13 | Resolve issues, if any | 7d | 2024-12-18 | 2024-12-27 | 375SS | 1346d | 0d | finish no earlier than 2024-12-09 | HBT |
| 377 | 1.2.2.2.14 | Retesting of scenarios | 3d | 2024-12-30 | 2025-01-02 | 376 | 1346d | 0d | finish no earlier than 2024-12-12 | TE |
| 378 | 1.2.2.2.15 | Realize Phase signoff | 1d | 2025-01-02 | 2025-01-02 | 377FF | 1346d | 0d | start no earlier than 2024-12-12 | TE |
| 379 | 1.2.2.2.16 | Prepare end user training plan | 2d | 2024-12-11 | 2024-12-12 | 373 | 1364d |  | finish no earlier than 2024-11-26 | HBT & TE |
| 380 | 1.2.2.2.17 | Data migration strategy | 2d | 2024-12-11 | 2024-12-12 | 374SS | 1364d | 0d | finish no earlier than 2024-11-26 | HBT |
| 381 | 1.2.2.2.18 | Review of data migration strategy by KPMG | 2d | 2024-12-11 | 2024-12-12 | 380SS | 1363d | 0d | finish no earlier than 2024-11-26 | KPMG |
| 382 | 1.2.2.2.19 | Circulate cutover data template | 1d | 2024-12-13 | 2024-12-13 | 381 | 1363d |  | start no earlier than 2024-11-27 | HBT |

| ID | WBS | Task | Duration | Start | Finish | Predecessors | Total slack | Free slack | Constraint | Text1 |
| --- | --- | --- | --- | --- | --- | --- | --- | --- | --- | --- |
| 383 | 1.2.2.2.20 | **Deliverables** | 8d | 2024-12-18 | 2024-12-30 |  | 1353d |  |  |  |
| 384 | 1.2.2.2.20.1 | D: Updated workbook | 1d | 2024-12-30 | 2024-12-30 | 375 | 1353d |  | start no earlier than 2024-12-10 | HBT |
| 385 | 1.2.2.2.20.2 | D: SIT & UAT | 1d | 2024-12-30 | 2024-12-30 | 375 | 1353d |  | start no earlier than 2024-12-10 | HBT |
| 386 | 1.2.2.2.20.3 | D: CTM Admin Training Guide | 1d | 2024-12-18 | 2024-12-18 | 374 | 1360d |  | start no earlier than 2024-11-29 | HBT |
| 387 | 1.2.2.3 | **Deploy** | 53d | 2024-11-05 | 2025-01-21 |  | 1339d |  |  |  |
| 388 | 1.2.2.3.1 | Transport request to Production | 1d | 2025-01-03 | 2025-01-03 | 377 | 1346d | 0d | start no earlier than 2024-12-13 | HBT |
| 389 | 1.2.2.3.2 | Conduct end user training | 4d | 2025-01-03 | 2025-01-08 | 378 | 1346d | 0d | finish no earlier than 2024-12-18 | TE |
| 390 | 1.2.2.3.3 | Provide & check roles & authorization | 3d | 2025-01-06 | 2025-01-08 | 388 | 1347d |  | finish no earlier than 2024-12-18 | HBT |
| 391 | 1.2.2.3.4 | Receipt of master data | 42d | 2024-11-05 | 2025-01-03 | 354 | 1346d | 0d | finish no earlier than 2024-12-17 | TE |
| 392 | 1.2.2.3.5 | Upload master data in Production | 4d | 2025-01-06 | 2025-01-09 | 391, 388 | 1346d | 0d | finish no earlier than 2024-12-23 | HBT & TE |
| 393 | 1.2.2.3.6 | Receipt of cutover data | 3d | 2025-01-08 | 2025-01-10 | 392SS+2d | 1316d | 0d | finish no earlier than 2024-12-27 | TE |
| 394 | 1.2.2.3.7 | Upload cutover data in production | 4d | 2025-01-13 | 2025-01-17 | 393 | 1316d | 0d | finish no earlier than 2025-01-03 | HBT & TE |
| 395 | 1.2.2.3.8 | Pre-GoLive readiness by KPMG | 4d | 2025-01-06 | 2025-01-09 | 392SS | 1346d |  | finish no earlier than 2024-12-23 | KPMG |
| 396 | 1.2.2.3.9 | Deploy Phase signoff | 1d | 2025-01-20 | 2025-01-20 | 394 | 1316d | 0d | start no earlier than 2025-01-06 | TE & HBT |
| 397 | 1.2.2.3.10 | **Deliverables** | 11d | 2025-01-06 | 2025-01-21 |  | 1339d |  |  |  |
| 398 | 1.2.2.3.10.1 | D: End user training guide | 1d | 2025-01-09 | 2025-01-09 | 389 | 1346d |  | start no earlier than 2024-12-19 | HBT |
| 399 | 1.2.2.3.10.2 | D: Production Sanity Test | 1d | 2025-01-06 | 2025-01-06 | 388 | 1349d |  | start no earlier than 2024-12-16 | HBT |
| 400 | 1.2.2.3.10.3 | D: Go Live signoff | 1d | 2025-01-21 | 2025-01-21 | 396 | 1339d |  | start no earlier than 2025-01-07 | HBT |
| 401 | 1.2.2.4 | Go Live | 1d | 2025-01-21 | 2025-01-21 | 396 | 1316d | 0d | start no earlier than 2025-01-07 | TE & HBT |
| 402 | 1.2.2.5 | **Stabilization** | 23d | 2025-01-22 | 2025-02-21 |  | 1316d |  |  |  |
| 403 | 1.2.2.5.1 | Hand holding & issue resolution | 23d | 2025-01-22 | 2025-02-21 | 401 | 1316d |  |  | HBT |
| 404 | 1.2.3 | **OM, Recruitment, Onboarding, Learning** | 109d | 2025-01-10 | 2025-06-12 |  | 1237d |  |  |  |
| 405 | 1.2.3.1 | **Explore** | 28d | 2025-01-10 | 2025-02-19 |  | 1237d |  |  |  |
| 406 | 1.2.3.1.1 | Requirement gathering | 4d | 2025-01-10 | 2025-01-16 | 108 | 1237d | 0d |  | HBT |
| 407 | 1.2.3.1.2 | Prepare business blueprint document | 5d | 2025-01-17 | 2025-01-23 | 406 | 1237d | 0d |  | HBT |
| 408 | 1.2.3.1.3 | Review BBP with CTM & BPO | 6d | 2025-01-24 | 2025-01-31 | 407 | 1237d | 0d |  | HBT & TE |
| 409 | 1.2.3.1.4 | Review of BBP by KPMG | 6d | 2025-01-24 | 2025-01-31 | 408SS | 1237d | 0d |  | KPMG |
| 410 | 1.2.3.1.5 | Incorporate changes suggested | 2d | 2025-02-03 | 2025-02-04 | 409 | 1237d | 0d |  | HBT |
| 411 | 1.2.3.1.6 | BBP walkthrough to BPO & Management | 2d | 2025-02-05 | 2025-02-06 | 410 | 1237d | 0d |  | HBT |
| 412 | 1.2.3.1.7 | Incorporate changes & submit final BBP | 1d | 2025-02-07 | 2025-02-07 | 411 | 1237d | 0d |  | HBT |
| 413 | 1.2.3.1.8 | Approval & signoff of BBP document | 2d | 2025-02-10 | 2025-02-11 | 412 | 1237d | 0d |  | TE |
| 414 | 1.2.3.1.9 | Explain master data & cutover data template | 2d | 2025-02-12 | 2025-02-13 | 413 | 1237d | 0d |  | HBT |
| 415 | 1.2.3.1.10 | Circulate master data template | 1d | 2025-02-13 | 2025-02-13 | 414FF | 1237d | 0d |  | HBT |
| 416 | 1.2.3.1.11 | Prepare RGS | 3d | 2025-02-14 | 2025-02-18 | 415 | 1267d | 0d |  | HBT |
| 417 | 1.2.3.1.12 | Submit RGS | 1d | 2025-02-19 | 2025-02-19 | 416 | 1267d | 0d |  | HBT |
| 418 | 1.2.3.1.13 | Explore Phase Completion | 1d | 2025-02-19 | 2025-02-19 | 417FF | 1318d |  |  | HBT & TE |

| ID | WBS | Task | Duration | Start | Finish | Predecessors | Total slack | Free slack | Text1 |
| --- | --- | --- | --- | --- | --- | --- | --- | --- | --- |
| 419 | 1.2.3.1.14 | **Deliverables** | 15d | 2025-01-24 | 2025-02-13 |  | 1322d |  |  |
| 420 | 1.2.3.1.14.1 | D: Filled Workbook | 1d | 2025-01-24 | 2025-01-24 | 407 | 1336d |  | HBT |
| 421 | 1.2.3.1.14.2 | D: Data template | 1d | 2025-02-13 | 2025-02-13 | 415FF | 1322d |  | HBT |
| 422 | 1.2.3.1.14.3 | D: Integration Architecture document | 1d | 2025-02-10 | 2025-02-10 | 412 | 1325d |  | HBT |
| 423 | 1.2.3.1.14.4 | D: FS & TS for interfaces | 1d | 2025-02-10 | 2025-02-10 | 412 | 1325d |  | HBT |
| 424 | 1.2.3.2 | **Realize** | 45d | 2025-02-19 | 2025-04-22 |  | 1267d |  |  |
| 425 | 1.2.3.2.1 | Prepare FS | 3d | 2025-02-19 | 2025-02-21 | 417SS | 1267d | 0d | HBT |
| 426 | 1.2.3.2.2 | Configuration of finalized business process | 7d | 2025-02-24 | 2025-03-04 | 425 | 1267d | 0d | HBT |
| 427 | 1.2.3.2.3 | Review of config by KPMG | 7d | 2025-02-24 | 2025-03-04 | 426SS | 1267d | 0d | KPMG |
| 428 | 1.2.3.2.4 | Unit Testing by HBT | 4d | 2025-03-05 | 2025-03-10 | 427 | 1267d | 0d | HBT |
| 429 | 1.2.3.2.5 | Development of identified custom objects | 25d | 2025-03-05 | 2025-04-08 | 426 | 1281d | 0d | HBT |
| 430 | 1.2.3.2.6 | Testing of developed objects | 25d | 2025-03-10 | 2025-04-11 | 429SS+3d | 1281d |  | TE & HBT |
| 431 | 1.2.3.2.7 | Prepare test scripts | 3d | 2025-03-11 | 2025-03-13 | 428 | 1267d | 0d | HBT |
| 432 | 1.2.3.2.8 | Review of test scripts by TE | 3d | 2025-03-14 | 2025-03-18 | 431 | 1267d | 0d | TE & HBT |
| 433 | 1.2.3.2.9 | Review of test scripts by KPMG | 3d | 2025-03-14 | 2025-03-18 | 432SS | 1267d | 0d | KPMG |
| 434 | 1.2.3.2.10 | Perform Integration testing | 7d | 2025-03-19 | 2025-03-27 | 433 | 1267d | 0d | HBT |
| 435 | 1.2.3.2.11 | Conduct L-2 training | 5d | 2025-03-28 | 2025-04-03 | 434 | 1267d | 0d | HBT |
| 436 | 1.2.3.2.12 | Perform User Acceptance testing | 10d | 2025-04-04 | 2025-04-17 | 435 | 1267d | 0d | TE |
| 437 | 1.2.3.2.13 | Resolve issues, if any | 10d | 2025-04-04 | 2025-04-17 | 436SS | 1267d | 0d | HBT |
| 438 | 1.2.3.2.14 | Retesting of scenarios | 3d | 2025-04-18 | 2025-04-22 | 437 | 1267d | 0d | TE |
| 439 | 1.2.3.2.15 | Realize Phase signoff | 1d | 2025-04-22 | 2025-04-22 | 438FF | 1267d | 0d | TE |
| 440 | 1.2.3.2.16 | Prepare end user training plan | 2d | 2025-03-28 | 2025-03-31 | 434 | 1290d |  | HBT & TE |
| 441 | 1.2.3.2.17 | Data migration strategy | 2d | 2025-03-28 | 2025-03-31 | 435SS | 1289d | 0d | HBT |
| 442 | 1.2.3.2.18 | Review of data migration strategy by KPMG | 2d | 2025-03-28 | 2025-03-31 | 441SS | 1290d |  | KPMG |
| 443 | 1.2.3.2.19 | Circulate cutover data template | 1d | 2025-04-01 | 2025-04-01 | 441 | 1289d |  | HBT |

| ID | WBS | Task | Duration | Start | Finish | Predecessors | Total slack | Free slack | Text1 |
| --- | --- | --- | --- | --- | --- | --- | --- | --- | --- |
| 444 | 1.2.3.2.20 | **Deliverables** | 11d | 2025-04-04 | 2025-04-18 |  | 1276d |  |  |
| 445 | 1.2.3.2.20.1 | D: Updated workbook | 1d | 2025-04-18 | 2025-04-18 | 436 | 1276d |  | HBT |
| 446 | 1.2.3.2.20.2 | D: SIT & UAT | 1d | 2025-04-18 | 2025-04-18 | 436 | 1276d |  | HBT |
| 447 | 1.2.3.2.20.3 | D: CTM Admin Training Guide | 1d | 2025-04-04 | 2025-04-04 | 435 | 1286d |  | HBT |
| 448 | 1.2.3.3 | **Deploy** | 63d | 2025-02-14 | 2025-05-13 |  | 1237d |  |  |
| 449 | 1.2.3.3.1 | Transport request to Production | 1d | 2025-04-23 | 2025-04-23 | 439 | 1272d | 0d | HBT |
| 450 | 1.2.3.3.2 | Conduct end user training | 4d | 2025-04-23 | 2025-04-28 | 439 | 1267d | 0d | TE |
| 451 | 1.2.3.3.3 | Provide & check roles & authorization | 3d | 2025-04-29 | 2025-05-01 | 450 | 1267d |  | HBT |
| 452 | 1.2.3.3.4 | Receipt of master data | 49d | 2025-02-14 | 2025-04-23 | 415 | 1237d | 0d | TE |
| 453 | 1.2.3.3.5 | Upload master data in Production | 4d | 2025-04-24 | 2025-04-29 | 452 | 1237d | 0d | HBT & TE |
| 454 | 1.2.3.3.6 | Receipt of cutover data | 5d | 2025-04-30 | 2025-05-06 | 453 | 1237d | 0d | TE |
| 455 | 1.2.3.3.7 | Upload cutover data in production | 4d | 2025-05-07 | 2025-05-12 | 454 | 1237d | 0d | HBT & TE |
| 456 | 1.2.3.3.8 | Pre-GoLive readiness by KPMG | 5d | 2025-04-30 | 2025-05-06 | 453 | 1264d |  | KPMG |
| 457 | 1.2.3.3.9 | Deploy Phase signoff | 1d | 2025-05-12 | 2025-05-12 | 455FF | 1237d | 0d | TE & HBT |
| 458 | 1.2.3.3.10 | **Deliverables** | 14d | 2025-04-24 | 2025-05-13 |  | 1259d |  |  |
| 459 | 1.2.3.3.10.1 | D: End user training guide | 1d | 2025-04-29 | 2025-04-29 | 450 | 1269d |  | HBT |
| 460 | 1.2.3.3.10.2 | D: Production Sanity Test | 1d | 2025-04-24 | 2025-04-24 | 449 | 1272d |  | HBT |
| 461 | 1.2.3.3.10.3 | D: Go Live signoff | 1d | 2025-05-13 | 2025-05-13 | 457 | 1259d |  | HBT |
| 462 | 1.2.3.4 | Go Live | 1d | 2025-05-13 | 2025-05-13 | 457 | 1237d | 0d | TE & HBT |
| 463 | 1.2.3.5 | **Stabilization** | 22d | 2025-05-14 | 2025-06-12 |  | 1237d |  |  |
| 464 | 1.2.3.5.1 | Hand holding & issue resolution | 22d | 2025-05-14 | 2025-06-12 | 462 | 1237d |  | HBT |
| 465 | 1.3 | **Phase 2: AMS for 5 years** | 1304d | 2025-03-12 | 2030-03-11 |  | 0d |  |  |
| 466 | 1.3.1 | Issue resolution & support | 1304d | 2025-03-12 | 2030-03-11 | 275 | 0d |  | HBT |
| 467 | 1.4 | **Phase 3A: Extended Warehouse Management (EWM)** | 110d | 2025-03-11 | 2025-08-11 |  | 1195d |  |  |
| 468 | 1.4.1 | **Prepare** | 6d | 2025-03-11 | 2025-03-18 |  | 1195d |  |  |
| 469 | 1.4.1.1 | Mobilize team | 1d | 2025-03-11 | 2025-03-11 | 275FS-1d | 1195d | 0d | HBT |
| 470 | 1.4.1.2 | Finalize delivery plan | 4d | 2025-03-12 | 2025-03-17 | 469 | 1299d | 0d | TE |

| ID | WBS | Task | Duration | Start | Finish | Predecessors | Total slack | Free slack | Text1 |
| --- | --- | --- | --- | --- | --- | --- | --- | --- | --- |
| 471 | 1.4.1.3 | **Deliverables** | 1d | 2025-03-18 | 2025-03-18 |  | 1299d |  |  |
| 472 | 1.4.1.3.1 | Project plan | 1d | 2025-03-18 | 2025-03-18 | 470 | 1299d |  | HBT |
| 473 | 1.4.2 | **Explore** | 29d | 2025-03-12 | 2025-04-21 |  | 1195d |  |  |
| 474 | 1.4.2.1 | Requirement gathering | 3d | 2025-03-12 | 2025-03-14 | 275 | 1195d | 0d | HBT |
| 475 | 1.4.2.2 | Prepare business blueprint document | 6d | 2025-03-17 | 2025-03-24 | 474 | 1195d | 0d | HBT |
| 476 | 1.4.2.3 | Review BBP with CTM | 7d | 2025-03-25 | 2025-04-02 | 475 | 1195d | 0d | HBT & TE |
| 477 | 1.4.2.4 | Review of BBP by KPMG | 7d | 2025-03-25 | 2025-04-02 | 476SS | 1195d | 0d | KPMG |
| 478 | 1.4.2.5 | Incorporate changes suggested | 2d | 2025-04-03 | 2025-04-04 | 477 | 1195d | 0d | HBT |
| 479 | 1.4.2.6 | BBP walkthrough to BPO & Management | 2d | 2025-04-07 | 2025-04-08 | 478 | 1195d | 0d | HBT |
| 480 | 1.4.2.7 | Incorporate changes & submit final BBP | 1d | 2025-04-09 | 2025-04-09 | 479 | 1195d | 0d | HBT |
| 481 | 1.4.2.8 | Approval & signoff of BBP document | 2d | 2025-04-10 | 2025-04-11 | 480 | 1195d | 0d | TE & HBT |
| 482 | 1.4.2.9 | Explain master data & cutover data template | 1d | 2025-04-14 | 2025-04-14 | 481 | 1195d | 0d | HBT |
| 483 | 1.4.2.10 | Circulate master data & cutover data template | 1d | 2025-04-15 | 2025-04-15 | 482 | 1195d | 0d | HBT |
| 484 | 1.4.2.11 | Prepare RGS | 3d | 2025-04-16 | 2025-04-18 | 483 | 1223d | 0d | HBT |
| 485 | 1.4.2.12 | Submit RGS | 1d | 2025-04-21 | 2025-04-21 | 484 | 1223d | 0d | HBT |
| 486 | 1.4.2.13 | Explore Phase completion | 1d | 2025-04-18 | 2025-04-18 | 484FF | 1276d |  | TE & HBT |
| 487 | 1.4.2.14 | **Deliverables** | 2d | 2025-04-14 | 2025-04-15 |  | 1279d |  |  |
| 488 | 1.4.2.14.1 | D: BBP document | 1d | 2025-04-14 | 2025-04-14 | 481 | 1280d |  | HBT |
| 489 | 1.4.2.14.2 | D: Gap Analysis | 1d | 2025-04-14 | 2025-04-14 | 481 | 1280d |  | HBT |
| 490 | 1.4.2.14.3 | D: Core team training presentation | 1d | 2025-04-14 | 2025-04-14 | 481 | 1280d |  | HBT |
| 491 | 1.4.2.14.4 | D: Final WRICEF list | 1d | 2025-04-14 | 2025-04-14 | 481 | 1280d |  | HBT |
| 492 | 1.4.2.14.5 | D: Initial master data templates | 1d | 2025-04-15 | 2025-04-15 | 483FF | 1279d |  | HBT |
| 493 | 1.4.3 | **Realize** | 43d | 2025-04-22 | 2025-06-19 |  | 1223d |  |  |
| 494 | 1.4.3.1 | Prepare FS | 3d | 2025-04-22 | 2025-04-24 | 485 | 1223d | 0d | HBT |
| 495 | 1.4.3.2 | Configuration of finalized business process | 7d | 2025-04-25 | 2025-05-05 | 494 | 1223d | 0d | HBT |
| 496 | 1.4.3.3 | Review of config by KPMG | 7d | 2025-04-25 | 2025-05-05 | 495SS | 1223d | 0d | KPMG |
| 497 | 1.4.3.4 | Unit Testing by HBT | 5d | 2025-05-06 | 2025-05-12 | 496 | 1223d | 0d | HBT |
| 498 | 1.4.3.5 | Development of identified custom objects | 30d | 2025-05-06 | 2025-06-16 | 495 | 1232d | 0d | HBT |
| 499 | 1.4.3.6 | Testing of development objects | 30d | 2025-05-09 | 2025-06-19 | 498SS+3d | 1232d |  | TE & HBT |
| 500 | 1.4.3.7 | Scenario listing | 2d | 2025-05-13 | 2025-05-14 | 497 | 1223d | 0d | HBT & TE |
| 501 | 1.4.3.8 | Review of test scripts by KPMG | 2d | 2025-05-13 | 2025-05-14 | 500SS | 1258d |  | KPMG |
| 502 | 1.4.3.9 | Perform SIT by HBT | 7d | 2025-05-15 | 2025-05-23 | 500 | 1223d | 0d | HBT |
| 503 | 1.4.3.10 | Conduct L-2 Training | 4d | 2025-05-26 | 2025-05-29 | 502 | 1223d | 0d | HBT |
| 504 | 1.4.3.11 | Perform User Acceptance testing | 10d | 2025-05-30 | 2025-06-12 | 503 | 1223d | 0d | TE |
| 505 | 1.4.3.12 | Resolve issues, if any | 1d | 2025-06-13 | 2025-06-13 | 504 | 1223d | 0d | HBT |
| 506 | 1.4.3.13 | Retesting of scenarios | 3d | 2025-06-16 | 2025-06-18 | 505 | 1223d | 0d | TE |
| 507 | 1.4.3.14 | Realize Phase signoff | 1d | 2025-06-19 | 2025-06-19 | 506 | 1223d | 0d | TE |
| 508 | 1.4.3.15 | Prepare end user training plan | 1d | 2025-05-26 | 2025-05-26 | 502 | 1250d |  | HBT & TE |
| 509 | 1.4.3.16 | Data migration strategy | 2d | 2025-05-30 | 2025-06-02 | 503 | 1244d | 0d | HBT |
| 510 | 1.4.3.17 | Review of data migration strategy by KPMG | 2d | 2025-05-30 | 2025-06-02 | 509SS | 1244d | 0d | KPMG |
| 511 | 1.4.3.18 | Circulate cutover data template | 1d | 2025-06-03 | 2025-06-03 | 510 | 1244d | 0d | HBT |

| ID | WBS | Task | Duration | Start | Finish | Predecessors | Total slack | Free slack | Text1 |
| --- | --- | --- | --- | --- | --- | --- | --- | --- | --- |
| 512 | 1.4.3.19 | **Deliverables** | 28d | 2025-05-13 | 2025-06-19 |  | 1232d |  |  |
| 513 | 1.4.3.19.1 | D: Test scripts | 1d | 2025-05-15 | 2025-05-15 | 500 | 1257d |  | HBT |
| 514 | 1.4.3.19.2 | D: Unit test result document | 1d | 2025-05-13 | 2025-05-13 | 497 | 1259d |  | HBT |
| 515 | 1.4.3.19.3 | D: Integration testing document | 1d | 2025-05-26 | 2025-05-26 | 502 | 1250d |  | HBT |
| 516 | 1.4.3.19.4 | D: User Acceptance testing document | 1d | 2025-06-19 | 2025-06-19 | 506 | 1232d |  | HBT |
| 517 | 1.4.3.19.5 | D: Final master data templates | 1d | 2025-06-03 | 2025-06-03 | 511FF | 1244d |  | HBT |
| 518 | 1.4.3.19.6 | D: Data migration strategy document | 1d | 2025-06-03 | 2025-06-03 | 511FF | 1244d |  | HBT |
| 519 | 1.4.4 | **Deploy** | 61d | 2025-04-16 | 2025-07-09 |  | 1195d |  |  |
| 520 | 1.4.4.1 | Transport request to Production | 2d | 2025-06-20 | 2025-06-23 | 507 | 1230d |  | HBT |
| 521 | 1.4.4.2 | Conduct end user training | 5d | 2025-06-20 | 2025-06-26 | 507 | 1223d | 0d | TE |
| 522 | 1.4.4.3 | Provide & check roles & authorization | 3d | 2025-06-27 | 2025-07-01 | 521 | 1223d | 0d | HBT |
| 523 | 1.4.4.4 | Receipt of master data | 50d | 2025-04-16 | 2025-06-24 | 483 | 1195d | 0d | TE |
| 524 | 1.4.4.5 | Upload master data in Production | 4d | 2025-06-25 | 2025-06-30 | 523 | 1195d | 0d | HBT & TE |
| 525 | 1.4.4.6 | Receipt of cutover data | 1d | 2025-07-01 | 2025-07-01 | 524 | 1195d | 0d | TE |
| 526 | 1.4.4.7 | Upload cutover data in production | 5d | 2025-07-02 | 2025-07-08 | 525 | 1195d | 0d | HBT & TE |
| 527 | 1.4.4.8 | Pre-Go Live check by KPMG | 5d | 2025-07-01 | 2025-07-07 | 524 | 1220d |  | KPMG |
| 528 | 1.4.4.9 | Deploy Phase signoff | 1d | 2025-07-09 | 2025-07-09 | 526 | 1195d | 0d | TE & HBT |
| 529 | 1.4.4.10 | **Deliverables** | 27d | 2025-06-03 | 2025-07-09 |  | 1218d |  |  |
| 530 | 1.4.4.10.1 | D: End user training manual | 1d | 2025-06-27 | 2025-06-27 | 521 | 1226d |  | HBT |
| 531 | 1.4.4.10.2 | D: Data migration plan & checklist | 1d | 2025-06-03 | 2025-06-03 | 511FF | 1244d |  | HBT |
| 532 | 1.4.4.10.3 | D: Master data upload programs | 1d | 2025-07-01 | 2025-07-01 | 524 | 1224d |  | HBT |
| 533 | 1.4.4.10.4 | D: Sample data upload validation | 1d | 2025-07-09 | 2025-07-09 | 526 | 1218d |  | HBT |
| 534 | 1.4.4.10.5 | D: Final SAP Authorization matrix | 1d | 2025-07-02 | 2025-07-02 | 522 | 1223d |  | HBT |
| 535 | 1.4.5 | Go Live | 1d | 2025-07-10 | 2025-07-10 | 528 | 1195d | 0d | TE & HBT |

| ID | WBS | Task | Duration | Start | Finish | Predecessors | Total slack | Free slack | Text1 |
| --- | --- | --- | --- | --- | --- | --- | --- | --- | --- |
| 536 | 1.4.6 | **Stabilization** | 22d | 2025-07-11 | 2025-08-11 |  | 1195d |  |  |
| 537 | 1.4.6.1 | Hand holding & issue resolution | 22d | 2025-07-11 | 2025-08-11 | 535 | 1195d | 0d | HBT |
| 538 | 1.4.6.2 | **Deliverables** | 21d | 2025-07-11 | 2025-08-08 |  | 1196d |  |  |
| 539 | 1.4.6.2.1 | D: Issue list with resolution status | 21d | 2025-07-11 | 2025-08-08 | 537SS | 1196d |  | HBT |
| 540 | 1.4.6.2.2 | D: Configuration documents | 21d | 2025-07-11 | 2025-08-08 | 537SS | 1196d |  | HBT |
| 541 | 1.4.6.2.3 | D: FS & TS | 21d | 2025-07-11 | 2025-08-08 | 537SS | 1196d |  | HBT |
| 542 | 1.4.6.2.4 | D: Core team training document | 21d | 2025-07-11 | 2025-08-08 | 537SS | 1196d |  | HBT |
| 543 | 1.5 | **Phase 3B: Group Reporting** | 87d | 2025-04-11 | 2025-08-11 |  | 1195d |  |  |
| 544 | 1.5.1 | **Group Reporting** | 87d | 2025-04-11 | 2025-08-11 |  | 1195d |  |  |
| 545 | 1.5.1.1 | **Explore** | 20d | 2025-04-11 | 2025-05-08 |  | 1195d |  |  |
| 546 | 1.5.1.1.1 | Requirement gathering | 3d | 2025-04-11 | 2025-04-15 | 469FS+22d | 1195d | 0d | HBT |
| 547 | 1.5.1.1.2 | Prepare business blueprint document | 4d | 2025-04-16 | 2025-04-21 | 546 | 1195d | 0d | HBT |
| 548 | 1.5.1.1.3 | Review BBP with CTM | 3d | 2025-04-22 | 2025-04-24 | 547 | 1195d | 0d | HBT & TE |
| 549 | 1.5.1.1.4 | Review of BBP by KPMG | 3d | 2025-04-22 | 2025-04-24 | 548SS | 1195d | 0d | KPMG |
| 550 | 1.5.1.1.5 | Incorporate changes suggested | 1d | 2025-04-25 | 2025-04-25 | 549 | 1195d | 0d | HBT |
| 551 | 1.5.1.1.6 | BBP walkthrough to BPO & Management | 2d | 2025-04-28 | 2025-04-29 | 550 | 1195d | 0d | HBT |
| 552 | 1.5.1.1.7 | Incorporate changes & submit final BBP | 1d | 2025-04-30 | 2025-04-30 | 551 | 1195d | 0d | HBT |
| 553 | 1.5.1.1.8 | Approval & signoff of BBP document | 1d | 2025-05-01 | 2025-05-01 | 552 | 1195d | 0d | TE |
| 554 | 1.5.1.1.9 | Explain master data & cutover data template | 1d | 2025-05-02 | 2025-05-02 | 553 | 1195d | 0d | HBT |
| 555 | 1.5.1.1.10 | Circulate master data & cutover data template | 1d | 2025-05-05 | 2025-05-05 | 554 | 1195d | 0d | HBT |
| 556 | 1.5.1.1.11 | Prepare RGS | 2d | 2025-05-06 | 2025-05-07 | 555 | 1220d | 0d | HBT |
| 557 | 1.5.1.1.12 | Submit RGS | 1d | 2025-05-08 | 2025-05-08 | 556 | 1220d | 0d | HBT |
| 558 | 1.5.1.1.13 | Explore Phase Completion | 1d | 2025-05-08 | 2025-05-08 | 557FF | 1262d |  | HBT & TE |
| 559 | 1.5.1.1.14 | **Deliverables** | 2d | 2025-05-02 | 2025-05-05 |  | 1265d |  |  |
| 560 | 1.5.1.1.14.1 | D: BBP document | 1d | 2025-05-02 | 2025-05-02 | 553 | 1266d |  | HBT |
| 561 | 1.5.1.1.14.2 | D: Gap Analysis | 1d | 2025-05-02 | 2025-05-02 | 553 | 1266d |  | HBT |
| 562 | 1.5.1.1.14.3 | D: Core team training presentation | 1d | 2025-05-02 | 2025-05-02 | 553 | 1266d |  | HBT |
| 563 | 1.5.1.1.14.4 | D: Final WRICEF list | 1d | 2025-05-02 | 2025-05-02 | 553 | 1266d |  | HBT |
| 564 | 1.5.1.1.14.5 | D: Initial master data templates | 1d | 2025-05-05 | 2025-05-05 | 555FF | 1265d |  | HBT |

| ID | WBS | Task | Duration | Start | Finish | Predecessors | Total slack | Free slack | Text1 |
| --- | --- | --- | --- | --- | --- | --- | --- | --- | --- |
| 565 | 1.5.1.2 | **Realize** | 33d | 2025-05-09 | 2025-06-24 |  | 1220d |  |  |
| 566 | 1.5.1.2.1 | Prepare FS | 2d | 2025-05-09 | 2025-05-12 | 557 | 1220d | 0d | HBT |
| 567 | 1.5.1.2.2 | Configuration of finalized business process | 7d | 2025-05-13 | 2025-05-21 | 566 | 1220d | 0d | HBT |
| 568 | 1.5.1.2.3 | Config review by KPMG | 7d | 2025-05-13 | 2025-05-21 | 567SS | 1220d | 0d | KPMG |
| 569 | 1.5.1.2.4 | Testing by HBT | 5d | 2025-05-22 | 2025-05-28 | 568 | 1220d | 0d | HBT |
| 570 | 1.5.1.2.5 | Development of identified custom objects | 20d | 2025-05-22 | 2025-06-18 | 567 | 1230d | 0d | HBT |
| 571 | 1.5.1.2.6 | Testing of development objects | 20d | 2025-05-27 | 2025-06-23 | 570SS+3d | 1230d |  | HBT & TE |
| 572 | 1.5.1.2.7 | Prepare test scripts | 2d | 2025-05-29 | 2025-05-30 | 569 | 1220d | 0d | HBT & TE |
| 573 | 1.5.1.2.8 | Review of test scripts by KPMG | 2d | 2025-05-29 | 2025-05-30 | 572SS | 1220d | 0d | KPMG |
| 574 | 1.5.1.2.9 | Integration testing by HBT | 5d | 2025-06-02 | 2025-06-06 | 573 | 1220d | 0d | HBT |
| 575 | 1.5.1.2.10 | Conduct L-2 training | 3d | 2025-06-09 | 2025-06-11 | 574 | 1220d | 0d | HBT |
| 576 | 1.5.1.2.11 | Perform User Acceptance testing | 5d | 2025-06-12 | 2025-06-18 | 575 | 1220d | 0d | TE |
| 577 | 1.5.1.2.12 | Resolve issues, if any | 1d | 2025-06-19 | 2025-06-19 | 576 | 1220d | 0d | HBT |
| 578 | 1.5.1.2.13 | Retesting of scenarios | 2d | 2025-06-20 | 2025-06-23 | 577 | 1220d | 0d | TE |
| 579 | 1.5.1.2.14 | Realize Phase signoff | 1d | 2025-06-24 | 2025-06-24 | 578 | 1220d | 0d | TE |
| 580 | 1.5.1.2.15 | Prepare end user training plan | 1d | 2025-06-02 | 2025-06-02 | 572 | 1245d |  | HBT & TE |
| 581 | 1.5.1.2.16 | Data migration strategy | 2d | 2025-06-09 | 2025-06-10 | 575SS | 1238d | 0d | HBT |
| 582 | 1.5.1.2.17 | Review of data migration strategy by KPMG | 2d | 2025-06-09 | 2025-06-10 | 581SS | 1239d |  | KPMG |
| 583 | 1.5.1.2.18 | Circulate cutover data template | 1d | 2025-06-11 | 2025-06-11 | 581 | 1238d | 0d | HBT |
| 584 | 1.5.1.2.19 | **Deliverables** | 16d | 2025-05-29 | 2025-06-19 |  | 1232d |  |  |
| 585 | 1.5.1.2.19.1 | D: Test scripts | 1d | 2025-06-02 | 2025-06-02 | 573 | 1245d |  | HBT |
| 586 | 1.5.1.2.19.2 | D: Unit test result document | 1d | 2025-05-29 | 2025-05-29 | 569 | 1247d |  | HBT |
| 587 | 1.5.1.2.19.3 | D: Integration testing document | 1d | 2025-05-29 | 2025-05-29 | 569 | 1247d |  | HBT |
| 588 | 1.5.1.2.19.4 | D: User Acceptance testing document | 1d | 2025-06-19 | 2025-06-19 | 576 | 1232d |  | HBT |
| 589 | 1.5.1.2.19.5 | D: Final master data templates | 1d | 2025-06-11 | 2025-06-11 | 583FF | 1238d |  | HBT |
| 590 | 1.5.1.2.19.6 | D: Data migration strategy document | 1d | 2025-06-11 | 2025-06-11 | 581 | 1238d |  | HBT |

| ID | WBS | Task | Duration | Start | Finish | Predecessors | Total slack | Free slack | Text1 |
| --- | --- | --- | --- | --- | --- | --- | --- | --- | --- |
| 591 | 1.5.1.3 | **Deploy** | 48d | 2025-05-06 | 2025-07-10 |  | 1195d |  |  |
| 592 | 1.5.1.3.1 | Transport request to Production | 1d | 2025-06-25 | 2025-06-25 | 579 | 1220d | 0d | HBT |
| 593 | 1.5.1.3.2 | Conduct end user training | 4d | 2025-06-26 | 2025-07-01 | 592 | 1220d | 0d | TE |
| 594 | 1.5.1.3.3 | Provide & check roles & authorization | 3d | 2025-07-02 | 2025-07-04 | 593 | 1220d | 0d | HBT |
| 595 | 1.5.1.3.4 | Receipt of master data | 36d | 2025-05-06 | 2025-06-24 | 555 | 1195d | 0d | TE |
| 596 | 1.5.1.3.5 | Upload master data in Production | 4d | 2025-06-25 | 2025-06-30 | 595 | 1195d | 0d | HBT & TE |
| 597 | 1.5.1.3.6 | Receipt of cutover data | 1d | 2025-07-01 | 2025-07-01 | 596 | 1195d | 0d | TE |
| 598 | 1.5.1.3.7 | Upload cutover data in production | 6d | 2025-07-02 | 2025-07-09 | 597 | 1195d | 0d | HBT & TE |
| 599 | 1.5.1.3.8 | Pre-Go Live check by KPMG | 5d | 2025-07-01 | 2025-07-07 | 596 | 1220d |  | KPMG |
| 600 | 1.5.1.3.9 | Deploy Phase signoff | 1d | 2025-07-09 | 2025-07-09 | 598FF | 1195d | 0d | TE & HBT |
| 601 | 1.5.1.3.10 | **Deliverables** | 22d | 2025-06-11 | 2025-07-10 |  | 1217d |  |  |
| 602 | 1.5.1.3.10.1 | D: End user training manual | 1d | 2025-07-02 | 2025-07-02 | 593 | 1223d |  | HBT |
| 603 | 1.5.1.3.10.2 | D: Data migration plan & checklist | 1d | 2025-06-11 | 2025-06-11 | 583FF | 1238d |  | HBT |
| 604 | 1.5.1.3.10.3 | D: Master data upload programs | 1d | 2025-07-01 | 2025-07-01 | 596 | 1224d |  | HBT |
| 605 | 1.5.1.3.10.4 | D: Sample data upload validation | 1d | 2025-07-10 | 2025-07-10 | 598 | 1217d |  | HBT |
| 606 | 1.5.1.3.10.5 | D: Final SAP Authorization matrix | 1d | 2025-07-07 | 2025-07-07 | 594 | 1220d |  | HBT |
| 607 | 1.5.1.4 | Go Live | 1d | 2025-07-10 | 2025-07-10 | 600 | 1195d | 0d | TE & HBT |
| 608 | 1.5.1.5 | **Stabilization** | 22d | 2025-07-11 | 2025-08-11 |  | 1195d |  |  |
| 609 | 1.5.1.5.1 | Hand holding & issue resolution | 22d | 2025-07-11 | 2025-08-11 | 607 | 1195d | 0d | HBT |
| 610 | 1.5.1.5.2 | **Deliverables** | 21d | 2025-07-11 | 2025-08-08 |  | 1196d |  |  |
| 611 | 1.5.1.5.2.1 | D: Issue list with resolution status | 21d | 2025-07-11 | 2025-08-08 | 609SS | 1196d |  | HBT |
| 612 | 1.5.1.5.2.2 | D: Configuration documents | 21d | 2025-07-11 | 2025-08-08 | 609SS | 1196d |  | HBT |
| 613 | 1.5.1.5.2.3 | D: FS & TS | 21d | 2025-07-11 | 2025-08-08 | 609SS | 1196d |  | HBT |
| 614 | 1.5.1.5.2.4 | D: Core team training document | 21d | 2025-07-11 | 2025-08-08 | 609SS | 1196d |  | HBT |
