# 7. TE_Project Plan_25.09.2024_V6_OneHr_07.10.24

Schedule from MS Project, 2024-08-05 to 2030-03-11, status date 2022-10-13.

## Calendars

- Standard: Mon-Fri 08:00-12:00, 13:00-17:00; Sat-Sun off. Exceptions (off unless hours are given): 2024-10-02 (Gandhi Jayanti), 2024-10-11 (Maha Navami), 2024-10-31 (Diwali), 2024-11-01 (Kannda Rajyothsava), 2024-12-25 (Christmas), 2025-01-01 (New Year), 2025-01-15 (Makar Sankranti).

## Schedule

| ID | WBS | Task | Duration | Start | Finish | Predecessors | Total slack | Free slack | Constraint | Text1 |
| --- | --- | --- | --- | --- | --- | --- | --- | --- | --- | --- |
| 1 | 1 | **SAP Implementation at Total Environment** | 1454d | 2024-08-05 | 2030-03-11 |  | 0d |  |  |  |
| 2 | 1.1 | **Phase 1A & 3C: S4 HANA Implementation** | 150d | 2024-08-05 | 2025-03-11 |  | 0d |  |  |  |
| 3 | 1.1.1 | **Implementation** | 130d | 2024-08-05 | 2025-02-11 |  | 0d |  |  |  |
| 4 | 1.1.1.1 | **Prepare** | 26d | 2024-08-05 | 2024-09-09 |  | 0d |  |  |  |
| 5 | 1.1.1.1.1 | **Kick off** | 6d | 2024-08-05 | 2024-08-12 |  | 0d |  |  |  |
| 6 | 1.1.1.1.1.1 | Prepare kickoff presentation in consultation with TE | 3d | 2024-08-05 | 2024-08-07 |  | 0d |  | start no earlier than 2024-08-05 | HBT |
| 7 | 1.1.1.1.1.2 | Review & finalize kickoff presentation | 2d | 2024-08-08 | 2024-08-09 | 6 | 0d |  |  | HBT & TE |
| 8 | 1.1.1.1.1.3 | Project Kick off with Key stakeholders | 1d | 2024-08-12 | 2024-08-12 | 7 | 0d |  |  | HBT & TE |
| 9 | 1.1.1.1.2 | **Project Plan** | 9d | 2024-08-13 | 2024-08-23 |  | 1428d |  |  |  |
| 10 | 1.1.1.1.2.1 | Prepare & submit Initial project plan | 5d | 2024-08-13 | 2024-08-19 | 8 | 1428d | 0d | start no earlier than 2024-01-02 | HBT |
| 11 | 1.1.1.1.2.2 | Review project plan | 2d | 2024-08-20 | 2024-08-21 | 10 | 1439d | 0d |  | TE |
| 12 | 1.1.1.1.2.3 | Make necessary changes in the plan | 1d | 2024-08-22 | 2024-08-22 | 11 | 1439d | 0d |  | HBT |
| 13 | 1.1.1.1.2.4 | Submit revised plan | 1d | 2024-08-22 | 2024-08-22 | 12FF | 1439d | 0d |  | HBT |
| 14 | 1.1.1.1.2.5 | Approval of project plan by TE | 1d | 2024-08-23 | 2024-08-23 | 13 | 1439d | 0d |  | TE |
| 15 | 1.1.1.1.3 | **Project Governance** | 2d | 2024-08-22 | 2024-08-23 |  | 1428d |  |  |  |
| 16 | 1.1.1.1.3.1 | Finalize communication plan | 1d | 2024-08-22 | 2024-08-22 | 10FS+2d | 1428d | 0d | start no earlier than 2023-12-05 | TE & HBT |
| 17 | 1.1.1.1.3.2 | Finalize deliverable signoff matrix | 1d | 2024-08-23 | 2024-08-23 | 16 | 1428d | 0d |  | TE & HBT |
| 18 | 1.1.1.1.4 | **Mobilize team** | 1d | 2024-09-06 | 2024-09-06 |  | 1428d |  |  |  |
| 19 | 1.1.1.1.4.1 | HBT Team mobilization | 1d | 2024-09-06 | 2024-09-06 | 17FS+9d | 1428d | 0d |  | HBT |
| 20 | 1.1.1.1.4.2 | Total Environment team mobilization | 1d | 2024-09-06 | 2024-09-06 | 19SS | 1428d | 0d |  | TE |
| 21 | 1.1.1.1.5 | Project preparation phase sign off by TE | 1d | 2024-09-09 | 2024-09-09 | 20 | 1428d |  |  | TE & HBT |
| 22 | 1.1.1.1.6 | **Deliverables** | 9d | 2024-08-13 | 2024-08-23 |  | 1439d |  |  |  |
| 23 | 1.1.1.1.6.1 | D: Baseline Project Plan | 1d | 2024-08-23 | 2024-08-23 | 14FF | 1439d |  | start no earlier than 2022-11-07 | HBT |
| 24 | 1.1.1.1.6.2 | D: Project kickoff presentation | 1d | 2024-08-13 | 2024-08-13 | 8 | 1447d |  | start no earlier than 2022-11-07 | HBT |

| ID | WBS | Task | Duration | Start | Finish | Predecessors | Total slack | Free slack | Constraint | Text1 |
| --- | --- | --- | --- | --- | --- | --- | --- | --- | --- | --- |
| 25 | 1.1.1.2 | **PS, MM, SD, PP, QM, FICO** | 120d | 2024-08-19 | 2025-02-11 |  | 0d |  |  |  |
| 26 | 1.1.1.2.1 | **Explore** | 52d | 2024-08-19 | 2024-11-04 |  | 0d |  |  |  |
| 27 | 1.1.1.2.1.1 | **Requirement gathering & Conceptual design** | 42d | 2024-08-19 | 2024-10-17 |  | 0d |  |  |  |
| 28 | 1.1.1.2.1.1.1 | Explain & share AS IS template | 1d | 2024-08-19 | 2024-08-19 | 8FS+4d | 0d |  |  | HBT |
| 29 | 1.1.1.2.1.1.2 | Prepare AS-IS document | 5d | 2024-08-20 | 2024-08-26 | 28 | 0d |  |  | TE |
| 30 | 1.1.1.2.1.1.3 | AS IS document review with TE | 20d | 2024-08-27 | 2024-09-23 | 29 | 0d |  | start no earlier than 2022-11-04 | TE & HBT |
| 31 | 1.1.1.2.1.1.4 | Update AS IS document as per discussion | 20d | 2024-08-27 | 2024-09-23 | 30SS | 0d |  |  | TE & HBT |
| 32 | 1.1.1.2.1.1.5 | Prepare end to end cycle (holistic view) for AS IS | 4d | 2024-09-24 | 2024-09-27 | 31 | 1402d | 0d |  | TE & HBT |
| 33 | 1.1.1.2.1.1.6 | Presentation to Management for AS IS process | 10d | 2024-09-30 | 2024-10-15 | 32 | 1402d | 0d |  | TE & HBT |
| 34 | 1.1.1.2.1.1.7 | Making final changes in AS IS | 2d | 2024-10-16 | 2024-10-17 | 33 | 1402d |  |  | TE & HBT |
| 35 | 1.1.1.2.1.2 | **Level 1 training - L1** | 4d | 2024-09-24 | 2024-09-27 |  | 1413d |  |  |  |
| 36 | 1.1.1.2.1.2.1 | Making necessary training preparation and Plan | 2d | 2024-09-24 | 2024-09-25 | 31 | 1413d | 0d |  | HBT |
| 37 | 1.1.1.2.1.2.2 | Conducting level-1 training (SAP Overview) | 2d | 2024-09-26 | 2024-09-27 | 36 | 1413d | 0d |  | HBT |
| 38 | 1.1.1.2.1.3 | **Business Process definition** | 26d | 2024-09-24 | 2024-11-04 |  | 0d |  |  |  |
| 39 | 1.1.1.2.1.3.1 | **Enterprise structure** | 8d | 2024-09-24 | 2024-10-04 |  | 0d |  |  |  |
| 40 | 1.1.1.2.1.3.1.1 | Define Org structure | 3d | 2024-09-24 | 2024-09-26 | 31 | 0d |  |  | HBT |
| 41 | 1.1.1.2.1.3.1.2 | Review & discuss Org Structure with TE | 1d | 2024-09-27 | 2024-09-27 | 40 | 1410d | 0d |  | TE & HBT |
| 42 | 1.1.1.2.1.3.1.3 | Review of Org structure by KPMG | 2d | 2024-09-27 | 2024-09-30 | 41SS | 1410d | 0d |  | KPMG |
| 43 | 1.1.1.2.1.3.1.4 | Incorporate changes suggested by TE & KPMG | 2d | 2024-10-01 | 2024-10-03 | 42 | 1410d | 0d |  | HBT |
| 44 | 1.1.1.2.1.3.1.5 | Finalize & submit Org structure | 1d | 2024-10-04 | 2024-10-04 | 43 | 1410d | 0d |  | HBT |
| 45 | 1.1.1.2.1.3.1.6 | Sign off on Org structure by TE | 1d | 2024-10-04 | 2024-10-04 | 44FF | 1410d |  |  | TE |
| 46 | 1.1.1.2.1.3.2 | **Business Blueprint** | 14d | 2024-09-27 | 2024-10-18 |  | 0d |  |  |  |
| 47 | 1.1.1.2.1.3.2.1 | Prepare Business blueprint document & KDS | 5d | 2024-09-27 | 2024-10-04 | 40 | 0d |  |  | HBT |
| 48 | 1.1.1.2.1.3.2.2 | Review Gap analysis, propose workaround, identify development list | 2d | 2024-10-03 | 2024-10-04 | 47SS+3d | 0d |  |  | HBT |
| 49 | 1.1.1.2.1.3.2.3 | Submit BBP to CTM | 1d | 2024-10-07 | 2024-10-07 | 48 | 0d |  |  | HBT |
| 50 | 1.1.1.2.1.3.2.4 | Review BBP with CTM & BPO | 4d | 2024-10-07 | 2024-10-10 | 49SS | 0d |  |  | HBT & TE |
| 51 | 1.1.1.2.1.3.2.5 | Review of BBP by KPMG | 4d | 2024-10-07 | 2024-10-10 | 50SS | 0d |  |  | KPMG |
| 52 | 1.1.1.2.1.3.2.6 | Incorporate changes suggested | 3d | 2024-10-14 | 2024-10-16 | 51 | 0d |  |  | HBT |
| 53 | 1.1.1.2.1.3.2.7 | BBP solution workshop for Management | 2d | 2024-10-17 | 2024-10-18 | 52 | 0d |  |  | TE & HBT |
| 54 | 1.1.1.2.1.3.2.8 | Submit final BBP for signoff | 1d | 2024-10-18 | 2024-10-18 | 53FF | 0d |  |  | HBT |
| 55 | 1.1.1.2.1.3.2.9 | BBP sign off by TE | 1d | 2024-10-18 | 2024-10-18 | 54SS | 1400d | 0d |  | TE |
| 56 | 1.1.1.2.1.3.2.10 | Completion of Business Blueprint Phase | 1d | 2024-10-18 | 2024-10-18 | 55FF | 1401d |  |  | TE & HBT |

| ID | WBS | Task | Duration | Start | Finish | Predecessors | Total slack | Free slack | Text1 |
| --- | --- | --- | --- | --- | --- | --- | --- | --- | --- |
| 57 | 1.1.1.2.1.3.3 | **Master Data & Cutover data** | 4d | 2024-10-21 | 2024-10-24 |  | 0d |  |  |
| 58 | 1.1.1.2.1.3.3.1 | Identify master data & Cutover data requirement | 2d | 2024-10-21 | 2024-10-22 | 54 | 0d |  | HBT |
| 59 | 1.1.1.2.1.3.3.2 | Prepare & explain master data & cutover data template | 1d | 2024-10-23 | 2024-10-23 | 58 | 0d |  | HBT |
| 60 | 1.1.1.2.1.3.3.3 | Circulate master data & cutover data template | 1d | 2024-10-24 | 2024-10-24 | 59 | 5d | 0d | HBT |
| 61 | 1.1.1.2.1.3.4 | **Requirement gathering sheet (RGS)** | 6d | 2024-10-24 | 2024-11-04 |  | 0d |  |  |
| 62 | 1.1.1.2.1.3.4.1 | Prepare RGS | 5d | 2024-10-24 | 2024-10-30 | 59 | 0d |  | HBT |
| 63 | 1.1.1.2.1.3.4.2 | Submit RGS | 1d | 2024-11-04 | 2024-11-04 | 62 | 0d |  | HBT |
| 64 | 1.1.1.2.1.3.5 | **Deliverables** | 17d | 2024-09-30 | 2024-10-24 |  | 1397d |  |  |
| 65 | 1.1.1.2.1.3.5.1 | D: BBP document | 1d | 2024-10-21 | 2024-10-21 | 55 | 1400d |  | HBT |
| 66 | 1.1.1.2.1.3.5.2 | D: Gap Analysis | 1d | 2024-10-21 | 2024-10-21 | 55 | 1400d |  | HBT |
| 67 | 1.1.1.2.1.3.5.3 | D: Core team training presentation | 1d | 2024-09-30 | 2024-09-30 | 37 | 1413d |  | HBT |
| 68 | 1.1.1.2.1.3.5.4 | D: Final WRICEF list | 1d | 2024-10-21 | 2024-10-21 | 55 | 1400d |  | HBT |
| 69 | 1.1.1.2.1.3.5.5 | D: Initial master data templates | 1d | 2024-10-24 | 2024-10-24 | 60FF | 1397d |  | HBT |
| 70 | 1.1.1.2.2 | **Realize** | 47d | 2024-11-05 | 2025-01-10 |  | 0d |  |  |
| 71 | 1.1.1.2.2.1 | **Functional Specifications** | 7d | 2024-11-05 | 2024-11-13 |  | 0d |  |  |
| 72 | 1.1.1.2.2.1.1 | Prepare functional specfications | 5d | 2024-11-05 | 2024-11-11 | 63 | 0d |  | HBT |
| 73 | 1.1.1.2.2.1.2 | Finalize development tracker | 2d | 2024-11-12 | 2024-11-13 | 72 | 1385d |  | HBT |
| 74 | 1.1.1.2.2.2 | **Configure and Validate Baseline** | 11d | 2024-11-12 | 2024-11-26 |  | 0d |  |  |
| 75 | 1.1.1.2.2.2.1 | Configure Processes and Functions in golden master (100) | 6d | 2024-11-12 | 2024-11-19 | 72 | 0d |  | HBT |
| 76 | 1.1.1.2.2.2.2 | Config review by KPMG | 5d | 2024-11-13 | 2024-11-19 | 75SS+1d | 0d |  | KPMG |
| 77 | 1.1.1.2.2.2.3 | Transfer of Configuration to Dev testing | 1d | 2024-11-20 | 2024-11-20 | 76 | 0d |  | HBT |
| 78 | 1.1.1.2.2.2.4 | Unit testing-1 (Consultant) | 3d | 2024-11-21 | 2024-11-25 | 77 | 0d |  | HBT |
| 79 | 1.1.1.2.2.2.5 | Document and Resolve Issues | 3d | 2024-11-21 | 2024-11-25 | 78SS | 0d |  | HBT |
| 80 | 1.1.1.2.2.2.6 | Submit Unit Testing result & completion of baselune config | 1d | 2024-11-26 | 2024-11-26 | 79 | 0d |  | HBT |

| ID | WBS | Task | Duration | Start | Finish | Predecessors | Total slack | Free slack | Text1 |
| --- | --- | --- | --- | --- | --- | --- | --- | --- | --- |
| 81 | 1.1.1.2.2.3 | **System Integration Test** | 29d | 2024-11-26 | 2025-01-07 |  | 0d |  |  |
| 82 | 1.1.1.2.2.3.1 | **Integration test Plan** | 3d | 2024-11-26 | 2024-11-28 |  | 0d |  |  |
| 83 | 1.1.1.2.2.3.1.1 | Identify scenerios for Integration test | 3d | 2024-11-26 | 2024-11-28 | 80SS | 0d |  | TE & HBT |
| 84 | 1.1.1.2.2.3.1.2 | Write scripts for Integration test | 3d | 2024-11-26 | 2024-11-28 | 83SS | 1373d | 0d | TE & HBT |
| 85 | 1.1.1.2.2.3.1.3 | Test scripts review by KPMG | 3d | 2024-11-26 | 2024-11-28 | 83SS | 0d |  | KPMG |
| 86 | 1.1.1.2.2.3.2 | **Conduct System integration test** | 26d | 2024-11-29 | 2025-01-07 |  | 0d |  |  |
| 87 | 1.1.1.2.2.3.2.1 | Perform Integration testing by Consultant | 7d | 2024-11-29 | 2024-12-09 | 85 | 0d |  | HBT |
| 88 | 1.1.1.2.2.3.2.2 | Plan for Level-2 training (CTM) | 1d | 2024-12-10 | 2024-12-10 | 87 | 0d |  | HBT |
| 89 | 1.1.1.2.2.3.2.3 | Making necessery training arrangement - PPT + tutorial | 2d | 2024-12-11 | 2024-12-12 | 88 | 0d |  | HBT |
| 90 | 1.1.1.2.2.3.2.4 | Conducting Level-2 Training (Module wise) | 3d | 2024-12-13 | 2024-12-17 | 89 | 0d |  | TE & HBT |
| 91 | 1.1.1.2.2.3.2.5 | Perform User Acceptance test - CTM | 9d | 2024-12-18 | 2024-12-31 | 90 | 0d |  | TE |
| 92 | 1.1.1.2.2.3.2.6 | Resolving the issues, if any | 9d | 2024-12-18 | 2024-12-31 | 91SS | 0d |  | HBT |
| 93 | 1.1.1.2.2.3.2.7 | Retesting of scenarios | 3d | 2025-01-02 | 2025-01-06 | 92 | 0d |  | TE |
| 94 | 1.1.1.2.2.3.2.8 | UAT (by CTM) signoff | 1d | 2025-01-07 | 2025-01-07 | 93 | 1237d | 0d | TE |
| 95 | 1.1.1.2.2.4 | **ABAP Development - SIT critical** | 31d | 2024-11-20 | 2025-01-03 |  | 1328d |  |  |
| 96 | 1.1.1.2.2.4.1 | Develop reports | 22d | 2024-11-20 | 2024-12-19 | 75 | 1328d | 0d | HBT |
| 97 | 1.1.1.2.2.4.2 | Testing by consultant | 22d | 2024-11-25 | 2024-12-24 | 96SS+3d | 1350d | 0d | HBT |
| 98 | 1.1.1.2.2.4.3 | Testing by CTM | 22d | 2024-11-28 | 2024-12-30 | 97SS+3d | 1350d | 0d | TE |
| 99 | 1.1.1.2.2.4.4 | Sign off Development | 22d | 2024-12-03 | 2025-01-03 | 98SS+3d | 1350d |  | TE |
| 100 | 1.1.1.2.2.5 | **Cutover Strategy** | 4d | 2025-01-07 | 2025-01-10 |  | 0d |  |  |
| 101 | 1.1.1.2.2.5.1 | Discussion on cutover strategy | 2d | 2025-01-07 | 2025-01-08 | 93 | 0d |  | TE & HBT |
| 102 | 1.1.1.2.2.5.2 | Cutover & data responsibility Plan | 1d | 2025-01-09 | 2025-01-09 | 101 | 1346d |  | TE & HBT |
| 103 | 1.1.1.2.2.5.3 | Review of cutover data migration strategy by KPMG | 3d | 2025-01-07 | 2025-01-09 | 101SS | 0d |  | KPMG |
| 104 | 1.1.1.2.2.5.4 | Communication to Organisation for Cutover | 1d | 2025-01-10 | 2025-01-10 | 103 | 0d |  | TE |

| ID | WBS | Task | Duration | Start | Finish | Predecessors | Total slack | Free slack | Constraint | Text1 |
| --- | --- | --- | --- | --- | --- | --- | --- | --- | --- | --- |
| 105 | 1.1.1.2.2.6 | **End user training plan** | 2d | 2025-01-08 | 2025-01-09 |  | 1237d |  |  |  |
| 106 | 1.1.1.2.2.6.1 | Preparation of End User training plan | 2d | 2025-01-08 | 2025-01-09 | 94 | 1237d | 0d |  | TE & HBT |
| 107 | 1.1.1.2.2.6.2 | Communicate plan to TE | 1d | 2025-01-09 | 2025-01-09 | 106FF | 1237d | 0d |  | TE |
| 108 | 1.1.1.2.2.6.3 | Completion of Realization Phase | 1d | 2025-01-09 | 2025-01-09 | 107FF | 1237d | 0d |  | TE & HBT |
| 109 | 1.1.1.2.2.7 | **Deliverables** | 32d | 2024-11-26 | 2025-01-10 |  | 1345d |  |  |  |
| 110 | 1.1.1.2.2.7.1 | D: Test scripts | 1d | 2024-11-29 | 2024-11-29 | 84 | 1373d |  |  | HBT |
| 111 | 1.1.1.2.2.7.2 | D: Unit test result document | 1d | 2024-11-26 | 2024-11-26 | 78 | 1376d |  |  | HBT |
| 112 | 1.1.1.2.2.7.3 | D: Integration testing document | 1d | 2024-12-10 | 2024-12-10 | 87 | 1366d |  |  | HBT |
| 113 | 1.1.1.2.2.7.4 | D: User Acceptance testing document | 1d | 2025-01-07 | 2025-01-07 | 94FF | 1348d |  |  | HBT |
| 114 | 1.1.1.2.2.7.5 | D: Final master data templates | 1d | 2025-01-10 | 2025-01-10 | 104FF | 1345d |  |  | HBT |
| 115 | 1.1.1.2.2.7.6 | D: Data migration strategy document | 1d | 2025-01-10 | 2025-01-10 | 104FF | 1345d |  |  | HBT |
| 116 | 1.1.1.2.3 | **Deploy** | 72d | 2024-10-25 | 2025-02-10 |  | 5d |  |  |  |
| 117 | 1.1.1.2.3.1 | **Coordinate ABAP Development Pre Go Live** | 31d | 2024-12-20 | 2025-02-05 |  | 1328d |  |  |  |
| 118 | 1.1.1.2.3.1.1 | Develop reports | 22d | 2024-12-20 | 2025-01-23 | 96 | 1328d | 0d | start no earlier than 2022-12-20 | HBT |
| 119 | 1.1.1.2.3.1.2 | Testing by consultant | 22d | 2024-12-26 | 2025-01-28 | 118SS+3d | 1328d | 0d |  | HBT |
| 120 | 1.1.1.2.3.1.3 | Testing by CTM | 22d | 2024-12-31 | 2025-01-31 | 119SS+3d | 1328d | 0d |  | TE |
| 121 | 1.1.1.2.3.1.4 | Sign off Development | 22d | 2025-01-06 | 2025-02-05 | 120SS+3d | 1328d |  |  | TE |
| 122 | 1.1.1.2.3.2 | **End User Training** | 10d | 2025-01-10 | 2025-01-24 |  | 1335d |  |  |  |
| 123 | 1.1.1.2.3.2.1 | Prepare end user training manual | 2d | 2025-01-10 | 2025-01-13 | 104SS | 1335d | 0d |  | HBT |
| 124 | 1.1.1.2.3.2.2 | Conduct end user training | 5d | 2025-01-14 | 2025-01-21 | 123 | 1335d | 0d |  | TE |
| 125 | 1.1.1.2.3.2.3 | Conduct training to HODs/Management | 3d | 2025-01-22 | 2025-01-24 | 124 | 1336d |  |  | TE |
| 126 | 1.1.1.2.3.3 | **Production Environment Preparation** | 3d | 2025-01-08 | 2025-01-10 |  | 1345d |  |  |  |
| 127 | 1.1.1.2.3.3.1 | Transport final configurations | 1d | 2025-01-08 | 2025-01-08 | 94 | 1345d | 0d |  | HBT |
| 128 | 1.1.1.2.3.3.2 | Maintain number ranges | 1d | 2025-01-09 | 2025-01-09 | 127 | 1345d | 0d |  | HBT |
| 129 | 1.1.1.2.3.3.3 | Maintain client specific data | 1d | 2025-01-10 | 2025-01-10 | 128 | 1345d |  |  | HBT |

| ID | WBS | Task | Duration | Start | Finish | Predecessors | Total slack | Free slack | Text1 |
| --- | --- | --- | --- | --- | --- | --- | --- | --- | --- |
| 130 | 1.1.1.2.3.4 | **User creation** | 11d | 2025-01-10 | 2025-01-27 |  | 1335d |  |  |
| 131 | 1.1.1.2.3.4.1 | Finalize list of users for production enviornment | 2d | 2025-01-10 | 2025-01-13 | 107 | 1342d | 0d | TE & HBT |
| 132 | 1.1.1.2.3.4.2 | Finalise Authorization Matrix | 2d | 2025-01-14 | 2025-01-16 | 131 | 1342d |  | TE & HBT |
| 133 | 1.1.1.2.3.4.3 | Check roles and authorization | 4d | 2025-01-22 | 2025-01-27 | 124 | 1335d |  | HBT |
| 134 | 1.1.1.2.3.5 | **Data preparation and upload** | 71d | 2024-10-25 | 2025-02-07 |  | 5d |  |  |
| 135 | 1.1.1.2.3.5.1 | Receipt of master data | 55d | 2024-10-25 | 2025-01-16 | 60 | 5d | 0d | TE |
| 136 | 1.1.1.2.3.5.2 | Validate & cleanse master data | 2d | 2025-01-17 | 2025-01-20 | 135 | 5d | 0d | TE |
| 137 | 1.1.1.2.3.5.3 | Upload master data in Production | 4d | 2025-01-21 | 2025-01-24 | 136 | 5d | 0d | TE & HBT |
| 138 | 1.1.1.2.3.5.4 | Confirm uploaded master data | 1d | 2025-01-27 | 2025-01-27 | 137 | 1328d | 0d | TE |
| 139 | 1.1.1.2.3.5.5 | Receipt of cutover data | 15d | 2025-01-10 | 2025-01-31 | 104SS | 0d |  | TE |
| 140 | 1.1.1.2.3.5.6 | Validate & cleanse cutover data | 15d | 2025-01-10 | 2025-01-31 | 139SS | 1331d |  | TE |
| 141 | 1.1.1.2.3.5.7 | Upload cutover data in production | 5d | 2025-02-03 | 2025-02-07 | 139, 137 | 0d |  | TE & HBT |
| 142 | 1.1.1.2.3.5.8 | Check and validate uploaded data | 1d | 2025-02-07 | 2025-02-07 | 141FF | 0d |  | TE |
| 143 | 1.1.1.2.3.6 | **Deliverables** | 11d | 2025-01-14 | 2025-01-29 |  | 1333d |  |  |
| 144 | 1.1.1.2.3.6.1 | D: End user training manual | 3d | 2025-01-14 | 2025-01-17 | 123 | 1341d |  | HBT |
| 145 | 1.1.1.2.3.6.2 | D: Data migration plan & checklist | 3d | 2025-01-17 | 2025-01-21 | 135 | 1339d |  | HBT |
| 146 | 1.1.1.2.3.6.3 | D: Master data upload programs | 3d | 2025-01-27 | 2025-01-29 | 137 | 1333d |  | HBT |
| 147 | 1.1.1.2.3.6.4 | D: Sample data upload validation | 1d | 2025-01-27 | 2025-01-27 | 137 | 1335d |  | HBT |
| 148 | 1.1.1.2.3.6.5 | D: Final SAP Authorization matrix | 1d | 2025-01-14 | 2025-01-14 | 131 | 1343d |  | HBT |
| 149 | 1.1.1.2.3.7 | **Obtain Approval & phase Sign Off** | 10d | 2025-01-28 | 2025-02-10 |  | 9d |  |  |
| 150 | 1.1.1.2.3.7.1 | Deploy signoff | 1d | 2025-02-10 | 2025-02-10 | 142 | 0d |  | TE |
| 151 | 1.1.1.2.3.7.2 | Completion of Final Preparation (Deploy) Phase | 1d | 2025-02-10 | 2025-02-10 | 150FF | 1325d |  | TE & HBT |
| 152 | 1.1.1.2.3.7.3 | Pre-Go Live readiness Check | 7d | 2025-01-28 | 2025-02-05 | 138 | 1328d |  | KPMG |
| 153 | 1.1.1.2.4 | Go Live | 1d | 2025-02-11 | 2025-02-11 | 150 | 0d |  | TE & HBT |

| ID | WBS | Task | Duration | Start | Finish | Predecessors | Total slack | Free slack | Text1 |
| --- | --- | --- | --- | --- | --- | --- | --- | --- | --- |
| 154 | 1.1.1.3 | **REFX, Cash Management, PM** | 130d | 2024-08-05 | 2025-02-11 |  | 1324d |  |  |
| 155 | 1.1.1.3.1 | **Explore** | 73d | 2024-08-19 | 2024-12-03 |  | 1324d |  |  |
| 156 | 1.1.1.3.1.1 | **Requirement gathering & Conceptual design** | 43d | 2024-08-19 | 2024-10-18 |  | 1324d |  |  |
| 157 | 1.1.1.3.1.1.1 | Explain & share AS IS template | 1d | 2024-08-19 | 2024-08-19 | 8FS+4d | 1324d | 0d | HBT |
| 158 | 1.1.1.3.1.1.2 | Prepare AS-IS document | 5d | 2024-08-20 | 2024-08-26 | 157 | 1324d | 0d | TE |
| 159 | 1.1.1.3.1.1.3 | AS IS document review with TE | 20d | 2024-08-27 | 2024-09-23 | 158 | 1324d | 0d | TE & HBT |
| 160 | 1.1.1.3.1.1.4 | Update AS IS document as per discussion | 20d | 2024-08-27 | 2024-09-23 | 159SS | 1324d | 0d | TE & HBT |
| 161 | 1.1.1.3.1.1.5 | Prepare end to end cycle (holistic view) for AS IS | 4d | 2024-09-24 | 2024-09-27 | 160 | 1401d | 0d | TE & HBT |
| 162 | 1.1.1.3.1.1.6 | Presentation to Management for AS IS process | 10d | 2024-10-01 | 2024-10-16 | 161FS+1d | 1401d | 0d | TE & HBT |
| 163 | 1.1.1.3.1.1.7 | Making final changes in AS IS | 2d | 2024-10-17 | 2024-10-18 | 162 | 1401d |  | TE & HBT |
| 164 | 1.1.1.3.1.2 | **Level 1 training - L1** | 4d | 2024-09-24 | 2024-09-27 |  | 1413d |  |  |
| 165 | 1.1.1.3.1.2.1 | Making necessary training preparation and Plan | 2d | 2024-09-24 | 2024-09-25 | 160 | 1413d | 0d | HBT |
| 166 | 1.1.1.3.1.2.2 | Conducting level-1 training (SAP Overview) | 2d | 2024-09-26 | 2024-09-27 | 165 | 1413d | 0d | HBT |
| 167 | 1.1.1.3.1.3 | **Business Process definition** | 47d | 2024-09-24 | 2024-12-03 |  | 1324d |  |  |
| 168 | 1.1.1.3.1.3.1 | **Enterprise structure** | 8d | 2024-09-24 | 2024-10-04 |  | 1324d |  |  |
| 169 | 1.1.1.3.1.3.1.1 | Define Org structure | 3d | 2024-09-24 | 2024-09-26 | 160 | 1324d | 0d | HBT |
| 170 | 1.1.1.3.1.3.1.2 | Review & discuss Org Structure with TE | 1d | 2024-09-27 | 2024-09-27 | 169 | 1324d | 0d | TE & HBT |
| 171 | 1.1.1.3.1.3.1.3 | Review of Org structure by KPMG | 2d | 2024-09-27 | 2024-09-30 | 170SS | 1324d | 0d | KPMG |
| 172 | 1.1.1.3.1.3.1.4 | Incorporate changes suggested by TE & KPMG | 2d | 2024-10-01 | 2024-10-03 | 171 | 1324d | 0d | HBT |
| 173 | 1.1.1.3.1.3.1.5 | Finalize & submit Org structure | 1d | 2024-10-04 | 2024-10-04 | 172 | 1324d | 0d | HBT |
| 174 | 1.1.1.3.1.3.1.6 | Sign off on Org structure by TE | 1d | 2024-10-04 | 2024-10-04 | 173FF | 1324d | 0d | TE |
| 175 | 1.1.1.3.1.3.2 | **Business Blueprint** | 10d | 2024-11-18 | 2024-11-29 |  | 1324d |  |  |
| 176 | 1.1.1.3.1.3.2.1 | Prepare Business blueprint document & KDS | 3d | 2024-11-18 | 2024-11-20 | 174FS+27d | 1324d | 0d | HBT |
| 177 | 1.1.1.3.1.3.2.2 | Review Gap analysis, propose workaround, identify development list | 3d | 2024-11-18 | 2024-11-20 | 176SS | 1324d | 0d | HBT |
| 178 | 1.1.1.3.1.3.2.3 | Submit BBP to CTM | 1d | 2024-11-21 | 2024-11-21 | 177 | 1324d | 0d | HBT |
| 179 | 1.1.1.3.1.3.2.4 | Review BBP with CTM & BPO | 3d | 2024-11-21 | 2024-11-25 | 178SS | 1324d | 0d | TE |
| 180 | 1.1.1.3.1.3.2.5 | Review of BBP by KPMG | 3d | 2024-11-21 | 2024-11-25 | 179SS | 1324d | 0d | KPMG |
| 181 | 1.1.1.3.1.3.2.6 | Incorporate changes suggested | 1d | 2024-11-26 | 2024-11-26 | 180 | 1324d | 0d | HBT |
| 182 | 1.1.1.3.1.3.2.7 | BBP solution workshop for Management | 1d | 2024-11-27 | 2024-11-27 | 181 | 1324d | 0d | HBT |
| 183 | 1.1.1.3.1.3.2.8 | Submit final BBP for signoff | 1d | 2024-11-28 | 2024-11-28 | 182 | 1324d | 0d | HBT |
| 184 | 1.1.1.3.1.3.2.9 | BBP sign off by TE | 1d | 2024-11-29 | 2024-11-29 | 183 | 1373d | 0d | TE |
| 185 | 1.1.1.3.1.3.2.10 | Completion of Business Blueprint Phase | 1d | 2024-11-29 | 2024-11-29 | 184FF | 1373d |  | TE & HBT |

| ID | WBS | Task | Duration | Start | Finish | Predecessors | Total slack | Free slack | Text1 |
| --- | --- | --- | --- | --- | --- | --- | --- | --- | --- |
| 186 | 1.1.1.3.1.3.3 | **Master Data & cutover data** | 2d | 2024-11-29 | 2024-12-02 |  | 1324d |  |  |
| 187 | 1.1.1.3.1.3.3.1 | Identify master data & cutover data requirement | 1d | 2024-11-29 | 2024-11-29 | 183 | 1324d | 0d | HBT |
| 188 | 1.1.1.3.1.3.3.2 | Prepare & explain master data & cutover data template | 1d | 2024-12-02 | 2024-12-02 | 187 | 1324d | 0d | HBT |
| 189 | 1.1.1.3.1.3.3.3 | Circulate master data & cutover data template | 1d | 2024-12-02 | 2024-12-02 | 188FF | 1324d | 0d | HBT |
| 190 | 1.1.1.3.1.3.4 | **Requirement gathering sheet (RGS)** | 3d | 2024-11-29 | 2024-12-03 |  | 1371d |  |  |
| 191 | 1.1.1.3.1.3.4.1 | Prepare RGS | 2d | 2024-11-29 | 2024-12-02 | 187SS | 1371d | 0d | HBT |
| 192 | 1.1.1.3.1.3.4.2 | Submit RGS | 1d | 2024-12-03 | 2024-12-03 | 191 | 1371d |  | HBT |
| 193 | 1.1.1.3.1.3.5 | **Deliverables** | 42d | 2024-09-30 | 2024-12-02 |  | 1372d |  |  |
| 194 | 1.1.1.3.1.3.5.1 | D: BBP document | 1d | 2024-11-29 | 2024-11-29 | 184FF | 1373d |  | HBT |
| 195 | 1.1.1.3.1.3.5.2 | D: Gap Analysis | 1d | 2024-11-29 | 2024-11-29 | 184FF | 1373d |  | HBT |
| 196 | 1.1.1.3.1.3.5.3 | D: Core team training presentation | 1d | 2024-09-30 | 2024-09-30 | 166 | 1413d |  | HBT |
| 197 | 1.1.1.3.1.3.5.4 | D: Final WRICEF list | 1d | 2024-11-29 | 2024-11-29 | 184FF | 1373d |  | HBT |
| 198 | 1.1.1.3.1.3.5.5 | D: Initial master data templates | 1d | 2024-12-02 | 2024-12-02 | 189FF | 1372d |  | HBT |
| 199 | 1.1.1.3.2 | **Realize** | 116d | 2024-08-05 | 2025-01-22 |  | 1338d |  |  |
| 200 | 1.1.1.3.2.1 | **FS** | 3d | 2024-12-03 | 2024-12-05 |  | 1326d |  |  |
| 201 | 1.1.1.3.2.1.1 | Prepare FS | 3d | 2024-12-03 | 2024-12-05 | 189 | 1326d | 0d | HBT |
| 202 | 1.1.1.3.2.2 | **Configure and Validate Baseline** | 12d | 2024-12-06 | 2024-12-23 |  | 1326d |  |  |
| 203 | 1.1.1.3.2.2.1 | Configure Processes and Functions in golden master (100) | 4d | 2024-12-06 | 2024-12-11 | 201 | 1326d | 0d | HBT |
| 204 | 1.1.1.3.2.2.2 | Config review by KPMG | 4d | 2024-12-06 | 2024-12-11 | 203SS | 1332d | 0d | KPMG |
| 205 | 1.1.1.3.2.2.3 | Transfer of Configuration to Dev testing | 1d | 2024-12-12 | 2024-12-12 | 204 | 1332d | 0d | HBT |
| 206 | 1.1.1.3.2.2.4 | Unit testing-1 (Consultant) | 3d | 2024-12-13 | 2024-12-17 | 205 | 1332d | 0d | HBT |
| 207 | 1.1.1.3.2.2.5 | Document and Resolve Issues | 3d | 2024-12-18 | 2024-12-20 | 206 | 1332d | 0d | HBT |
| 208 | 1.1.1.3.2.2.6 | Submit Unit Testing result & completion of baselune config | 1d | 2024-12-23 | 2024-12-23 | 207 | 1332d | 0d | HBT |
| 209 | 1.1.1.3.2.3 | **System Integration Test** | 20d | 2024-12-23 | 2025-01-22 |  | 1332d |  |  |
| 210 | 1.1.1.3.2.3.1 | **Integration test Plan** | 2d | 2024-12-23 | 2024-12-24 |  | 1332d |  |  |
| 211 | 1.1.1.3.2.3.1.1 | Identify scenerios for Integration test | 2d | 2024-12-23 | 2024-12-24 | 208SS | 1332d | 0d | TE & HBT |
| 212 | 1.1.1.3.2.3.1.2 | Write scripts for Integration test | 2d | 2024-12-23 | 2024-12-24 | 211SS | 1356d |  | HBT |
| 213 | 1.1.1.3.2.3.1.3 | Test scripts review by KPMG | 2d | 2024-12-23 | 2024-12-24 | 211SS | 1332d | 0d | KPMG |

| ID | WBS | Task | Duration | Start | Finish | Predecessors | Total slack | Free slack | Text1 |
| --- | --- | --- | --- | --- | --- | --- | --- | --- | --- |
| 214 | 1.1.1.3.2.3.2 | **Conduct System integration test** | 18d | 2024-12-26 | 2025-01-22 |  | 1332d |  |  |
| 215 | 1.1.1.3.2.3.2.1 | Perform Integration testing by Consultant | 5d | 2024-12-26 | 2025-01-02 | 213 | 1332d | 0d | HBT |
| 216 | 1.1.1.3.2.3.2.2 | Plan for Level-2 training (CTM) | 1d | 2025-01-03 | 2025-01-03 | 215 | 1332d | 0d | HBT |
| 217 | 1.1.1.3.2.3.2.3 | Making necessery training arrangement - PPT + tutorial | 1d | 2025-01-06 | 2025-01-06 | 216 | 1332d | 0d | HBT |
| 218 | 1.1.1.3.2.3.2.4 | Conducting Level-2 Training (Module wise) | 3d | 2025-01-07 | 2025-01-09 | 217 | 1332d | 0d | TE & HBT |
| 219 | 1.1.1.3.2.3.2.5 | Perform User Acceptance test - CTM | 5d | 2025-01-10 | 2025-01-17 | 218 | 1332d | 0d | TE |
| 220 | 1.1.1.3.2.3.2.6 | Resolving the issues, if any | 5d | 2025-01-10 | 2025-01-17 | 219SS | 1332d | 0d | HBT |
| 221 | 1.1.1.3.2.3.2.7 | Retesting of scenarios | 2d | 2025-01-20 | 2025-01-21 | 220 | 1332d | 0d | TE |
| 222 | 1.1.1.3.2.3.2.8 | UAT (by CTM) signoff | 1d | 2025-01-22 | 2025-01-22 | 221 | 1332d | 0d | TE |
| 223 | 1.1.1.3.2.4 | **ABAP Development - SIT critical** | 24d | 2024-12-12 | 2025-01-17 |  | 1326d |  |  |
| 224 | 1.1.1.3.2.4.1 | Develop reports | 15d | 2024-12-12 | 2025-01-03 | 203 | 1326d | 0d | HBT |
| 225 | 1.1.1.3.2.4.2 | Testing by consultant | 15d | 2024-12-17 | 2025-01-08 | 224SS+3d | 1341d | 0d | HBT |
| 226 | 1.1.1.3.2.4.3 | Testing by CTM | 15d | 2024-12-20 | 2025-01-13 | 225SS+3d | 1341d | 0d | TE |
| 227 | 1.1.1.3.2.4.4 | Sign off Development | 15d | 2024-12-26 | 2025-01-17 | 226SS+3d | 1341d |  | TE |
| 228 | 1.1.1.3.2.5 | **Cutover Strategy** | 3d | 2025-01-07 | 2025-01-09 |  | 1344d |  |  |
| 229 | 1.1.1.3.2.5.1 | Discussion on cutover strategy | 1d | 2025-01-07 | 2025-01-07 | 218SS | 1344d | 0d | HBT |
| 230 | 1.1.1.3.2.5.2 | Cutover & data responsibility Plan | 1d | 2025-01-08 | 2025-01-08 | 229 | 1344d | 0d | HBT |
| 231 | 1.1.1.3.2.5.3 | Review of cutover data migration strategy by KPMG | 1d | 2025-01-08 | 2025-01-08 | 230SS | 1344d | 0d | KPMG |
| 232 | 1.1.1.3.2.5.4 | Communication to Organisation for Cutover | 1d | 2025-01-09 | 2025-01-09 | 231 | 1344d | 0d | HBT |
| 233 | 1.1.1.3.2.6 | **End user training plan** | 8d | 2025-01-10 | 2025-01-22 |  | 1338d |  |  |
| 234 | 1.1.1.3.2.6.1 | Preparation of End User training plan | 1d | 2025-01-10 | 2025-01-10 | 232 | 1344d | 0d | TE & HBT |
| 235 | 1.1.1.3.2.6.2 | Communicate plan to TE | 1d | 2025-01-13 | 2025-01-13 | 234 | 1344d |  | TE |
| 236 | 1.1.1.3.2.6.3 | Completion of Realization Phase | 1d | 2025-01-22 | 2025-01-22 | 222FF | 1338d |  | TE & HBT |
| 237 | 1.1.1.3.2.7 | **Deliverables** | 116d | 2024-08-05 | 2025-01-22 |  | 1338d |  |  |
| 238 | 1.1.1.3.2.7.1 | D: Test scripts | 1d | 2024-12-26 | 2024-12-26 | 213 | 1355d |  | HBT |
| 239 | 1.1.1.3.2.7.2 | D: Unit test result document | 1d | 2024-08-05 | 2024-08-05 |  | 1453d |  | HBT |
| 240 | 1.1.1.3.2.7.3 | D: Integration testing document | 1d | 2025-01-03 | 2025-01-03 | 215 | 1350d |  | HBT |
| 241 | 1.1.1.3.2.7.4 | D: User Acceptance testing document | 1d | 2025-01-22 | 2025-01-22 | 222FF | 1338d |  | HBT |
| 242 | 1.1.1.3.2.7.5 | D: Final master data templates | 1d | 2025-01-10 | 2025-01-10 | 232 | 1345d |  | HBT |
| 243 | 1.1.1.3.2.7.6 | D: Data migration strategy document | 1d | 2025-01-10 | 2025-01-10 | 232 | 1345d |  | HBT |

| ID | WBS | Task | Duration | Start | Finish | Predecessors | Total slack | Free slack | Text1 |
| --- | --- | --- | --- | --- | --- | --- | --- | --- | --- |
| 244 | 1.1.1.3.3 | **Deploy** | 47d | 2024-12-03 | 2025-02-10 |  | 1324d |  |  |
| 245 | 1.1.1.3.3.1 | **Coordinate ABAP Development Pre Go Live** | 24d | 2025-01-06 | 2025-02-07 |  | 1326d |  |  |
| 246 | 1.1.1.3.3.1.1 | Develop reports | 15d | 2025-01-06 | 2025-01-27 | 224 | 1326d | 0d | HBT |
| 247 | 1.1.1.3.3.1.2 | Testing by consultant | 15d | 2025-01-09 | 2025-01-30 | 246SS+3d | 1326d | 0d | HBT |
| 248 | 1.1.1.3.3.1.3 | Testing by CTM | 15d | 2025-01-14 | 2025-02-04 | 247SS+3d | 1326d | 0d | TE |
| 249 | 1.1.1.3.3.1.4 | Sign off Development | 15d | 2025-01-20 | 2025-02-07 | 248SS+3d | 1326d |  | TE |
| 250 | 1.1.1.3.3.2 | **End User Training** | 17d | 2025-01-03 | 2025-01-28 |  | 1334d |  |  |
| 251 | 1.1.1.3.3.2.1 | Prepare end user training manual | 1d | 2025-01-03 | 2025-01-03 | 215 | 1349d | 0d | HBT |
| 252 | 1.1.1.3.3.2.2 | Conduct end user training | 3d | 2025-01-23 | 2025-01-27 | 222 | 1332d | 0d | TE |
| 253 | 1.1.1.3.3.2.3 | Conduct training to HODs/Management | 1d | 2025-01-28 | 2025-01-28 | 252 | 1334d |  | TE |
| 254 | 1.1.1.3.3.3 | **Production Environment Preparation** | 3d | 2025-01-23 | 2025-01-27 |  | 1335d |  |  |
| 255 | 1.1.1.3.3.3.1 | Transport final configurations | 1d | 2025-01-23 | 2025-01-23 | 222 | 1335d | 0d | HBT |
| 256 | 1.1.1.3.3.3.2 | Maintain number ranges | 1d | 2025-01-24 | 2025-01-24 | 255 | 1335d | 0d | HBT |
| 257 | 1.1.1.3.3.3.3 | Maintain client specific data | 1d | 2025-01-27 | 2025-01-27 | 256 | 1335d |  | HBT |
| 258 | 1.1.1.3.3.4 | **User creation** | 19d | 2025-01-03 | 2025-01-30 |  | 1332d |  |  |
| 259 | 1.1.1.3.3.4.1 | Finalize list of users for production enviornment | 1d | 2025-01-03 | 2025-01-03 | 215 | 1346d | 0d | TE & HBT |
| 260 | 1.1.1.3.3.4.2 | Finalise Authorization Matrix | 3d | 2025-01-06 | 2025-01-08 | 259 | 1346d | 0d | TE & HBT |
| 261 | 1.1.1.3.3.4.3 | Check roles and authorization | 3d | 2025-01-28 | 2025-01-30 | 252 | 1332d |  | HBT |
| 262 | 1.1.1.3.3.5 | **Data preparation and upload** | 46d | 2024-12-03 | 2025-02-07 |  | 1324d |  |  |
| 263 | 1.1.1.3.3.5.1 | Receipt of master data | 35d | 2024-12-03 | 2025-01-23 | 189 | 1324d | 0d | TE |
| 264 | 1.1.1.3.3.5.2 | Validate & cleanse master data | 2d | 2025-01-24 | 2025-01-27 | 263 | 1324d | 0d | TE |
| 265 | 1.1.1.3.3.5.3 | Upload master data in Production | 4d | 2025-01-28 | 2025-01-31 | 264 | 1324d | 0d | TE & HBT |
| 266 | 1.1.1.3.3.5.4 | Confirm uploaded master data | 1d | 2025-01-31 | 2025-01-31 | 265FF | 1324d | 0d | TE |
| 267 | 1.1.1.3.3.5.5 | Receipt of cutover data | 1d | 2025-02-03 | 2025-02-03 | 266 | 1324d | 0d | TE |
| 268 | 1.1.1.3.3.5.6 | Validate & cleanse cutover data | 1d | 2025-02-04 | 2025-02-04 | 267 | 1324d | 0d | TE |
| 269 | 1.1.1.3.3.5.7 | Upload cutover data in production | 3d | 2025-02-05 | 2025-02-07 | 268 | 1324d | 0d | TE & HBT |
| 270 | 1.1.1.3.3.5.8 | Check and validate uploaded data | 1d | 2025-02-07 | 2025-02-07 | 269FF | 1324d | 0d | TE |

| ID | WBS | Task | Duration | Start | Finish | Predecessors | Total slack | Free slack | Constraint | Text1 |
| --- | --- | --- | --- | --- | --- | --- | --- | --- | --- | --- |
| 271 | 1.1.1.3.3.6 | **Deliverables** | 25d | 2025-01-06 | 2025-02-10 |  | 1325d |  |  |  |
| 272 | 1.1.1.3.3.6.1 | D: End user training manual | 1d | 2025-01-06 | 2025-01-06 | 251 | 1349d |  |  | HBT |
| 273 | 1.1.1.3.3.6.2 | D: Data migration plan & checklist | 1d | 2025-01-10 | 2025-01-10 | 232 | 1345d |  |  | HBT |
| 274 | 1.1.1.3.3.6.3 | D: Master data upload programs | 1d | 2025-02-03 | 2025-02-03 | 266 | 1330d |  |  | HBT |
| 275 | 1.1.1.3.3.6.4 | D: Sample data upload validation | 1d | 2025-02-10 | 2025-02-10 | 269 | 1325d |  |  | HBT |
| 276 | 1.1.1.3.3.6.5 | D: Final SAP Authorization matrix | 1d | 2025-01-09 | 2025-01-09 | 260 | 1346d |  |  | HBT |
| 277 | 1.1.1.3.3.7 | **Obtain Approval & phase Sign Off** | 6d | 2025-02-03 | 2025-02-10 |  | 1325d |  |  |  |
| 278 | 1.1.1.3.3.7.1 | Deploy signoff | 1d | 2025-02-10 | 2025-02-10 | 270 | 1324d | 0d |  | TE |
| 279 | 1.1.1.3.3.7.2 | Completion of Final Preparation (Deploy) Phase | 1d | 2025-02-10 | 2025-02-10 | 278FF | 1324d | 0d |  | TE & HBT |
| 280 | 1.1.1.3.3.7.3 | Pre-Go Live readiness Check | 3d | 2025-02-03 | 2025-02-05 | 266 | 1328d |  |  | KPMG |
| 281 | 1.1.1.3.4 | Go Live | 1d | 2025-02-11 | 2025-02-11 | 279 | 1324d |  |  | TE & HBT |
| 282 | 1.1.2 | **Stabilization** | 20d | 2025-02-12 | 2025-03-11 |  | 0d |  |  |  |
| 283 | 1.1.2.1 | Hand holding & issue resolution | 20d | 2025-02-12 | 2025-03-11 | 153 | 0d |  |  | TE & HBT |
| 284 | 1.1.2.2 | **Deliverables** | 20d | 2025-02-12 | 2025-03-11 |  | 1304d |  |  |  |
| 285 | 1.1.2.2.1 | D: Issue list with resolution status | 20d | 2025-02-12 | 2025-03-11 | 283SS | 1304d |  |  | HBT |
| 286 | 1.1.2.2.2 | D: Configuration documents | 20d | 2025-02-12 | 2025-03-11 | 283SS | 1304d |  |  | HBT |
| 287 | 1.1.2.2.3 | D: FS & TS | 20d | 2025-02-12 | 2025-03-11 | 283SS | 1304d |  |  | HBT |
| 288 | 1.1.2.2.4 | D: Core team training document | 20d | 2025-02-12 | 2025-03-11 | 283SS | 1304d |  |  | HBT |
| 289 | 1.2 | **Phase 1B & 1C: Success Factor Implementation** | 176d | 2024-10-01 | 2025-06-12 |  | 1237d |  |  |  |
| 290 | 1.2.1 | **PMGM** | 97d | 2024-10-01 | 2025-02-21 |  | 1316d |  |  |  |
| 291 | 1.2.1.1 | **Explore** | 22d | 2024-10-01 | 2024-11-05 |  | 1316d |  |  |  |
| 292 | 1.2.1.1.1 | Requirement gathering | 3d | 2024-10-01 | 2024-10-04 |  | 1316d | 0d | start no earlier than 2024-10-01 | HBT |
| 293 | 1.2.1.1.2 | Prepare business blueprint document | 3d | 2024-10-07 | 2024-10-09 | 292 | 1316d | 0d |  | HBT |
| 294 | 1.2.1.1.3 | Review BBP with CTM & BPO | 3d | 2024-10-10 | 2024-10-15 | 293 | 1316d | 0d |  | HBT & TE |
| 295 | 1.2.1.1.4 | Review of BBP by KPMG | 3d | 2024-10-10 | 2024-10-15 | 294SS | 1316d | 0d |  | KPMG |
| 296 | 1.2.1.1.5 | Incorporate changes suggested | 2d | 2024-10-16 | 2024-10-17 | 295 | 1316d | 0d |  | HBT |
| 297 | 1.2.1.1.6 | BBP walkthrough to BPO & Management | 2d | 2024-10-18 | 2024-10-21 | 296 | 1316d | 0d |  | HBT |
| 298 | 1.2.1.1.7 | Incorporate changes & submit final BBP | 1d | 2024-10-22 | 2024-10-22 | 297 | 1316d | 0d |  | HBT |
| 299 | 1.2.1.1.8 | Approval & signoff of BBP document | 2d | 2024-10-23 | 2024-10-24 | 298 | 1316d | 0d |  | TE |
| 300 | 1.2.1.1.9 | Explain master data & cutover data template | 2d | 2024-10-25 | 2024-10-28 | 299 | 1316d | 0d |  | HBT |
| 301 | 1.2.1.1.10 | Circulate master data template | 1d | 2024-10-28 | 2024-10-28 | 300FF | 1316d | 0d |  | HBT |
| 302 | 1.2.1.1.11 | Prepare RGS | 3d | 2024-10-29 | 2024-11-04 | 301 | 1351d | 0d |  | HBT |
| 303 | 1.2.1.1.12 | Submit RGS | 1d | 2024-11-05 | 2024-11-05 | 302 | 1351d | 0d |  | HBT |
| 304 | 1.2.1.1.13 | Explore Phase Completion | 1d | 2024-11-05 | 2024-11-05 | 303FF | 1391d |  |  | HBT & TE |

| ID | WBS | Task | Duration | Start | Finish | Predecessors | Total slack | Free slack | Text1 |
| --- | --- | --- | --- | --- | --- | --- | --- | --- | --- |
| 305 | 1.2.1.1.14 | **Deliverables** | 6d | 2024-10-25 | 2024-11-05 |  | 1391d |  |  |
| 306 | 1.2.1.1.14.1 | D: Filled Workbook | 1d | 2024-10-25 | 2024-10-25 | 299 | 1396d |  | HBT |
| 307 | 1.2.1.1.14.2 | D: Data template | 1d | 2024-10-29 | 2024-10-29 | 301 | 1394d |  | HBT |
| 308 | 1.2.1.1.14.3 | D: Integration Architecture document | 1d | 2024-10-25 | 2024-10-25 | 299 | 1396d |  | HBT |
| 309 | 1.2.1.1.14.4 | D: FS & TS for interfaces | 1d | 2024-11-05 | 2024-11-05 | 302 | 1391d |  | HBT |
| 310 | 1.2.1.2 | **Realize** | 38d | 2024-11-05 | 2024-12-27 |  | 1351d |  |  |
| 311 | 1.2.1.2.1 | Prepare FS | 3d | 2024-11-05 | 2024-11-07 | 303SS | 1351d | 0d | HBT |
| 312 | 1.2.1.2.2 | Configuration of finalized business process | 7d | 2024-11-08 | 2024-11-18 | 311 | 1351d | 0d | HBT |
| 313 | 1.2.1.2.3 | Review of config by KPMG | 7d | 2024-11-08 | 2024-11-18 | 312SS | 1351d | 0d | KPMG |
| 314 | 1.2.1.2.4 | Unit Testing by HBT | 3d | 2024-11-19 | 2024-11-21 | 313 | 1351d | 0d | HBT |
| 315 | 1.2.1.2.5 | Development of identified custom objects | 25d | 2024-11-19 | 2024-12-23 | 312 | 1354d | 0d | HBT |
| 316 | 1.2.1.2.6 | Testing of developed objects | 25d | 2024-11-22 | 2024-12-27 | 315SS+3d | 1354d |  | TE & HBT |
| 317 | 1.2.1.2.7 | Prepare test scripts | 2d | 2024-11-22 | 2024-11-25 | 314 | 1351d | 0d | HBT |
| 318 | 1.2.1.2.8 | Review of test scripts by TE | 2d | 2024-11-26 | 2024-11-27 | 317 | 1351d | 0d | TE & HBT |
| 319 | 1.2.1.2.9 | Review of test scripts by KPMG | 2d | 2024-11-26 | 2024-11-27 | 318SS | 1351d | 0d | KPMG |
| 320 | 1.2.1.2.10 | Perform Integration testing | 5d | 2024-11-28 | 2024-12-04 | 319 | 1351d | 0d | HBT |
| 321 | 1.2.1.2.11 | Conduct L-2 training | 4d | 2024-12-05 | 2024-12-10 | 320 | 1351d | 0d | HBT |
| 322 | 1.2.1.2.12 | Perform User Acceptance testing | 7d | 2024-12-11 | 2024-12-19 | 321 | 1351d | 0d | TE |
| 323 | 1.2.1.2.13 | Resolve issues, if any | 7d | 2024-12-11 | 2024-12-19 | 322SS | 1351d | 0d | HBT |
| 324 | 1.2.1.2.14 | Retesting of scenarios | 3d | 2024-12-20 | 2024-12-24 | 323 | 1351d | 0d | TE |
| 325 | 1.2.1.2.15 | Realize Phase signoff | 1d | 2024-12-24 | 2024-12-24 | 324FF | 1351d | 0d | TE |
| 326 | 1.2.1.2.16 | Prepare end user training plan | 2d | 2024-12-05 | 2024-12-06 | 320 | 1368d |  | HBT & TE |
| 327 | 1.2.1.2.17 | Data migration strategy | 2d | 2024-12-05 | 2024-12-06 | 321SS | 1367d | 0d | HBT |
| 328 | 1.2.1.2.18 | Review of data migration strategy by KPMG | 2d | 2024-12-05 | 2024-12-06 | 327SS | 1367d | 0d | KPMG |
| 329 | 1.2.1.2.19 | Circulate cutover data template | 1d | 2024-12-09 | 2024-12-09 | 328 | 1367d |  | HBT |

| ID | WBS | Task | Duration | Start | Finish | Predecessors | Total slack | Free slack | Constraint | Text1 |
| --- | --- | --- | --- | --- | --- | --- | --- | --- | --- | --- |
| 330 | 1.2.1.2.20 | **Deliverables** | 8d | 2024-12-11 | 2024-12-20 |  | 1358d |  |  |  |
| 331 | 1.2.1.2.20.1 | D: Updated workbook | 1d | 2024-12-20 | 2024-12-20 | 322 | 1358d |  |  | HBT |
| 332 | 1.2.1.2.20.2 | D: SIT & UAT | 1d | 2024-12-20 | 2024-12-20 | 322 | 1358d |  |  | HBT |
| 333 | 1.2.1.2.20.3 | D: CTM Admin Training Guide | 1d | 2024-12-11 | 2024-12-11 | 321 | 1365d |  |  | HBT |
| 334 | 1.2.1.3 | **Deploy** | 56d | 2024-10-29 | 2025-01-21 |  | 1316d |  |  |  |
| 335 | 1.2.1.3.1 | Transport request to Production | 1d | 2024-12-26 | 2024-12-26 | 324 | 1352d | 0d |  | HBT |
| 336 | 1.2.1.3.2 | Conduct end user training | 4d | 2024-12-26 | 2024-12-31 | 325 | 1351d | 0d |  | TE |
| 337 | 1.2.1.3.3 | Provide & check roles & authorization | 3d | 2024-12-27 | 2024-12-31 | 335 | 1352d |  |  | HBT |
| 338 | 1.2.1.3.4 | Receipt of master data | 43d | 2024-10-29 | 2024-12-31 | 301 | 1316d | 0d |  | TE |
| 339 | 1.2.1.3.5 | Upload master data in Production | 4d | 2025-01-02 | 2025-01-07 | 338 | 1316d | 0d |  | HBT & TE |
| 340 | 1.2.1.3.6 | Receipt of cutover data | 3d | 2025-01-08 | 2025-01-10 | 339 | 1316d | 0d |  | TE |
| 341 | 1.2.1.3.7 | Upload cutover data in production | 4d | 2025-01-13 | 2025-01-17 | 340 | 1316d | 0d |  | HBT & TE |
| 342 | 1.2.1.3.8 | Pre-GoLive readiness by KPMG | 4d | 2025-01-02 | 2025-01-07 | 339SS | 1348d |  |  | KPMG |
| 343 | 1.2.1.3.9 | Deploy Phase signoff | 1d | 2025-01-20 | 2025-01-20 | 341 | 1316d | 0d |  | TE & HBT |
| 344 | 1.2.1.3.10 | **Deliverables** | 16d | 2024-12-27 | 2025-01-21 |  | 1339d |  |  |  |
| 345 | 1.2.1.3.10.1 | D: End user training guide | 1d | 2025-01-02 | 2025-01-02 | 336 | 1351d |  |  | HBT |
| 346 | 1.2.1.3.10.2 | D: Production Sanity Test | 1d | 2024-12-27 | 2024-12-27 | 335 | 1354d |  |  | HBT |
| 347 | 1.2.1.3.10.3 | D: Go Live signoff | 1d | 2025-01-21 | 2025-01-21 | 343 | 1339d |  |  | HBT |
| 348 | 1.2.1.4 | Go Live | 1d | 2025-01-21 | 2025-01-21 | 343 | 1316d | 0d |  | TE & HBT |
| 349 | 1.2.1.5 | **Stabilization** | 23d | 2025-01-22 | 2025-02-21 |  | 1316d |  |  |  |
| 350 | 1.2.1.5.1 | Hand holding & issue resolution | 23d | 2025-01-22 | 2025-02-21 | 348 | 1316d |  |  | HBT |
| 351 | 1.2.2 | **EC** | 97d | 2024-10-01 | 2025-02-21 |  | 1316d |  |  |  |
| 352 | 1.2.2.1 | **Explore** | 26d | 2024-10-01 | 2024-11-11 |  | 1354d |  |  |  |
| 353 | 1.2.2.1.1 | Requirement gathering | 4d | 2024-10-01 | 2024-10-07 |  | 1401d | 0d | start no earlier than 2024-10-01 | HBT |
| 354 | 1.2.2.1.2 | Prepare business blueprint document | 4d | 2024-10-08 | 2024-10-14 | 353 | 1401d | 0d | finish no earlier than 2024-09-30 | HBT |
| 355 | 1.2.2.1.3 | Review BBP with CTM & BPO | 4d | 2024-10-15 | 2024-10-18 | 354 | 1401d | 0d | finish no earlier than 2024-10-04 | HBT & TE |
| 356 | 1.2.2.1.4 | Review of BBP by KPMG | 4d | 2024-10-15 | 2024-10-18 | 355SS | 1346d | 0d | finish no earlier than 2024-10-04 | KPMG |
| 357 | 1.2.2.1.5 | Incorporate changes suggested | 2d | 2024-10-21 | 2024-10-22 | 356 | 1346d | 0d | finish no earlier than 2024-10-08 | HBT |
| 358 | 1.2.2.1.6 | BBP walkthrough to BPO & Management | 2d | 2024-10-23 | 2024-10-24 | 357 | 1346d | 0d | finish no earlier than 2024-10-10 | HBT |
| 359 | 1.2.2.1.7 | Incorporate changes & submit final BBP | 1d | 2024-10-25 | 2024-10-25 | 358 | 1346d | 0d | start no earlier than 2024-10-14 | HBT |
| 360 | 1.2.2.1.8 | Approval & signoff of BBP document | 2d | 2024-10-28 | 2024-10-29 | 359 | 1346d | 0d | finish no earlier than 2024-10-16 | TE |
| 361 | 1.2.2.1.9 | Explain master data & cutover data template | 2d | 2024-10-30 | 2024-11-04 | 360 | 1346d | 0d | finish no earlier than 2024-10-18 | HBT |
| 362 | 1.2.2.1.10 | Circulate master data template | 1d | 2024-11-04 | 2024-11-04 | 361FF | 1346d | 0d | start no earlier than 2024-10-18 | HBT |
| 363 | 1.2.2.1.11 | Prepare RGS | 3d | 2024-11-05 | 2024-11-07 | 362 | 1356d | 0d | finish no earlier than 2024-10-23 | HBT |
| 364 | 1.2.2.1.12 | Submit RGS | 1d | 2024-11-08 | 2024-11-08 | 363 | 1356d | 0d | start no earlier than 2024-10-24 | HBT |
| 365 | 1.2.2.1.13 | Explore Phase Completion | 1d | 2024-11-08 | 2024-11-08 | 364FF | 1388d |  | start no earlier than 2024-10-24 | HBT & TE |

| ID | WBS | Task | Duration | Start | Finish | Predecessors | Total slack | Free slack | Constraint | Text1 |
| --- | --- | --- | --- | --- | --- | --- | --- | --- | --- | --- |
| 366 | 1.2.2.1.14 | **Deliverables** | 7d | 2024-10-30 | 2024-11-11 |  | 1387d |  |  |  |
| 367 | 1.2.2.1.14.1 | D: Filled Workbook | 1d | 2024-10-30 | 2024-10-30 | 360 | 1393d |  | start no earlier than 2024-10-17 | HBT |
| 368 | 1.2.2.1.14.2 | D: Data template | 1d | 2024-11-05 | 2024-11-05 | 362 | 1391d |  | start no earlier than 2024-10-21 | HBT |
| 369 | 1.2.2.1.14.3 | D: Integration Architecture document | 1d | 2024-10-30 | 2024-10-30 | 360 | 1393d |  | start no earlier than 2024-10-17 | HBT |
| 370 | 1.2.2.1.14.4 | D: FS & TS for interfaces | 1d | 2024-11-11 | 2024-11-11 | 364 | 1387d |  | start no earlier than 2024-10-24 | HBT |
| 371 | 1.2.2.2 | **Realize** | 38d | 2024-11-08 | 2025-01-02 |  | 1351d |  |  |  |
| 372 | 1.2.2.2.1 | Prepare FS | 3d | 2024-11-08 | 2024-11-12 | 364SS | 1356d | 0d | finish no earlier than 2024-10-28 | HBT |
| 373 | 1.2.2.2.2 | Configuration of finalized business process | 5d | 2024-11-13 | 2024-11-19 | 372 | 1356d | 0d | finish no earlier than 2024-11-06 | HBT |
| 374 | 1.2.2.2.3 | Review of config by KPMG | 5d | 2024-11-13 | 2024-11-19 | 373SS | 1373d | 0d | finish no earlier than 2024-11-06 | KPMG |
| 375 | 1.2.2.2.4 | Unit Testing by HBT | 4d | 2024-11-20 | 2024-11-25 | 374 | 1373d | 0d | finish no earlier than 2024-11-11 | HBT |
| 376 | 1.2.2.2.5 | Development of identified custom objects | 25d | 2024-11-20 | 2024-12-24 | 373 | 1356d | 0d | finish no earlier than 2024-12-11 | HBT |
| 377 | 1.2.2.2.6 | Testing of developed objects | 25d | 2024-11-25 | 2024-12-30 | 376SS+3d | 1353d |  | finish no earlier than 2024-12-16 | TE & HBT |
| 378 | 1.2.2.2.7 | Prepare test scripts | 2d | 2024-11-26 | 2024-11-27 | 375 | 1373d | 0d | finish no earlier than 2024-11-13 | HBT |
| 379 | 1.2.2.2.8 | Review of test scripts by TE | 2d | 2024-11-28 | 2024-11-29 | 378 | 1373d | 0d | finish no earlier than 2024-11-15 | TE & HBT |
| 380 | 1.2.2.2.9 | Review of test scripts by KPMG | 2d | 2024-11-28 | 2024-11-29 | 379SS | 1353d | 0d | finish no earlier than 2024-11-15 | KPMG |
| 381 | 1.2.2.2.10 | Perform Integration testing | 7d | 2024-12-02 | 2024-12-10 | 380 | 1353d | 0d | finish no earlier than 2024-11-22 | HBT |
| 382 | 1.2.2.2.11 | Conduct L-2 training | 5d | 2024-12-11 | 2024-12-17 | 381 | 1353d | 0d | finish no earlier than 2024-11-28 | HBT |
| 383 | 1.2.2.2.12 | Perform User Acceptance testing | 7d | 2024-12-18 | 2024-12-27 | 382 | 1353d | 0d | finish no earlier than 2024-12-09 | TE |
| 384 | 1.2.2.2.13 | Resolve issues, if any | 7d | 2024-12-18 | 2024-12-27 | 383SS | 1346d | 0d | finish no earlier than 2024-12-09 | HBT |
| 385 | 1.2.2.2.14 | Retesting of scenarios | 3d | 2024-12-30 | 2025-01-02 | 384 | 1346d | 0d | finish no earlier than 2024-12-12 | TE |
| 386 | 1.2.2.2.15 | Realize Phase signoff | 1d | 2025-01-02 | 2025-01-02 | 385FF | 1346d | 0d | start no earlier than 2024-12-12 | TE |
| 387 | 1.2.2.2.16 | Prepare end user training plan | 2d | 2024-12-11 | 2024-12-12 | 381 | 1364d |  | finish no earlier than 2024-11-26 | HBT & TE |
| 388 | 1.2.2.2.17 | Data migration strategy | 2d | 2024-12-11 | 2024-12-12 | 382SS | 1364d | 0d | finish no earlier than 2024-11-26 | HBT |
| 389 | 1.2.2.2.18 | Review of data migration strategy by KPMG | 2d | 2024-12-11 | 2024-12-12 | 388SS | 1363d | 0d | finish no earlier than 2024-11-26 | KPMG |
| 390 | 1.2.2.2.19 | Circulate cutover data template | 1d | 2024-12-13 | 2024-12-13 | 389 | 1363d |  | start no earlier than 2024-11-27 | HBT |

| ID | WBS | Task | Duration | Start | Finish | Predecessors | Total slack | Free slack | Constraint | Text1 |
| --- | --- | --- | --- | --- | --- | --- | --- | --- | --- | --- |
| 391 | 1.2.2.2.20 | **Deliverables** | 8d | 2024-12-18 | 2024-12-30 |  | 1353d |  |  |  |
| 392 | 1.2.2.2.20.1 | D: Updated workbook | 1d | 2024-12-30 | 2024-12-30 | 383 | 1353d |  | start no earlier than 2024-12-10 | HBT |
| 393 | 1.2.2.2.20.2 | D: SIT & UAT | 1d | 2024-12-30 | 2024-12-30 | 383 | 1353d |  | start no earlier than 2024-12-10 | HBT |
| 394 | 1.2.2.2.20.3 | D: CTM Admin Training Guide | 1d | 2024-12-18 | 2024-12-18 | 382 | 1360d |  | start no earlier than 2024-11-29 | HBT |
| 395 | 1.2.2.3 | **Deploy** | 53d | 2024-11-05 | 2025-01-21 |  | 1339d |  |  |  |
| 396 | 1.2.2.3.1 | Transport request to Production | 1d | 2025-01-03 | 2025-01-03 | 385 | 1346d | 0d | start no earlier than 2024-12-13 | HBT |
| 397 | 1.2.2.3.2 | Conduct end user training | 4d | 2025-01-03 | 2025-01-08 | 386 | 1346d | 0d | finish no earlier than 2024-12-18 | TE |
| 398 | 1.2.2.3.3 | Provide & check roles & authorization | 3d | 2025-01-06 | 2025-01-08 | 396 | 1347d |  | finish no earlier than 2024-12-18 | HBT |
| 399 | 1.2.2.3.4 | Receipt of master data | 42d | 2024-11-05 | 2025-01-03 | 362 | 1346d | 0d | finish no earlier than 2024-12-17 | TE |
| 400 | 1.2.2.3.5 | Upload master data in Production | 4d | 2025-01-06 | 2025-01-09 | 399, 396 | 1346d | 0d | finish no earlier than 2024-12-23 | HBT & TE |
| 401 | 1.2.2.3.6 | Receipt of cutover data | 3d | 2025-01-08 | 2025-01-10 | 400SS+2d | 1316d | 0d | finish no earlier than 2024-12-27 | TE |
| 402 | 1.2.2.3.7 | Upload cutover data in production | 4d | 2025-01-13 | 2025-01-17 | 401 | 1316d | 0d | finish no earlier than 2025-01-03 | HBT & TE |
| 403 | 1.2.2.3.8 | Pre-GoLive readiness by KPMG | 4d | 2025-01-06 | 2025-01-09 | 400SS | 1346d |  | finish no earlier than 2024-12-23 | KPMG |
| 404 | 1.2.2.3.9 | Deploy Phase signoff | 1d | 2025-01-20 | 2025-01-20 | 402 | 1316d | 0d | start no earlier than 2025-01-06 | TE & HBT |
| 405 | 1.2.2.3.10 | **Deliverables** | 11d | 2025-01-06 | 2025-01-21 |  | 1339d |  |  |  |
| 406 | 1.2.2.3.10.1 | D: End user training guide | 1d | 2025-01-09 | 2025-01-09 | 397 | 1346d |  | start no earlier than 2024-12-19 | HBT |
| 407 | 1.2.2.3.10.2 | D: Production Sanity Test | 1d | 2025-01-06 | 2025-01-06 | 396 | 1349d |  | start no earlier than 2024-12-16 | HBT |
| 408 | 1.2.2.3.10.3 | D: Go Live signoff | 1d | 2025-01-21 | 2025-01-21 | 404 | 1339d |  | start no earlier than 2025-01-07 | HBT |
| 409 | 1.2.2.4 | Go Live | 1d | 2025-01-21 | 2025-01-21 | 404 | 1316d | 0d | start no earlier than 2025-01-07 | TE & HBT |
| 410 | 1.2.2.5 | **Stabilization** | 23d | 2025-01-22 | 2025-02-21 |  | 1316d |  |  |  |
| 411 | 1.2.2.5.1 | Hand holding & issue resolution | 23d | 2025-01-22 | 2025-02-21 | 409 | 1316d |  |  | HBT |
| 412 | 1.2.3 | **OM, Recruitment, Onboarding, Learning** | 109d | 2025-01-10 | 2025-06-12 |  | 1237d |  |  |  |
| 413 | 1.2.3.1 | **Explore** | 28d | 2025-01-10 | 2025-02-19 |  | 1237d |  |  |  |
| 414 | 1.2.3.1.1 | Requirement gathering | 4d | 2025-01-10 | 2025-01-16 | 108 | 1237d | 0d |  | HBT |
| 415 | 1.2.3.1.2 | Prepare business blueprint document | 5d | 2025-01-17 | 2025-01-23 | 414 | 1237d | 0d |  | HBT |
| 416 | 1.2.3.1.3 | Review BBP with CTM & BPO | 6d | 2025-01-24 | 2025-01-31 | 415 | 1237d | 0d |  | HBT & TE |
| 417 | 1.2.3.1.4 | Review of BBP by KPMG | 6d | 2025-01-24 | 2025-01-31 | 416SS | 1237d | 0d |  | KPMG |
| 418 | 1.2.3.1.5 | Incorporate changes suggested | 2d | 2025-02-03 | 2025-02-04 | 417 | 1237d | 0d |  | HBT |
| 419 | 1.2.3.1.6 | BBP walkthrough to BPO & Management | 2d | 2025-02-05 | 2025-02-06 | 418 | 1237d | 0d |  | HBT |
| 420 | 1.2.3.1.7 | Incorporate changes & submit final BBP | 1d | 2025-02-07 | 2025-02-07 | 419 | 1237d | 0d |  | HBT |
| 421 | 1.2.3.1.8 | Approval & signoff of BBP document | 2d | 2025-02-10 | 2025-02-11 | 420 | 1237d | 0d |  | TE |
| 422 | 1.2.3.1.9 | Explain master data & cutover data template | 2d | 2025-02-12 | 2025-02-13 | 421 | 1237d | 0d |  | HBT |
| 423 | 1.2.3.1.10 | Circulate master data template | 1d | 2025-02-13 | 2025-02-13 | 422FF | 1237d | 0d |  | HBT |
| 424 | 1.2.3.1.11 | Prepare RGS | 3d | 2025-02-14 | 2025-02-18 | 423 | 1267d | 0d |  | HBT |
| 425 | 1.2.3.1.12 | Submit RGS | 1d | 2025-02-19 | 2025-02-19 | 424 | 1267d | 0d |  | HBT |
| 426 | 1.2.3.1.13 | Explore Phase Completion | 1d | 2025-02-19 | 2025-02-19 | 425FF | 1318d |  |  | HBT & TE |

| ID | WBS | Task | Duration | Start | Finish | Predecessors | Total slack | Free slack | Text1 |
| --- | --- | --- | --- | --- | --- | --- | --- | --- | --- |
| 427 | 1.2.3.1.14 | **Deliverables** | 15d | 2025-01-24 | 2025-02-13 |  | 1322d |  |  |
| 428 | 1.2.3.1.14.1 | D: Filled Workbook | 1d | 2025-01-24 | 2025-01-24 | 415 | 1336d |  | HBT |
| 429 | 1.2.3.1.14.2 | D: Data template | 1d | 2025-02-13 | 2025-02-13 | 423FF | 1322d |  | HBT |
| 430 | 1.2.3.1.14.3 | D: Integration Architecture document | 1d | 2025-02-10 | 2025-02-10 | 420 | 1325d |  | HBT |
| 431 | 1.2.3.1.14.4 | D: FS & TS for interfaces | 1d | 2025-02-10 | 2025-02-10 | 420 | 1325d |  | HBT |
| 432 | 1.2.3.2 | **Realize** | 45d | 2025-02-19 | 2025-04-22 |  | 1267d |  |  |
| 433 | 1.2.3.2.1 | Prepare FS | 3d | 2025-02-19 | 2025-02-21 | 425SS | 1267d | 0d | HBT |
| 434 | 1.2.3.2.2 | Configuration of finalized business process | 7d | 2025-02-24 | 2025-03-04 | 433 | 1267d | 0d | HBT |
| 435 | 1.2.3.2.3 | Review of config by KPMG | 7d | 2025-02-24 | 2025-03-04 | 434SS | 1267d | 0d | KPMG |
| 436 | 1.2.3.2.4 | Unit Testing by HBT | 4d | 2025-03-05 | 2025-03-10 | 435 | 1267d | 0d | HBT |
| 437 | 1.2.3.2.5 | Development of identified custom objects | 25d | 2025-03-05 | 2025-04-08 | 434 | 1281d | 0d | HBT |
| 438 | 1.2.3.2.6 | Testing of developed objects | 25d | 2025-03-10 | 2025-04-11 | 437SS+3d | 1281d |  | TE & HBT |
| 439 | 1.2.3.2.7 | Prepare test scripts | 3d | 2025-03-11 | 2025-03-13 | 436 | 1267d | 0d | HBT |
| 440 | 1.2.3.2.8 | Review of test scripts by TE | 3d | 2025-03-14 | 2025-03-18 | 439 | 1267d | 0d | TE & HBT |
| 441 | 1.2.3.2.9 | Review of test scripts by KPMG | 3d | 2025-03-14 | 2025-03-18 | 440SS | 1267d | 0d | KPMG |
| 442 | 1.2.3.2.10 | Perform Integration testing | 7d | 2025-03-19 | 2025-03-27 | 441 | 1267d | 0d | HBT |
| 443 | 1.2.3.2.11 | Conduct L-2 training | 5d | 2025-03-28 | 2025-04-03 | 442 | 1267d | 0d | HBT |
| 444 | 1.2.3.2.12 | Perform User Acceptance testing | 10d | 2025-04-04 | 2025-04-17 | 443 | 1267d | 0d | TE |
| 445 | 1.2.3.2.13 | Resolve issues, if any | 10d | 2025-04-04 | 2025-04-17 | 444SS | 1267d | 0d | HBT |
| 446 | 1.2.3.2.14 | Retesting of scenarios | 3d | 2025-04-18 | 2025-04-22 | 445 | 1267d | 0d | TE |
| 447 | 1.2.3.2.15 | Realize Phase signoff | 1d | 2025-04-22 | 2025-04-22 | 446FF | 1267d | 0d | TE |
| 448 | 1.2.3.2.16 | Prepare end user training plan | 2d | 2025-03-28 | 2025-03-31 | 442 | 1290d |  | HBT & TE |
| 449 | 1.2.3.2.17 | Data migration strategy | 2d | 2025-03-28 | 2025-03-31 | 443SS | 1289d | 0d | HBT |
| 450 | 1.2.3.2.18 | Review of data migration strategy by KPMG | 2d | 2025-03-28 | 2025-03-31 | 449SS | 1290d |  | KPMG |
| 451 | 1.2.3.2.19 | Circulate cutover data template | 1d | 2025-04-01 | 2025-04-01 | 449 | 1289d |  | HBT |

| ID | WBS | Task | Duration | Start | Finish | Predecessors | Total slack | Free slack | Text1 |
| --- | --- | --- | --- | --- | --- | --- | --- | --- | --- |
| 452 | 1.2.3.2.20 | **Deliverables** | 11d | 2025-04-04 | 2025-04-18 |  | 1276d |  |  |
| 453 | 1.2.3.2.20.1 | D: Updated workbook | 1d | 2025-04-18 | 2025-04-18 | 444 | 1276d |  | HBT |
| 454 | 1.2.3.2.20.2 | D: SIT & UAT | 1d | 2025-04-18 | 2025-04-18 | 444 | 1276d |  | HBT |
| 455 | 1.2.3.2.20.3 | D: CTM Admin Training Guide | 1d | 2025-04-04 | 2025-04-04 | 443 | 1286d |  | HBT |
| 456 | 1.2.3.3 | **Deploy** | 63d | 2025-02-14 | 2025-05-13 |  | 1237d |  |  |
| 457 | 1.2.3.3.1 | Transport request to Production | 1d | 2025-04-23 | 2025-04-23 | 447 | 1272d | 0d | HBT |
| 458 | 1.2.3.3.2 | Conduct end user training | 4d | 2025-04-23 | 2025-04-28 | 447 | 1267d | 0d | TE |
| 459 | 1.2.3.3.3 | Provide & check roles & authorization | 3d | 2025-04-29 | 2025-05-01 | 458 | 1267d |  | HBT |
| 460 | 1.2.3.3.4 | Receipt of master data | 49d | 2025-02-14 | 2025-04-23 | 423 | 1237d | 0d | TE |
| 461 | 1.2.3.3.5 | Upload master data in Production | 4d | 2025-04-24 | 2025-04-29 | 460 | 1237d | 0d | HBT & TE |
| 462 | 1.2.3.3.6 | Receipt of cutover data | 5d | 2025-04-30 | 2025-05-06 | 461 | 1237d | 0d | TE |
| 463 | 1.2.3.3.7 | Upload cutover data in production | 4d | 2025-05-07 | 2025-05-12 | 462 | 1237d | 0d | HBT & TE |
| 464 | 1.2.3.3.8 | Pre-GoLive readiness by KPMG | 5d | 2025-04-30 | 2025-05-06 | 461 | 1264d |  | KPMG |
| 465 | 1.2.3.3.9 | Deploy Phase signoff | 1d | 2025-05-12 | 2025-05-12 | 463FF | 1237d | 0d | TE & HBT |
| 466 | 1.2.3.3.10 | **Deliverables** | 14d | 2025-04-24 | 2025-05-13 |  | 1259d |  |  |
| 467 | 1.2.3.3.10.1 | D: End user training guide | 1d | 2025-04-29 | 2025-04-29 | 458 | 1269d |  | HBT |
| 468 | 1.2.3.3.10.2 | D: Production Sanity Test | 1d | 2025-04-24 | 2025-04-24 | 457 | 1272d |  | HBT |
| 469 | 1.2.3.3.10.3 | D: Go Live signoff | 1d | 2025-05-13 | 2025-05-13 | 465 | 1259d |  | HBT |
| 470 | 1.2.3.4 | Go Live | 1d | 2025-05-13 | 2025-05-13 | 465 | 1237d | 0d | TE & HBT |
| 471 | 1.2.3.5 | **Stabilization** | 22d | 2025-05-14 | 2025-06-12 |  | 1237d |  |  |
| 472 | 1.2.3.5.1 | Hand holding & issue resolution | 22d | 2025-05-14 | 2025-06-12 | 470 | 1237d |  | HBT |
| 473 | 1.3 | **Phase 2: AMS for 5 years** | 1304d | 2025-03-12 | 2030-03-11 |  | 0d |  |  |
| 474 | 1.3.1 | Issue resolution & support | 1304d | 2025-03-12 | 2030-03-11 | 283 | 0d |  | HBT |
| 475 | 1.4 | **Phase 3A: Extended Warehouse Management (EWM)** | 110d | 2025-03-11 | 2025-08-11 |  | 1195d |  |  |
| 476 | 1.4.1 | **Prepare** | 6d | 2025-03-11 | 2025-03-18 |  | 1195d |  |  |
| 477 | 1.4.1.1 | Mobilize team | 1d | 2025-03-11 | 2025-03-11 | 283FS-1d | 1195d | 0d | HBT |
| 478 | 1.4.1.2 | Finalize delivery plan | 4d | 2025-03-12 | 2025-03-17 | 477 | 1299d | 0d | TE |

| ID | WBS | Task | Duration | Start | Finish | Predecessors | Total slack | Free slack | Text1 |
| --- | --- | --- | --- | --- | --- | --- | --- | --- | --- |
| 479 | 1.4.1.3 | **Deliverables** | 1d | 2025-03-18 | 2025-03-18 |  | 1299d |  |  |
| 480 | 1.4.1.3.1 | Project plan | 1d | 2025-03-18 | 2025-03-18 | 478 | 1299d |  | HBT |
| 481 | 1.4.2 | **Explore** | 29d | 2025-03-12 | 2025-04-21 |  | 1195d |  |  |
| 482 | 1.4.2.1 | Requirement gathering | 3d | 2025-03-12 | 2025-03-14 | 283 | 1195d | 0d | HBT |
| 483 | 1.4.2.2 | Prepare business blueprint document | 6d | 2025-03-17 | 2025-03-24 | 482 | 1195d | 0d | HBT |
| 484 | 1.4.2.3 | Review BBP with CTM | 7d | 2025-03-25 | 2025-04-02 | 483 | 1195d | 0d | HBT & TE |
| 485 | 1.4.2.4 | Review of BBP by KPMG | 7d | 2025-03-25 | 2025-04-02 | 484SS | 1195d | 0d | KPMG |
| 486 | 1.4.2.5 | Incorporate changes suggested | 2d | 2025-04-03 | 2025-04-04 | 485 | 1195d | 0d | HBT |
| 487 | 1.4.2.6 | BBP walkthrough to BPO & Management | 2d | 2025-04-07 | 2025-04-08 | 486 | 1195d | 0d | HBT |
| 488 | 1.4.2.7 | Incorporate changes & submit final BBP | 1d | 2025-04-09 | 2025-04-09 | 487 | 1195d | 0d | HBT |
| 489 | 1.4.2.8 | Approval & signoff of BBP document | 2d | 2025-04-10 | 2025-04-11 | 488 | 1195d | 0d | TE & HBT |
| 490 | 1.4.2.9 | Explain master data & cutover data template | 1d | 2025-04-14 | 2025-04-14 | 489 | 1195d | 0d | HBT |
| 491 | 1.4.2.10 | Circulate master data & cutover data template | 1d | 2025-04-15 | 2025-04-15 | 490 | 1195d | 0d | HBT |
| 492 | 1.4.2.11 | Prepare RGS | 3d | 2025-04-16 | 2025-04-18 | 491 | 1223d | 0d | HBT |
| 493 | 1.4.2.12 | Submit RGS | 1d | 2025-04-21 | 2025-04-21 | 492 | 1223d | 0d | HBT |
| 494 | 1.4.2.13 | Explore Phase completion | 1d | 2025-04-18 | 2025-04-18 | 492FF | 1276d |  | TE & HBT |
| 495 | 1.4.2.14 | **Deliverables** | 2d | 2025-04-14 | 2025-04-15 |  | 1279d |  |  |
| 496 | 1.4.2.14.1 | D: BBP document | 1d | 2025-04-14 | 2025-04-14 | 489 | 1280d |  | HBT |
| 497 | 1.4.2.14.2 | D: Gap Analysis | 1d | 2025-04-14 | 2025-04-14 | 489 | 1280d |  | HBT |
| 498 | 1.4.2.14.3 | D: Core team training presentation | 1d | 2025-04-14 | 2025-04-14 | 489 | 1280d |  | HBT |
| 499 | 1.4.2.14.4 | D: Final WRICEF list | 1d | 2025-04-14 | 2025-04-14 | 489 | 1280d |  | HBT |
| 500 | 1.4.2.14.5 | D: Initial master data templates | 1d | 2025-04-15 | 2025-04-15 | 491FF | 1279d |  | HBT |
| 501 | 1.4.3 | **Realize** | 43d | 2025-04-22 | 2025-06-19 |  | 1223d |  |  |
| 502 | 1.4.3.1 | Prepare FS | 3d | 2025-04-22 | 2025-04-24 | 493 | 1223d | 0d | HBT |
| 503 | 1.4.3.2 | Configuration of finalized business process | 7d | 2025-04-25 | 2025-05-05 | 502 | 1223d | 0d | HBT |
| 504 | 1.4.3.3 | Review of config by KPMG | 7d | 2025-04-25 | 2025-05-05 | 503SS | 1223d | 0d | KPMG |
| 505 | 1.4.3.4 | Unit Testing by HBT | 5d | 2025-05-06 | 2025-05-12 | 504 | 1223d | 0d | HBT |
| 506 | 1.4.3.5 | Development of identified custom objects | 30d | 2025-05-06 | 2025-06-16 | 503 | 1232d | 0d | HBT |
| 507 | 1.4.3.6 | Testing of development objects | 30d | 2025-05-09 | 2025-06-19 | 506SS+3d | 1232d |  | TE & HBT |
| 508 | 1.4.3.7 | Scenario listing | 2d | 2025-05-13 | 2025-05-14 | 505 | 1223d | 0d | HBT & TE |
| 509 | 1.4.3.8 | Review of test scripts by KPMG | 2d | 2025-05-13 | 2025-05-14 | 508SS | 1258d |  | KPMG |
| 510 | 1.4.3.9 | Perform SIT by HBT | 7d | 2025-05-15 | 2025-05-23 | 508 | 1223d | 0d | HBT |
| 511 | 1.4.3.10 | Conduct L-2 Training | 4d | 2025-05-26 | 2025-05-29 | 510 | 1223d | 0d | HBT |
| 512 | 1.4.3.11 | Perform User Acceptance testing | 10d | 2025-05-30 | 2025-06-12 | 511 | 1223d | 0d | TE |
| 513 | 1.4.3.12 | Resolve issues, if any | 1d | 2025-06-13 | 2025-06-13 | 512 | 1223d | 0d | HBT |
| 514 | 1.4.3.13 | Retesting of scenarios | 3d | 2025-06-16 | 2025-06-18 | 513 | 1223d | 0d | TE |
| 515 | 1.4.3.14 | Realize Phase signoff | 1d | 2025-06-19 | 2025-06-19 | 514 | 1223d | 0d | TE |
| 516 | 1.4.3.15 | Prepare end user training plan | 1d | 2025-05-26 | 2025-05-26 | 510 | 1250d |  | HBT & TE |
| 517 | 1.4.3.16 | Data migration strategy | 2d | 2025-05-30 | 2025-06-02 | 511 | 1244d | 0d | HBT |
| 518 | 1.4.3.17 | Review of data migration strategy by KPMG | 2d | 2025-05-30 | 2025-06-02 | 517SS | 1244d | 0d | KPMG |
| 519 | 1.4.3.18 | Circulate cutover data template | 1d | 2025-06-03 | 2025-06-03 | 518 | 1244d | 0d | HBT |

| ID | WBS | Task | Duration | Start | Finish | Predecessors | Total slack | Free slack | Text1 |
| --- | --- | --- | --- | --- | --- | --- | --- | --- | --- |
| 520 | 1.4.3.19 | **Deliverables** | 28d | 2025-05-13 | 2025-06-19 |  | 1232d |  |  |
| 521 | 1.4.3.19.1 | D: Test scripts | 1d | 2025-05-15 | 2025-05-15 | 508 | 1257d |  | HBT |
| 522 | 1.4.3.19.2 | D: Unit test result document | 1d | 2025-05-13 | 2025-05-13 | 505 | 1259d |  | HBT |
| 523 | 1.4.3.19.3 | D: Integration testing document | 1d | 2025-05-26 | 2025-05-26 | 510 | 1250d |  | HBT |
| 524 | 1.4.3.19.4 | D: User Acceptance testing document | 1d | 2025-06-19 | 2025-06-19 | 514 | 1232d |  | HBT |
| 525 | 1.4.3.19.5 | D: Final master data templates | 1d | 2025-06-03 | 2025-06-03 | 519FF | 1244d |  | HBT |
| 526 | 1.4.3.19.6 | D: Data migration strategy document | 1d | 2025-06-03 | 2025-06-03 | 519FF | 1244d |  | HBT |
| 527 | 1.4.4 | **Deploy** | 61d | 2025-04-16 | 2025-07-09 |  | 1195d |  |  |
| 528 | 1.4.4.1 | Transport request to Production | 2d | 2025-06-20 | 2025-06-23 | 515 | 1230d |  | HBT |
| 529 | 1.4.4.2 | Conduct end user training | 5d | 2025-06-20 | 2025-06-26 | 515 | 1223d | 0d | TE |
| 530 | 1.4.4.3 | Provide & check roles & authorization | 3d | 2025-06-27 | 2025-07-01 | 529 | 1223d | 0d | HBT |
| 531 | 1.4.4.4 | Receipt of master data | 50d | 2025-04-16 | 2025-06-24 | 491 | 1195d | 0d | TE |
| 532 | 1.4.4.5 | Upload master data in Production | 4d | 2025-06-25 | 2025-06-30 | 531 | 1195d | 0d | HBT & TE |
| 533 | 1.4.4.6 | Receipt of cutover data | 1d | 2025-07-01 | 2025-07-01 | 532 | 1195d | 0d | TE |
| 534 | 1.4.4.7 | Upload cutover data in production | 5d | 2025-07-02 | 2025-07-08 | 533 | 1195d | 0d | HBT & TE |
| 535 | 1.4.4.8 | Pre-Go Live check by KPMG | 5d | 2025-07-01 | 2025-07-07 | 532 | 1220d |  | KPMG |
| 536 | 1.4.4.9 | Deploy Phase signoff | 1d | 2025-07-09 | 2025-07-09 | 534 | 1195d | 0d | TE & HBT |
| 537 | 1.4.4.10 | **Deliverables** | 27d | 2025-06-03 | 2025-07-09 |  | 1218d |  |  |
| 538 | 1.4.4.10.1 | D: End user training manual | 1d | 2025-06-27 | 2025-06-27 | 529 | 1226d |  | HBT |
| 539 | 1.4.4.10.2 | D: Data migration plan & checklist | 1d | 2025-06-03 | 2025-06-03 | 519FF | 1244d |  | HBT |
| 540 | 1.4.4.10.3 | D: Master data upload programs | 1d | 2025-07-01 | 2025-07-01 | 532 | 1224d |  | HBT |
| 541 | 1.4.4.10.4 | D: Sample data upload validation | 1d | 2025-07-09 | 2025-07-09 | 534 | 1218d |  | HBT |
| 542 | 1.4.4.10.5 | D: Final SAP Authorization matrix | 1d | 2025-07-02 | 2025-07-02 | 530 | 1223d |  | HBT |
| 543 | 1.4.5 | Go Live | 1d | 2025-07-10 | 2025-07-10 | 536 | 1195d | 0d | TE & HBT |

| ID | WBS | Task | Duration | Start | Finish | Predecessors | Total slack | Free slack | Text1 |
| --- | --- | --- | --- | --- | --- | --- | --- | --- | --- |
| 544 | 1.4.6 | **Stabilization** | 22d | 2025-07-11 | 2025-08-11 |  | 1195d |  |  |
| 545 | 1.4.6.1 | Hand holding & issue resolution | 22d | 2025-07-11 | 2025-08-11 | 543 | 1195d | 0d | HBT |
| 546 | 1.4.6.2 | **Deliverables** | 21d | 2025-07-11 | 2025-08-08 |  | 1196d |  |  |
| 547 | 1.4.6.2.1 | D: Issue list with resolution status | 21d | 2025-07-11 | 2025-08-08 | 545SS | 1196d |  | HBT |
| 548 | 1.4.6.2.2 | D: Configuration documents | 21d | 2025-07-11 | 2025-08-08 | 545SS | 1196d |  | HBT |
| 549 | 1.4.6.2.3 | D: FS & TS | 21d | 2025-07-11 | 2025-08-08 | 545SS | 1196d |  | HBT |
| 550 | 1.4.6.2.4 | D: Core team training document | 21d | 2025-07-11 | 2025-08-08 | 545SS | 1196d |  | HBT |
| 551 | 1.5 | **Phase 3B: Group Reporting** | 87d | 2025-04-11 | 2025-08-11 |  | 1195d |  |  |
| 552 | 1.5.1 | **Group Reporting** | 87d | 2025-04-11 | 2025-08-11 |  | 1195d |  |  |
| 553 | 1.5.1.1 | **Explore** | 20d | 2025-04-11 | 2025-05-08 |  | 1195d |  |  |
| 554 | 1.5.1.1.1 | Requirement gathering | 3d | 2025-04-11 | 2025-04-15 | 477FS+22d | 1195d | 0d | HBT |
| 555 | 1.5.1.1.2 | Prepare business blueprint document | 4d | 2025-04-16 | 2025-04-21 | 554 | 1195d | 0d | HBT |
| 556 | 1.5.1.1.3 | Review BBP with CTM | 3d | 2025-04-22 | 2025-04-24 | 555 | 1195d | 0d | HBT & TE |
| 557 | 1.5.1.1.4 | Review of BBP by KPMG | 3d | 2025-04-22 | 2025-04-24 | 556SS | 1195d | 0d | KPMG |
| 558 | 1.5.1.1.5 | Incorporate changes suggested | 1d | 2025-04-25 | 2025-04-25 | 557 | 1195d | 0d | HBT |
| 559 | 1.5.1.1.6 | BBP walkthrough to BPO & Management | 2d | 2025-04-28 | 2025-04-29 | 558 | 1195d | 0d | HBT |
| 560 | 1.5.1.1.7 | Incorporate changes & submit final BBP | 1d | 2025-04-30 | 2025-04-30 | 559 | 1195d | 0d | HBT |
| 561 | 1.5.1.1.8 | Approval & signoff of BBP document | 1d | 2025-05-01 | 2025-05-01 | 560 | 1195d | 0d | TE |
| 562 | 1.5.1.1.9 | Explain master data & cutover data template | 1d | 2025-05-02 | 2025-05-02 | 561 | 1195d | 0d | HBT |
| 563 | 1.5.1.1.10 | Circulate master data & cutover data template | 1d | 2025-05-05 | 2025-05-05 | 562 | 1195d | 0d | HBT |
| 564 | 1.5.1.1.11 | Prepare RGS | 2d | 2025-05-06 | 2025-05-07 | 563 | 1220d | 0d | HBT |
| 565 | 1.5.1.1.12 | Submit RGS | 1d | 2025-05-08 | 2025-05-08 | 564 | 1220d | 0d | HBT |
| 566 | 1.5.1.1.13 | Explore Phase Completion | 1d | 2025-05-08 | 2025-05-08 | 565FF | 1262d |  | HBT & TE |
| 567 | 1.5.1.1.14 | **Deliverables** | 2d | 2025-05-02 | 2025-05-05 |  | 1265d |  |  |
| 568 | 1.5.1.1.14.1 | D: BBP document | 1d | 2025-05-02 | 2025-05-02 | 561 | 1266d |  | HBT |
| 569 | 1.5.1.1.14.2 | D: Gap Analysis | 1d | 2025-05-02 | 2025-05-02 | 561 | 1266d |  | HBT |
| 570 | 1.5.1.1.14.3 | D: Core team training presentation | 1d | 2025-05-02 | 2025-05-02 | 561 | 1266d |  | HBT |
| 571 | 1.5.1.1.14.4 | D: Final WRICEF list | 1d | 2025-05-02 | 2025-05-02 | 561 | 1266d |  | HBT |
| 572 | 1.5.1.1.14.5 | D: Initial master data templates | 1d | 2025-05-05 | 2025-05-05 | 563FF | 1265d |  | HBT |

| ID | WBS | Task | Duration | Start | Finish | Predecessors | Total slack | Free slack | Text1 |
| --- | --- | --- | --- | --- | --- | --- | --- | --- | --- |
| 573 | 1.5.1.2 | **Realize** | 33d | 2025-05-09 | 2025-06-24 |  | 1220d |  |  |
| 574 | 1.5.1.2.1 | Prepare FS | 2d | 2025-05-09 | 2025-05-12 | 565 | 1220d | 0d | HBT |
| 575 | 1.5.1.2.2 | Configuration of finalized business process | 7d | 2025-05-13 | 2025-05-21 | 574 | 1220d | 0d | HBT |
| 576 | 1.5.1.2.3 | Config review by KPMG | 7d | 2025-05-13 | 2025-05-21 | 575SS | 1220d | 0d | KPMG |
| 577 | 1.5.1.2.4 | Testing by HBT | 5d | 2025-05-22 | 2025-05-28 | 576 | 1220d | 0d | HBT |
| 578 | 1.5.1.2.5 | Development of identified custom objects | 20d | 2025-05-22 | 2025-06-18 | 575 | 1230d | 0d | HBT |
| 579 | 1.5.1.2.6 | Testing of development objects | 20d | 2025-05-27 | 2025-06-23 | 578SS+3d | 1230d |  | HBT & TE |
| 580 | 1.5.1.2.7 | Prepare test scripts | 2d | 2025-05-29 | 2025-05-30 | 577 | 1220d | 0d | HBT & TE |
| 581 | 1.5.1.2.8 | Review of test scripts by KPMG | 2d | 2025-05-29 | 2025-05-30 | 580SS | 1220d | 0d | KPMG |
| 582 | 1.5.1.2.9 | Integration testing by HBT | 5d | 2025-06-02 | 2025-06-06 | 581 | 1220d | 0d | HBT |
| 583 | 1.5.1.2.10 | Conduct L-2 training | 3d | 2025-06-09 | 2025-06-11 | 582 | 1220d | 0d | HBT |
| 584 | 1.5.1.2.11 | Perform User Acceptance testing | 5d | 2025-06-12 | 2025-06-18 | 583 | 1220d | 0d | TE |
| 585 | 1.5.1.2.12 | Resolve issues, if any | 1d | 2025-06-19 | 2025-06-19 | 584 | 1220d | 0d | HBT |
| 586 | 1.5.1.2.13 | Retesting of scenarios | 2d | 2025-06-20 | 2025-06-23 | 585 | 1220d | 0d | TE |
| 587 | 1.5.1.2.14 | Realize Phase signoff | 1d | 2025-06-24 | 2025-06-24 | 586 | 1220d | 0d | TE |
| 588 | 1.5.1.2.15 | Prepare end user training plan | 1d | 2025-06-02 | 2025-06-02 | 580 | 1245d |  | HBT & TE |
| 589 | 1.5.1.2.16 | Data migration strategy | 2d | 2025-06-09 | 2025-06-10 | 583SS | 1238d | 0d | HBT |
| 590 | 1.5.1.2.17 | Review of data migration strategy by KPMG | 2d | 2025-06-09 | 2025-06-10 | 589SS | 1239d |  | KPMG |
| 591 | 1.5.1.2.18 | Circulate cutover data template | 1d | 2025-06-11 | 2025-06-11 | 589 | 1238d | 0d | HBT |
| 592 | 1.5.1.2.19 | **Deliverables** | 16d | 2025-05-29 | 2025-06-19 |  | 1232d |  |  |
| 593 | 1.5.1.2.19.1 | D: Test scripts | 1d | 2025-06-02 | 2025-06-02 | 581 | 1245d |  | HBT |
| 594 | 1.5.1.2.19.2 | D: Unit test result document | 1d | 2025-05-29 | 2025-05-29 | 577 | 1247d |  | HBT |
| 595 | 1.5.1.2.19.3 | D: Integration testing document | 1d | 2025-05-29 | 2025-05-29 | 577 | 1247d |  | HBT |
| 596 | 1.5.1.2.19.4 | D: User Acceptance testing document | 1d | 2025-06-19 | 2025-06-19 | 584 | 1232d |  | HBT |
| 597 | 1.5.1.2.19.5 | D: Final master data templates | 1d | 2025-06-11 | 2025-06-11 | 591FF | 1238d |  | HBT |
| 598 | 1.5.1.2.19.6 | D: Data migration strategy document | 1d | 2025-06-11 | 2025-06-11 | 589 | 1238d |  | HBT |

| ID | WBS | Task | Duration | Start | Finish | Predecessors | Total slack | Free slack | Text1 |
| --- | --- | --- | --- | --- | --- | --- | --- | --- | --- |
| 599 | 1.5.1.3 | **Deploy** | 48d | 2025-05-06 | 2025-07-10 |  | 1195d |  |  |
| 600 | 1.5.1.3.1 | Transport request to Production | 1d | 2025-06-25 | 2025-06-25 | 587 | 1220d | 0d | HBT |
| 601 | 1.5.1.3.2 | Conduct end user training | 4d | 2025-06-26 | 2025-07-01 | 600 | 1220d | 0d | TE |
| 602 | 1.5.1.3.3 | Provide & check roles & authorization | 3d | 2025-07-02 | 2025-07-04 | 601 | 1220d | 0d | HBT |
| 603 | 1.5.1.3.4 | Receipt of master data | 36d | 2025-05-06 | 2025-06-24 | 563 | 1195d | 0d | TE |
| 604 | 1.5.1.3.5 | Upload master data in Production | 4d | 2025-06-25 | 2025-06-30 | 603 | 1195d | 0d | HBT & TE |
| 605 | 1.5.1.3.6 | Receipt of cutover data | 1d | 2025-07-01 | 2025-07-01 | 604 | 1195d | 0d | TE |
| 606 | 1.5.1.3.7 | Upload cutover data in production | 6d | 2025-07-02 | 2025-07-09 | 605 | 1195d | 0d | HBT & TE |
| 607 | 1.5.1.3.8 | Pre-Go Live check by KPMG | 5d | 2025-07-01 | 2025-07-07 | 604 | 1220d |  | KPMG |
| 608 | 1.5.1.3.9 | Deploy Phase signoff | 1d | 2025-07-09 | 2025-07-09 | 606FF | 1195d | 0d | TE & HBT |
| 609 | 1.5.1.3.10 | **Deliverables** | 22d | 2025-06-11 | 2025-07-10 |  | 1217d |  |  |
| 610 | 1.5.1.3.10.1 | D: End user training manual | 1d | 2025-07-02 | 2025-07-02 | 601 | 1223d |  | HBT |
| 611 | 1.5.1.3.10.2 | D: Data migration plan & checklist | 1d | 2025-06-11 | 2025-06-11 | 591FF | 1238d |  | HBT |
| 612 | 1.5.1.3.10.3 | D: Master data upload programs | 1d | 2025-07-01 | 2025-07-01 | 604 | 1224d |  | HBT |
| 613 | 1.5.1.3.10.4 | D: Sample data upload validation | 1d | 2025-07-10 | 2025-07-10 | 606 | 1217d |  | HBT |
| 614 | 1.5.1.3.10.5 | D: Final SAP Authorization matrix | 1d | 2025-07-07 | 2025-07-07 | 602 | 1220d |  | HBT |
| 615 | 1.5.1.4 | Go Live | 1d | 2025-07-10 | 2025-07-10 | 608 | 1195d | 0d | TE & HBT |
| 616 | 1.5.1.5 | **Stabilization** | 22d | 2025-07-11 | 2025-08-11 |  | 1195d |  |  |
| 617 | 1.5.1.5.1 | Hand holding & issue resolution | 22d | 2025-07-11 | 2025-08-11 | 615 | 1195d | 0d | HBT |
| 618 | 1.5.1.5.2 | **Deliverables** | 21d | 2025-07-11 | 2025-08-08 |  | 1196d |  |  |
| 619 | 1.5.1.5.2.1 | D: Issue list with resolution status | 21d | 2025-07-11 | 2025-08-08 | 617SS | 1196d |  | HBT |
| 620 | 1.5.1.5.2.2 | D: Configuration documents | 21d | 2025-07-11 | 2025-08-08 | 617SS | 1196d |  | HBT |
| 621 | 1.5.1.5.2.3 | D: FS & TS | 21d | 2025-07-11 | 2025-08-08 | 617SS | 1196d |  | HBT |
| 622 | 1.5.1.5.2.4 | D: Core team training document | 21d | 2025-07-11 | 2025-08-08 | 617SS | 1196d |  | HBT |
