# ESAG Project Plan_V1_Final

Schedule from MS Project, 2024-10-20 to 2025-01-12, status date 2024-02-19, A marks actual dates.

## Calendars

- Copy of Standard-AAI: Mon-Fri 08:00-12:00, 13:00-17:00; Sat-Sun off. Exceptions (off unless hours are given): 2024-02-17 to 2028-10-07 (SAT, recurring), 2024-02-18 to 2029-02-18 (Sunday, recurring).
- ESAG Calender: Mon-Thu 08:00-12:00, 13:00-17:00; Fri-Sat off; Sun 08:00-18:00.
- Night Shift: Mon 23:00-24:00; Tue-Fri 00:00-03:00, 04:00-08:00, 23:00-24:00; Sat 00:00-03:00, 04:00-08:00; Sun off.

## Schedule

| ID | WBS | Task | Type | Duration | Start | Finish | Predecessors | Complete | Remaining | Baseline 1 start | Baseline 1 finish | Total slack | Free slack | Constraint | Calendar | Responsibilty |
| --- | --- | --- | --- | --- | --- | --- | --- | --- | --- | --- | --- | --- | --- | --- | --- | --- |
| 1 | 1 | **Improvements in SAP REFX & FI at OSHCO** |  | 63d | 2024-10-20 A | 2025-01-12 |  | 32% | 42.76d | 2023-08-24 | 2024-07-08 | 0d |  |  |  |  |
| 2 | 1.1 | **Phase 1 : Improvements in SAP REFX & FI** |  | 63d | 2024-10-20 A | 2025-01-12 |  | 32% | 42.76d | 2023-08-24 | 2024-07-08 | 0d |  |  |  |  |
| 3 | 1.1.1 | **Implementation** |  | 60d | 2024-10-20 A | 2025-01-12 |  | 32% | 40.72d | 2023-08-24 | 2024-07-08 | 0d |  |  | Copy of Standard-AAI |  |
| 4 | 1.1.1.1 | **Prepare** |  | 1d | 2024-10-20 A | 2024-10-22 |  | 60% | 0.4d | 2023-08-24 | 2024-03-02 | 59d |  |  | Night Shift |  |
| 5 | 1.1.1.1.1 | **Project Plan** |  | 1.88d | 2024-10-21 A | 2024-10-22 |  | 33% | 1.25d | 2023-08-24 | 2024-02-28 | 61d |  |  |  |  |
| 6 | 1.1.1.1.1.1 | Prepare & submit Initial project plan |  | 0.5d | 2024-10-21 A | 2024-10-21 A |  | 100% |  | 2024-02-25 | 2024-02-25 |  |  | start no earlier than 2024-10-21 |  | HBT |
| 7 | 1.1.1.1.1.2 | Apporval of project plan by OSHCO |  | 1d | 2024-10-21 | 2024-10-22 | 11 |  |  | 2023-08-24 | 2024-02-28 | 61d |  |  |  | OSHCO |
| 8 | 1.1.1.1.2 | **Kick Off** |  | 1d | 2024-10-20 A | 2024-10-21 A |  | 100% |  | 2024-02-26 | 2024-02-28 |  |  |  |  |  |
| 9 | 1.1.1.1.2.1 | Prepare kickoff presentation in consultation with OSHCO | milestone | 0d | 2024-10-20 A | 2024-10-20 A | 6 | 100% |  | 2024-02-26 | 2024-02-26 |  |  | must finish on 2024-10-20 |  | HBT |
| 10 | 1.1.1.1.2.2 | Review & finalize kickoff presentation | milestone | 0d | 2024-10-20 A | 2024-10-20 A | 9 | 100% |  | 2024-02-27 | 2024-02-27 |  |  |  |  | OSHCO |
| 11 | 1.1.1.1.2.3 | Project Kick off with Key stakeholders |  | 1d | 2024-10-20 A | 2024-10-21 A | 10 | 100% |  | 2024-02-28 | 2024-02-28 |  |  |  |  | OSHCO & HBT |
| 12 | 1.1.1.2 | **System Access & Team Mobilisation** |  | 7d | 2024-10-21 A | 2024-10-30 |  | 50% | 3.5d |  |  | 55d |  |  |  |  |
| 13 | 1.1.1.2.1 | System Access |  | 5d | 2024-10-21 A | 2024-10-28 A | 11 | 100% |  |  |  |  |  |  |  |  |
| 14 | 1.1.1.2.2 | Team Mobilisatoin |  | 5d | 2024-10-21 A | 2024-10-28 A | 11 | 100% |  |  |  |  |  |  |  |  |
| 15 | 1.1.1.2.3 | **Deliverables** |  | 3d | 2024-10-21 | 2024-10-24 |  |  |  | 2024-02-28 | 2024-02-29 | 55d |  |  |  |  |
| 16 | 1.1.1.2.3.1 | D: Baseline Project Plan |  | 3d | 2024-10-21 | 2024-10-24 | 11 |  |  | 2024-02-28 | 2024-02-28 | 59d |  |  |  | HBT |
| 17 | 1.1.1.2.3.2 | D: Project kickoff presentation |  | 3d | 2024-10-21 | 2024-10-24 | 11 |  |  | 2024-02-29 | 2024-02-29 | 55d | 0d |  |  | HBT |
| 18 | 1.1.1.2.4 | **Milestone Approval & Sign Off** |  | 4d | 2024-10-24 | 2024-10-30 |  |  |  | 2024-03-05 | 2024-03-05 | 55d |  |  |  |  |
| 19 | 1.1.1.2.4.1 | Completion of Resource Mobilization & Project Kick off |  | 4d | 2024-10-24 | 2024-10-30 | 17 |  |  |  |  | 55d |  |  |  |  |
| 20 | 1.1.1.3 | **Explore** |  | 18d | 2024-10-30 A | 2024-11-24 |  | 75% | 4.59d | 2024-02-29 | 2024-04-20 | 37d |  |  |  |  |
| 21 | 1.1.1.3.1 | **Finlaisation of Solution Approach** |  | 18d | 2024-10-30 A | 2024-11-24 |  | 75% | 4.59d | 2024-03-09 | 2024-04-20 | 37d |  |  |  |  |
| 22 | 1.1.1.3.1.1 | **Process & System Evaluation** |  | 7d | 2024-10-30 A | 2024-11-10 A |  | 100% |  | 2024-03-14 | 2024-04-17 |  |  |  |  |  |
| 23 | 1.1.1.3.1.1.1 | **Understaning Process Gaps** |  | 7d | 2024-10-30 A | 2024-11-10 A |  | 100% |  | 2024-03-14 | 2024-03-21 |  |  |  |  |  |
| 24 | 1.1.1.3.1.1.1.1 | Contract Analysis |  | 7d | 2024-10-30 A | 2024-11-10 A | 19 | 100% |  |  |  |  |  |  |  | HBT |
| 25 | 1.1.1.3.1.1.1.2 | Asset posting Scenarios |  | 7d | 2024-10-30 A | 2024-11-10 A | 19 | 100% |  |  |  |  |  |  |  | HBT |
| 26 | 1.1.1.3.1.1.1.3 | FI Entries GAP analasis |  | 7d | 2024-10-30 A | 2024-11-10 A | 19 | 100% |  |  |  |  |  |  |  | HBT |
| 27 | 1.1.1.3.1.1.1.4 | System & Configuration Study |  | 7d | 2024-10-30 A | 2024-11-10 A | 19 | 100% |  | 2024-04-03 | 2024-04-07 |  |  |  |  | HBT |

| ID | WBS | Task | Duration | Start | Finish | Predecessors | Complete | Remaining | Baseline 1 start | Baseline 1 finish | Total slack | Free slack | Constraint | Responsibilty |
| --- | --- | --- | --- | --- | --- | --- | --- | --- | --- | --- | --- | --- | --- | --- |
| 28 | 1.1.1.3.1.2 | **Soltution Approach Documentation** | 10d | 2024-11-10 A | 2024-11-21 |  | 53% | 4.74d |  |  | 38d |  |  |  |
| 29 | 1.1.1.3.1.2.1 | Preaparatoin of Solution Document & Submission | 7d | 2024-11-10 A | 2024-11-18 | 27 | 70% | 2.1d |  |  | 1d | 0d |  | HBT |
| 30 | 1.1.1.3.1.2.2 | Finalisation of FRICEW List | 7d | 2024-11-10 A | 2024-11-18 | 27 | 50% | 3.5d | 2024-04-15 | 2024-04-15 | 41d |  |  | HBT |
| 31 | 1.1.1.3.1.2.3 | Discussion of Solution Document with Core Team | 2d | 2024-11-18 A | 2024-11-20 | 29 | 30% | 1.4d |  |  | 39d |  |  | OSHCO & HBT |
| 32 | 1.1.1.3.1.2.4 | Prioritized FRICEW List | 2d | 2024-11-18 A | 2024-11-20 | 29 | 50% | 1d |  |  | 0d |  |  | OSHCO & HBT |
| 33 | 1.1.1.3.1.2.5 | Solution Apporach Document sign off by OSHCO | 1d | 2024-11-20 | 2024-11-21 | 32 |  |  | 2024-04-16 | 2024-04-17 | 0d |  |  | OSHCO |
| 34 | 1.1.1.3.1.3 | **Deliverables** | 1d | 2024-11-21 | 2024-11-24 |  |  |  | 2024-04-18 | 2024-04-20 | 37d |  |  |  |
| 35 | 1.1.1.3.1.3.1 | Solution Document with Gap Analysis | 1d | 2024-11-21 | 2024-11-24 | 33 |  |  | 2024-04-18 | 2024-04-18 | 37d |  |  | HBT |
| 36 | 1.1.1.3.1.3.2 | **Milestone Approval & Sign Off** | 1d | 2024-11-21 | 2024-11-24 |  |  |  | 2024-03-05 | 2024-03-05 | 37d |  |  |  |
| 37 | 1.1.1.3.1.3.2.1 | Deploy phase signoff | 1d | 2024-11-21 | 2024-11-24 | 33 |  |  | 2024-03-05 | 2024-03-05 | 37d |  |  | OSHCO |
| 38 | 1.1.1.3.1.3.2.2 | Completion of Final Preparation (Deploy) Phase | 1d | 2024-11-21 | 2024-11-24 | 33 |  |  | 2024-03-05 | 2024-03-05 | 37d |  | finish no earlier than 2024-02-20 | OSHCO |
| 39 | 1.1.1.3.1.3.2.3 | Completion of Explore Phase | 1d | 2024-11-21 | 2024-11-24 | 33 |  |  |  |  | 37d |  |  | OSHCO |
| 40 | 1.1.1.4 | **Realize** | 13d | 2024-11-21 A | 2024-12-10 |  | 8% | 11.96d | 2024-04-18 | 2024-06-13 | 25d |  |  |  |
| 41 | 1.1.1.4.1 | **UAT** | 13d | 2024-11-21 A | 2024-12-10 |  | 9% | 11.79d | 2024-05-16 | 2024-06-11 | 25d |  |  |  |
| 42 | 1.1.1.4.1.1 | **Scenario Maping & Testing** | 8d | 2024-11-21 A | 2024-12-03 |  | 13% | 7d | 2024-05-16 | 2024-05-19 | 30d |  |  |  |
| 43 | 1.1.1.4.1.1.1 | **Testing of REFX & FI scenarios in QA client** | 8d | 2024-11-21 A | 2024-12-03 |  | 13% | 7d | 2024-05-16 | 2024-05-18 | 30d |  |  | OSHCO & HBT |
| 44 | 1.1.1.4.1.1.1.1 | Asset posting Scenarios | 8d | 2024-11-21 A | 2024-12-03 | 33 | 25% | 6d |  |  | 30d |  |  | OSHCO & HBT |
| 45 | 1.1.1.4.1.1.1.2 | FI Entries GAP analasis | 8d | 2024-11-21 A | 2024-12-03 | 33 | 25% | 6d |  |  | 30d |  |  | OSHCO & HBT |
| 46 | 1.1.1.4.1.1.1.3 | FRICEW FS Document Preparation | 8d | 2024-11-21 | 2024-12-03 | 33 |  |  |  |  | 30d |  |  | HBT |
| 47 | 1.1.1.4.1.1.1.4 | FRICEW Objects developments & testing | 8d | 2024-11-21 | 2024-12-03 | 33 |  |  |  |  | 0d |  |  | HBT |
| 48 | 1.1.1.4.1.2 | **UAT Test** | 5d | 2024-12-03 | 2024-12-10 |  |  |  | 2024-05-27 | 2024-06-11 | 25d |  |  |  |
| 49 | 1.1.1.4.1.2.1 | Perform User Acceptance test - CTM | 3d | 2024-12-03 | 2024-12-08 | 47 |  |  | 2024-05-27 | 2024-06-05 | 25d | 0d |  | OSHCO & HBT |
| 50 | 1.1.1.4.1.2.2 | Resolving the issues, if any | 1d | 2024-12-08 | 2024-12-09 | 49SS+3d |  |  | 2024-05-29 | 2024-06-08 | 25d | 0d |  | HBT |
| 51 | 1.1.1.4.1.2.3 | UAT (by CTM) signoff | 1d | 2024-12-09 | 2024-12-10 | 50 |  |  | 2024-06-11 | 2024-06-11 | 25d |  |  | OSHCO |

| ID | WBS | Task | Type | Duration | Start | Finish | Predecessors | Baseline 1 start | Baseline 1 finish | Total slack | Constraint | Responsibilty |
| --- | --- | --- | --- | --- | --- | --- | --- | --- | --- | --- | --- | --- |
| 52 | 1.1.1.4.1.3 | **Data Migration Strategy** |  | 3d | 2024-11-21 | 2024-11-26 |  |  |  | 35d |  |  |
| 53 | 1.1.1.4.1.3.1 | Prepartion Data Migration Documenation & Submission |  | 3d | 2024-11-21 | 2024-11-26 | 33 |  |  | 35d |  |  |
| 54 | 1.1.1.4.1.3.2 | Dicussion & Finalsation on Data Migration |  | 3d | 2024-11-21 | 2024-11-26 | 33 |  |  | 35d |  |  |
| 55 | 1.1.1.4.2 | **Deliverables** |  | 3d | 2024-12-03 | 2024-12-08 |  | 2024-05-06 | 2024-06-13 | 0d |  |  |
| 56 | 1.1.1.4.2.1 | Test Results Document |  | 3d | 2024-12-03 | 2024-12-08 | 47 | 2024-05-06 | 2024-05-06 | 27d |  | HBT |
| 57 | 1.1.1.4.2.2 | Data migration strategy document |  | 3d | 2024-12-03 | 2024-12-08 | 47 | 2024-06-13 | 2024-06-13 | 0d |  | HBT |
| 58 | 1.1.1.4.3 | **Milestone Approval & Sign Off** |  | 1d | 2024-12-08 | 2024-12-09 |  | 2024-03-05 | 2024-03-05 | 26d |  |  |
| 59 | 1.1.1.4.3.1 | Completion of Unit/Integration testing by Core team & Realization phase completion |  | 1d | 2024-12-08 | 2024-12-09 | 57 |  |  | 26d |  | OSHCO & HBT |
| 60 | 1.1.1.5 | **Deploy** |  | 4d | 2024-12-08 | 2024-12-12 |  | 2024-02-25 | 2024-07-08 | 0d |  |  |
| 61 | 1.1.1.5.1 | **Production Environment Preparation** |  | 2d | 2024-12-08 | 2024-12-10 |  | 2024-06-12 | 2024-06-15 | 0d |  |  |
| 62 | 1.1.1.5.1.1 | Transport Final Requests to Produciton Client |  | 2d | 2024-12-08 | 2024-12-10 | 57 | 2024-06-12 | 2024-06-12 | 0d | finish no earlier than 2024-05-21 | HBT |
| 63 | 1.1.1.5.2 | **Data Migration** |  | 2d | 2024-12-10 | 2024-12-12 |  |  |  | 0d |  |  |
| 64 | 1.1.1.5.2.1 | Data Migraiton / Creation of New Contracts |  | 2d | 2024-12-10 | 2024-12-12 | 62 |  |  | 0d |  |  |
| 65 | 1.1.1.5.3 | Go-live | milestone | 0d | 2024-12-12 | 2024-12-12 | 64 | 2024-03-04 | 2024-03-04 | 0d |  |  |
| 66 | 1.1.1.5.4 | **Deliverables** |  | 2d | 2024-12-10 | 2024-12-12 |  | 2024-05-26 | 2024-06-19 | 23d |  |  |
| 67 | 1.1.1.5.4.1 | D: Data migration plan & checklist |  | 2d | 2024-12-10 | 2024-12-12 | 62 | 2024-05-26 | 2024-05-28 | 23d | finish no earlier than 2024-05-29 | HBT |
| 68 | 1.1.1.5.5 | **Milestone Approval & Sign Off** |  | 1d | 2024-12-10 | 2024-12-11 |  | 2024-03-05 | 2024-03-05 | 24d |  |  |
| 69 | 1.1.1.5.5.1 | Completion of Data Migration |  | 1d | 2024-12-10 | 2024-12-11 | 62 | 2024-03-05 | 2024-03-05 | 24d |  | OSHCO & HBT |
| 70 | 1.1.1.5.5.2 | Completion of Final preparation & Go Live Phase |  | 1d | 2024-12-10 | 2024-12-11 | 62 | 2024-03-05 | 2024-03-05 | 24d |  | OSHCO & HBT |
| 71 | 1.1.1.6 | **Run** |  | 25d | 2024-12-10 | 2025-01-12 |  | 2024-02-25 | 2024-04-03 | 0d |  |  |
| 72 | 1.1.1.6.1 | **Data Updation in Production Cleint** |  | 12d | 2024-12-10 | 2024-12-25 |  | 2024-02-25 | 2024-06-04 | 13d |  |  |
| 73 | 1.1.1.6.1.1 | Data updation & Validation in production |  | 12d | 2024-12-10 | 2024-12-25 | 62 | 2024-02-26 | 2024-03-02 | 13d |  | OSHCO & HBT |
| 74 | 1.1.1.6.2 | Handholding & Issue Resolution |  | 20d | 2024-12-12 | 2025-01-08 | 65SS | 2024-03-05 | 2024-04-02 | 0d | finish no earlier than 2024-06-28 | HBT |
| 75 | 1.1.1.6.3 | Phase Sign off - Run Phase |  | 1d | 2025-01-08 | 2025-01-09 | 74 | 2024-04-03 | 2024-04-03 | 0d | finish no earlier than 2024-07-01 | OSHCO |

| ID | WBS | Task | Duration | Start | Finish | Predecessors | Baseline 1 start | Baseline 1 finish | Total slack | Constraint | Responsibilty |
| --- | --- | --- | --- | --- | --- | --- | --- | --- | --- | --- | --- |
| 76 | 1.1.1.6.4 | **Deliverables** | 1d | 2025-01-09 | 2025-01-12 |  | 2024-02-25 | 2024-03-25 | 0d |  |  |
| 77 | 1.1.1.6.4.1 | D: Issue list with resolution status | 1d | 2025-01-09 | 2025-01-12 | 75 | 2024-02-25 | 2024-03-25 | 0d | finish no earlier than 2024-06-28 | HBT |
| 78 | 1.1.1.6.5 | **Milestone Approval & Sign Off** | 1d | 2025-01-12 | 2025-01-12 |  | 2024-03-05 | 2024-03-05 | 0d |  |  |
| 79 | 1.1.1.6.5.1 | Completion of Post Go Live Support | 1d | 2025-01-12 | 2025-01-12 | 77 | 2024-03-05 | 2024-03-05 | 0d |  | OSHCO |
