# Project_Plan_13-12-2024

Schedule from MS Project, 2024-09-13 to 2026-05-25, status date 2021-09-23, 9 hours a day, A marks actual dates.

## Calendars

- Copy of Standard: Mon-Fri 09:00-18:00; Sat-Sun off.

## Schedule

| ID | WBS | Task | Type | Duration | Start | Finish | Predecessors | Complete | Remaining | Actual start | Baseline start | Baseline finish | Baseline duration | Baseline 1 start | Baseline 1 finish | Total slack | Constraint | Primery Responsibility | Core Team | HOD | Management |
| --- | --- | --- | --- | --- | --- | --- | --- | --- | --- | --- | --- | --- | --- | --- | --- | --- | --- | --- | --- | --- | --- |
| 1 | 1 | **Rise with SAP S/4 HANA Private Cloud Implementation** |  | 442d | 2024-09-13 A | 2026-05-25 |  | 16% | 372.94d |  | 2024-09-13 | 2026-04-07 | 408d | 2020-02-10 | 2021-03-08 | 0d |  |  |  |  |  |
| 2 | 1.1 | **Wave 1A: SAP S/4 HANA Solutions Implementation:** |  | 116d | 2024-09-25 | 2025-03-05 |  | 36% | 74.8d | 2024-09-13 | 2024-09-25 | 2025-03-05 | 116d |  |  |  |  |  |  |  |  |
| 3 | 1.1.1 | **Prepare Phase** |  | 14d | 2024-09-13 A | 2024-10-02 A |  | 100% |  |  | 2024-09-13 | 2024-10-02 | 14d | 2020-02-10 | 2020-03-04 |  |  | HBT & DRAIPL | 100% | 10% | 5% |
| 4 | 1.1.1.1 | **Kick Off** |  | 1d | 2024-09-13 A | 2024-09-13 A |  | 100% |  |  | 2024-09-13 | 2024-09-13 | 1d |  |  |  |  |  |  |  |  |
| 5 | 1.1.1.1.1 | Prepare kickoff presentation in consultation with TE | manual | 1d | 2024-09-13 A | 2024-09-13 A |  | 100% |  |  | 2024-09-13 | 2024-09-13 | 1d |  |  |  | start no earlier than 2024-09-13 | HBT |  |  |  |
| 6 | 1.1.1.1.2 | Review & finalize kickoff presentation | manual | 1d | 2024-09-13 A | 2024-09-13 A | 5 | 100% |  |  | 2024-09-13 | 2024-09-13 | 1d |  |  |  |  | DRAIPL | 100% | 10% | 5% |
| 7 | 1.1.1.1.3 | Project Kick off with Key stakeholders | manual | 1d | 2024-09-13 A | 2024-09-13 A | 6FF | 100% |  |  | 2024-09-13 | 2024-09-13 | 1d |  |  |  |  | DRAIPL | 100% | 10% | 5% |
| 8 | 1.1.1.2 | **Project Plan** |  | 4d | 2024-09-16 A | 2024-09-19 A | 5SS | 100% |  |  | 2024-09-16 | 2024-09-19 | 4d |  |  |  |  |  |  |  |  |
| 9 | 1.1.1.2.1 | Prepare & submit Initial project plan | manual | 1d | 2024-09-16 A | 2024-09-16 A |  | 100% |  |  | 2024-09-16 | 2024-09-16 | 1d |  |  |  | start no earlier than 2024-09-16 | HBT | 100% |  |  |
| 10 | 1.1.1.2.2 | Review project plan |  | 2d | 2024-09-16 A | 2024-09-17 A | 9SS+1d | 100% |  |  | 2024-09-16 | 2024-09-17 | 2d |  |  |  | must start on 2024-09-16 | DRAIPL | 100% | 10% |  |
| 11 | 1.1.1.2.3 | Make necessary changes in the plan | manual | 1d | 2024-09-18 A | 2024-09-18 A | 10 | 100% |  |  | 2024-09-18 | 2024-09-18 | 1d |  |  |  | start no earlier than 2024-09-18 | HBT |  |  | 5% |
| 12 | 1.1.1.2.4 | Final submission of Project Plan | manual | 1d | 2024-09-18 A | 2024-09-18 A |  | 100% |  |  | 2024-09-18 | 2024-09-18 | 1d |  |  |  |  | HBT |  |  | 5% |
| 13 | 1.1.1.2.5 | Project Plan Signoff | manual | 1d | 2024-09-19 A | 2024-09-19 A |  | 100% |  |  | 2024-09-19 | 2024-09-19 | 1d |  |  |  |  | DRAIPL |  |  |  |
| 14 | 1.1.1.3 | **SAP Onbaording** |  | 9d | 2024-09-13 A | 2024-09-25 A | 5SS | 100% |  |  | 2024-09-13 | 2024-09-25 | 9d |  |  |  |  |  |  |  | 5% |
| 15 | 1.1.1.3.1 | SAP Onboarding | manual | 1d | 2024-09-13 A | 2024-09-13 A | 5 | 100% |  |  | 2024-09-13 | 2024-09-13 | 1d |  |  |  |  | HBT |  |  |  |
| 16 | 1.1.1.3.2 | Sharing S User ID with HBT Team | manual | 1d | 2024-09-25 A | 2024-09-25 A |  | 100% |  |  | 2024-09-25 | 2024-09-25 | 1d |  |  |  |  | DRAIPL |  |  |  |
| 17 | 1.1.1.4 | **As-Is** |  | 6d | 2024-09-17 A | 2024-09-24 A |  | 100% |  |  | 2024-09-17 | 2024-09-24 | 6d |  |  |  |  |  |  |  |  |
| 18 | 1.1.1.4.1 | Submit of As-Is Template | manual | 1d | 2024-09-17 A | 2024-09-17 A |  | 100% |  |  | 2024-09-17 | 2024-09-17 | 1d |  |  |  |  | HBT |  |  |  |
| 19 | 1.1.1.4.2 | Preparation of AS-IS template by DRAIPL core team |  | 5d | 2024-09-18 A | 2024-09-24 A |  | 100% |  |  | 2024-09-18 | 2024-09-24 | 5d |  |  |  | must start on 2024-09-18 | DRAIPL |  |  |  |
| 20 | 1.1.1.5 | **Mobilization of Team** |  | 1d | 2024-09-25 A | 2024-09-25 A |  | 100% |  |  | 2024-09-25 | 2024-09-25 | 1d |  |  |  |  |  |  |  |  |
| 21 | 1.1.1.5.1 | HBT Team mobilization |  | 1d | 2024-09-25 A | 2024-09-25 A |  | 100% |  |  | 2024-09-25 | 2024-09-25 | 1d |  |  |  |  | HBT |  |  |  |
| 22 | 1.1.1.5.2 | DRAIPL team mobilization |  | 1d | 2024-09-25 A | 2024-09-25 A |  | 100% |  |  | 2024-09-25 | 2024-09-25 | 1d |  |  |  |  | DRAIPL |  |  |  |
| 23 | 1.1.1.6 | **Project Governance** |  | 1d | 2024-10-02 A | 2024-10-02 A |  | 100% |  |  | 2024-10-02 | 2024-10-02 | 1d |  |  |  |  |  |  |  |  |
| 24 | 1.1.1.6.1 | Finalize deliverable signoff matrix | manual | 1d | 2024-10-02 A | 2024-10-02 A |  | 100% |  |  | 2024-10-02 | 2024-10-02 | 1d |  |  |  | start no earlier than 2024-09-25 | HBT & DRAIPL | 100% | 10% | 5% |

| ID | WBS | Task | Type | Duration | Start | Finish | Predecessors | Complete | Remaining | Baseline start | Baseline finish | Baseline duration | Baseline 1 start | Baseline 1 finish | Total slack | Constraint | Primery Responsibility | Core Team | HOD | Management |
| --- | --- | --- | --- | --- | --- | --- | --- | --- | --- | --- | --- | --- | --- | --- | --- | --- | --- | --- | --- | --- |
| 25 | 1.1.1.7 | **Deliverables** |  | 2d | 2024-09-18 A | 2024-09-19 A |  | 100% |  | 2024-09-18 | 2024-09-19 | 2d |  |  |  |  |  |  |  |  |
| 26 | 1.1.1.7.1 | D: Project Plan | milestone | 0d | 2024-09-19 A | 2024-09-19 A | 7 | 100% |  | 2024-09-19 | 2024-09-19 | 0d |  |  |  | must finish on 2024-09-19 | HBT |  |  |  |
| 27 | 1.1.1.7.2 | D: Kick off PPT | milestone | 0d | 2024-09-18 A | 2024-09-18 A |  | 100% |  | 2024-09-18 | 2024-09-18 | 0d |  |  |  | must start on 2024-09-18 | HBT |  |  |  |
| 28 | 1.1.1.8 | **Key milestones** |  | 3d | 2024-09-25 A | 2024-09-27 A |  | 100% |  | 2024-09-25 | 2024-09-27 | 3d |  |  |  |  |  |  |  |  |
| 29 | 1.1.1.8.1 | Prepare Phase Sign-off |  | 3d | 2024-09-25 A | 2024-09-27 A |  | 100% |  | 2024-09-25 | 2024-09-27 | 3d |  |  |  |  | HBT & DRAIPL |  |  |  |
| 30 | 1.1.2 | **Explore Phase** |  | 69d | 2024-09-25 A | 2024-12-30 |  | 88% | 8.56d | 2024-09-25 | 2024-11-11 | 34d |  |  | 47d |  | HBT & DRAIPL | 100% | 15% | 5% |
| 31 | 1.1.2.1 | **Prerequisite** |  | 0d | 2024-09-25 A | 2024-09-25 A |  | 100% |  | 2024-09-25 | 2024-09-25 | 0d | 2020-02-27 | 2020-05-28 |  |  |  |  |  |  |
| 32 | 1.1.2.1.1 | Onboarding of OEM for Integration | milestone | 0d | 2024-09-25 A | 2024-09-25 A |  | 100% |  | 2024-09-25 | 2024-09-25 | 0d | 2020-02-27 | 2020-03-11 |  |  | DRAIPL | 100% | 15% | 5% |
| 33 | 1.1.2.2 | **Requirement gathering** |  | 3d | 2024-09-26 A | 2024-09-30 A |  | 100% |  | 2024-09-26 | 2024-09-30 | 3d |  |  |  |  |  |  |  |  |
| 34 | 1.1.2.2.1 | AS IS document walkthrough by DRAIPL |  | 3d | 2024-09-26 A | 2024-09-30 A |  | 100% |  | 2024-09-26 | 2024-09-30 | 3d |  |  |  | must start on 2024-09-26 | DRAIPL | 100% | 15% |  |
| 35 | 1.1.2.3 | **Level 1 training - L1 (SAP Overview)** |  | 2d | 2024-10-01 A | 2024-10-02 A |  | 100% |  | 2024-10-01 | 2024-10-02 | 2d |  |  |  |  |  |  |  |  |
| 36 | 1.1.2.3.1 | Core Team Training Document |  | 1d | 2024-10-01 A | 2024-10-01 A | 34 | 100% |  | 2024-10-01 | 2024-10-01 | 1d |  |  |  |  | HBT |  |  |  |
| 37 | 1.1.2.3.2 | Conducting SAP Overview - L1 Training |  | 1d | 2024-10-02 A | 2024-10-02 A | 36 | 100% |  | 2024-10-02 | 2024-10-02 | 1d |  |  |  |  | HBT | 100% | 15% |  |
| 38 | 1.1.2.4 | **Business Process definition** |  | 56d | 2024-10-11 A | 2024-12-27 A |  | 100% |  | 2024-10-03 | 2024-11-11 | 28d |  |  |  |  |  |  |  |  |
| 39 | 1.1.2.4.1 | **Enterprise structure** |  | 51d | 2024-10-11 A | 2024-12-22 A |  | 100% |  | 2024-10-03 | 2024-10-11 | 7d |  |  |  |  |  |  |  |  |
| 40 | 1.1.2.4.1.1 | Define Org structure |  | 3d | 2024-10-11 A | 2024-10-15 A | 37 | 100% |  | 2024-10-03 | 2024-10-04 | 2d |  |  |  |  | HBT & DRAIPL | 100% | 15% |  |
| 41 | 1.1.2.4.1.2 | Review & discuss Org Structure with Client |  | 4.5d | 2024-10-11 A | 2024-10-19 A | 40 | 100% |  | 2024-10-07 | 2024-10-08 | 2d |  |  |  |  | DRAIPL | 100% | 15% |  |
| 42 | 1.1.2.4.1.3 | Incorporate changes suggested by Client |  | 18d | 2024-10-21 A | 2024-11-13 A | 41 | 100% |  | 2024-10-09 | 2024-10-09 | 1d |  |  |  |  | HBT |  |  |  |
| 43 | 1.1.2.4.1.4 | Workshop for As-Is and Org Structure |  | 27d | 2024-10-15 A | 2024-12-22 A | 42 | 100% |  | 2024-10-10 | 2024-10-10 | 1d |  |  |  |  | DRAIPL | 100% | 15% |  |
| 44 | 1.1.2.4.1.5 | Sign off on Org structure | milestone | 0d | 2024-12-07 A | 2024-12-07 A | 43 | 100% |  | 2024-10-11 | 2024-10-11 | 1d |  |  |  |  | DRAIPL | 100% | 15% |  |
| 45 | 1.1.2.4.2 | **Business Blueprint** |  | 56d | 2024-10-11 A | 2024-12-27 A | 44SS | 100% |  | 2024-10-07 | 2024-11-11 | 26d |  |  |  |  |  |  |  |  |
| 46 | 1.1.2.4.2.1 | Listing of end to end business process | manual | 39d | 2024-10-11 A | 2024-12-04 A |  | 100% |  | 2024-10-07 | 2024-10-08 | 2d |  |  |  |  | HBT | 100% |  |  |
| 47 | 1.1.2.4.2.2 | Prepare Business blueprint document , KDS & Submit | manual | 39d | 2024-10-11 A | 2024-12-04 A | 46 | 100% |  | 2024-10-09 | 2024-10-23 | 11d |  |  |  | start no earlier than 2024-10-07 | HBT | 100% | 15% |  |
| 48 | 1.1.2.4.2.3 | Review & discuss BBP with CTM |  | 38d | 2024-10-12 A | 2024-12-04 A | 47 | 100% |  | 2024-10-24 | 2024-11-01 | 7d |  |  |  |  | DRAIPL | 100% |  |  |
| 49 | 1.1.2.4.2.4 | Review Gap analysis & propose workaround | milestone | 0d | 2024-12-04 A | 2024-12-04 A | 48SS | 100% |  | 2024-10-24 | 2024-10-25 | 2d |  |  |  |  | HBT |  |  |  |
| 50 | 1.1.2.4.2.5 | Identify development requirement | milestone | 0d | 2024-12-04 A | 2024-12-04 A | 48SS | 100% |  | 2024-10-24 | 2024-10-25 | 2d |  |  |  |  | HBT & DRAIPL | 100% |  |  |
| 51 | 1.1.2.4.2.6 | Finalize FRICE List |  | 10d | 2024-12-09 A | 2024-12-21 A | 48SS | 100% |  | 2024-10-24 | 2024-10-25 | 2d |  |  |  |  | HBT & DRAIPL | 100% | 15% |  |
| 52 | 1.1.2.4.2.7 | Prioritisation of FRICE objects (UAT, Go-lIve & Post Go-live) |  | 10d | 2024-12-09 A | 2024-12-21 A | 51SS | 100% |  | 2024-10-24 | 2024-10-25 | 2d |  |  |  |  | DRAIPL | 100% | 15% |  |
| 53 | 1.1.2.4.2.8 | Acceptance of FRICE objects Prioritisation |  | 10d | 2024-12-09 A | 2024-12-21 A | 51SS | 100% |  | 2024-10-24 | 2024-10-25 | 2d |  |  |  |  | DRAIPL | 100% | 15% |  |
| 54 | 1.1.2.4.2.9 | Incorporate changes suggested |  | 12d | 2024-12-04 A | 2024-12-21 A | 49 | 100% |  | 2024-10-28 | 2024-10-28 | 1d |  |  |  |  | HBT & DRAIPL |  | 15% |  |
| 55 | 1.1.2.4.2.10 | Final Submission of BBP | milestone | 0d | 2024-12-04 A | 2024-12-04 A | 48 | 100% |  | 2024-11-04 | 2024-11-04 | 1d |  |  |  |  | HBT |  |  |  |
| 56 | 1.1.2.4.2.11 | Prepare for Workshop |  | 8d | 2024-12-07 A | 2024-12-18 A | 55 | 100% |  | 2024-11-05 | 2024-11-06 | 2d |  |  |  |  |  |  |  |  |
| 57 | 1.1.2.4.2.12 | BBP solution workshop |  | 14d | 2024-12-07 A | 2024-12-26 A | 56 | 100% |  | 2024-11-07 | 2024-11-07 | 1d |  |  |  |  | HBT |  |  | 5% |
| 58 | 1.1.2.4.2.13 | BBP sign off |  | 15d | 2024-12-09 A | 2024-12-27 A | 57SS | 100% |  | 2024-11-07 | 2024-11-11 | 3d |  |  |  |  | DRAIPL | 100% | 15% |  |

| ID | WBS | Task | Type | Duration | Start | Finish | Predecessors | Complete | Remaining | Baseline start | Baseline finish | Baseline duration | Total slack | Free slack | Primery Responsibility | Core Team | HOD | Management |
| --- | --- | --- | --- | --- | --- | --- | --- | --- | --- | --- | --- | --- | --- | --- | --- | --- | --- | --- |
| 59 | 1.1.2.5 | **Third Party System Integration** |  | 35d | 2024-10-04 A | 2024-11-21 |  | 41% | 20.62d | 2024-10-03 | 2024-10-25 | 17d | 74d |  |  |  |  |  |
| 60 | 1.1.2.5.1 | Onboarding of OEM for integration design finalization |  | 1d | 2024-10-11 | 2024-10-11 | 40SS |  |  | 2024-10-03 | 2024-10-03 | 1d | 103d |  | DRAIPL | 100% | 15% |  |
| 61 | 1.1.2.5.2 | Receipt of Plan from Third Party Application Partner |  | 2d | 2024-10-11 | 2024-10-14 | 40SS |  |  | 2024-10-03 | 2024-10-04 | 2d | 101d | 0d | DRAIPL | 100% | 15% |  |
| 62 | 1.1.2.5.3 | Alignment of the project plan with the TPA Plan |  | 1d | 2024-10-15 | 2024-10-15 | 61 |  |  | 2024-10-07 | 2024-10-07 | 1d | 101d |  | DRAIPL | 100% | 15% |  |
| 63 | 1.1.2.5.4 | Intergration Touch points Discussion for Weighbridge |  | 6d | 2024-11-05 A | 2024-11-12 A | 47SS | 100% |  | 2024-10-09 | 2024-10-18 | 8d |  |  | HBT & DRAIPL | 100% |  |  |
| 64 | 1.1.2.5.5 | Intergration Touch points Discussion for Banks |  | 8d | 2024-11-05 | 2024-11-14 | 63SS |  |  | 2024-10-09 | 2024-10-18 | 8d | 79d |  | HBT & DRAIPL | 100% |  |  |
| 65 | 1.1.2.5.6 | Intergration Touch points Discussion for LivSyt |  | 17d | 2024-10-04 A | 2024-11-04 A | 63SS | 100% |  | 2024-10-09 | 2024-10-18 | 8d |  |  | HBT & DRAIPL | 100% |  |  |
| 66 | 1.1.2.5.7 | Intergration Touch points Discussion for ASP/GSP |  | 8d | 2024-11-05 | 2024-11-14 | 63SS |  |  | 2024-10-09 | 2024-10-18 | 8d | 79d |  | HBT & DRAIPL | 100% |  |  |
| 67 | 1.1.2.5.8 | Intergration Touch points Discussion for Payroll |  | 8d | 2024-11-05 | 2024-11-14 | 63SS |  |  | 2024-10-09 | 2024-10-18 | 8d | 0d |  | HBT & DRAIPL | 100% |  |  |
| 68 | 1.1.2.5.9 | Integration Design Document |  | 2d | 2024-10-22 A | 2024-11-18 | 67 |  | 2d | 2024-10-21 | 2024-10-22 | 2d | 74d | 0d | HBT |  |  |  |
| 69 | 1.1.2.5.10 | Integration Design Document Sign Off |  | 3d | 2024-11-19 | 2024-11-21 | 68 |  |  | 2024-10-23 | 2024-10-25 | 3d | 74d |  | DRAIPL | 100% | 15% |  |
| 70 | 1.1.2.6 | **Master Data Statergy** |  | 2d | 2024-12-27 | 2024-12-30 |  |  |  | 2024-11-08 | 2024-11-11 | 2d | 47d |  |  |  |  |  |
| 71 | 1.1.2.6.1 | Identify master data requirement as per the BBP & Gaps |  | 2d | 2024-12-27 | 2024-12-30 | 57 |  |  | 2024-11-08 | 2024-11-11 | 2d | 47d |  | HBT & DRAIPL | 100% |  |  |
| 72 | 1.1.2.6.2 | Prepare & explain master data template as per the BBP & Gaps |  | 2d | 2024-12-27 | 2024-12-30 | 57 |  |  | 2024-11-08 | 2024-11-11 | 2d | 47d |  | HBT | 100% |  |  |
| 73 | 1.1.2.6.3 | Circulate master data template as per the BBP & Gaps |  | 2d | 2024-12-27 | 2024-12-30 | 57 |  |  | 2024-11-08 | 2024-11-11 | 2d | 47d | 0d | HBT | 100% |  |  |
| 74 | 1.1.2.7 | **Deliverables** |  | 64d | 2024-10-01 | 2024-12-30 |  |  |  | 2024-10-01 | 2024-11-11 | 29d | 47d |  |  |  |  |  |
| 75 | 1.1.2.7.1 | D: Business Blueprint with end to end Process flow diagram, Gap Analysis | milestone | 0d | 2024-12-27 | 2024-12-27 | 58 |  |  | 2024-11-11 | 2024-11-11 | 0d | 48d |  | HBT | 100% | 15% |  |
| 76 | 1.1.2.7.2 | D: Core team training document - PPT | milestone | 0d | 2024-10-01 | 2024-10-01 | 36 |  |  | 2024-10-01 | 2024-10-01 | 0d | 111d |  | HBT | 100% |  |  |
| 77 | 1.1.2.7.3 | D: Initial Master data templates | milestone | 0d | 2024-12-30 | 2024-12-30 | 73 |  |  | 2024-11-11 | 2024-11-11 | 0d | 47d |  | HBT | 100% |  |  |
| 78 | 1.1.2.8 | **Milestones** |  | 0d | 2024-12-27 | 2024-12-27 |  |  |  | 2024-11-11 | 2024-11-11 | 0d | -35d | 0d |  |  |  |  |
| 79 | 1.1.2.8.1 | Completion of Business Blueprint & Explore phase sign off | milestone | 0d | 2024-12-27 | 2024-12-27 | 58 |  |  | 2024-11-11 | 2024-11-11 | 0d | -35d | 0d | HBT & DRAIPL | 100% | 15% |  |
| 80 | 1.1.3 | **Realize** |  | 63d | 2024-12-27 | 2025-03-26 |  |  |  | 2024-11-11 | 2025-02-06 | 63d | -34d | 0d |  | 100% | 10% | 3% |
| 81 | 1.1.3.1 | **Preqrequisite** |  | 0d | 2024-12-27 | 2024-12-27 |  |  |  | 2024-11-11 | 2024-11-11 | 0d | 48d |  |  |  |  |  |
| 82 | 1.1.3.1.1 | Availability of Development server for configuration | milestone | 0d | 2024-12-27 | 2024-12-27 | 79 |  |  | 2024-11-11 | 2024-11-11 | 0d | 48d | 0d | DRAIPL |  |  |  |
| 83 | 1.1.3.1.2 | Availability of Third Party Vendor for Development API's | milestone | 0d | 2024-12-27 | 2024-12-27 | 82 |  |  | 2024-11-11 | 2024-11-11 | 0d | 48d |  | DRAIPL | 100% |  |  |
| 84 | 1.1.3.1.3 | Finalized list and availability of End user for training | milestone | 0d | 2024-12-27 | 2024-12-27 | 82 |  |  | 2024-11-11 | 2024-11-11 | 0d | 48d |  | DRAIPL | 100% |  |  |

| ID | WBS | Task | Duration | Start | Finish | Predecessors | Baseline start | Baseline finish | Baseline duration | Total slack | Free slack | Primery Responsibility | Core Team | HOD |
| --- | --- | --- | --- | --- | --- | --- | --- | --- | --- | --- | --- | --- | --- | --- |
| 85 | 1.1.3.2 | **RGS & Functional Specifications(UAT & SIT Critical)** | 5d | 2024-12-31 | 2025-01-06 |  | 2024-11-13 | 2024-11-19 | 5d | -35d | 0d |  |  |  |
| 86 | 1.1.3.2.1 | RGS Preparation | 5d | 2024-12-31 | 2025-01-06 | 79FS+1d | 2024-11-13 | 2024-11-19 | 5d | -35d | 0d | HBT |  |  |
| 87 | 1.1.3.2.2 | RGS Acceptance/Approval | 5d | 2024-12-31 | 2025-01-06 | 86SS | 2024-11-13 | 2024-11-19 | 5d | -35d | 0d | DRAIPL |  |  |
| 88 | 1.1.3.2.3 | Prepare functional specfications | 5d | 2024-12-31 | 2025-01-06 | 87SS | 2024-11-13 | 2024-11-19 | 5d | -35d | 0d | HBT |  |  |
| 89 | 1.1.3.2.4 | Finalize development tracker | 5d | 2024-12-31 | 2025-01-06 | 87SS | 2024-11-13 | 2024-11-19 | 5d | -34d | 0d | HBT |  |  |
| 90 | 1.1.3.3 | **Configure and Validate Baseline** | 8d | 2025-01-07 | 2025-01-16 |  | 2024-11-20 | 2024-11-29 | 8d | -34d | 0d |  |  |  |
| 91 | 1.1.3.3.1 | Configure Processes and Functions in golden master (100) | 8d | 2025-01-07 | 2025-01-16 | 89 | 2024-11-20 | 2024-11-29 | 8d | -34d | 0d | HBT |  |  |
| 92 | 1.1.3.3.2 | Transfer of Configuration to Dev testing | 8d | 2025-01-07 | 2025-01-16 | 91SS | 2024-11-20 | 2024-11-29 | 8d | 34d |  | HBT |  |  |
| 93 | 1.1.3.3.3 | Unit testing-1 (Consultant) | 8d | 2025-01-07 | 2025-01-16 | 91SS | 2024-11-20 | 2024-11-29 | 8d | 34d |  | HBT |  |  |
| 94 | 1.1.3.3.4 | Document and Resolve Issues | 8d | 2025-01-07 | 2025-01-16 | 91SS | 2024-11-20 | 2024-11-29 | 8d | 34d |  | HBT |  |  |
| 95 | 1.1.3.3.5 | Verify Baseline Configuration Completion | 8d | 2025-01-07 | 2025-01-16 | 91SS | 2024-11-20 | 2024-11-29 | 8d | -34d | 0d | HBT |  |  |
| 96 | 1.1.3.4 | **Core team training & UT** | 11d | 2025-01-17 | 2025-01-31 |  | 2024-12-02 | 2024-12-16 | 11d | 21d |  |  |  |  |
| 97 | 1.1.3.4.1 | Plan for Level-2 training (CTM) | 1d | 2025-01-17 | 2025-01-17 | 95 | 2024-12-02 | 2024-12-02 | 1d | 21d | 0d | HBT | 100% |  |
| 98 | 1.1.3.4.2 | Making necessery training arrangement - PPT + tutorial | 2d | 2025-01-20 | 2025-01-21 | 97 | 2024-12-03 | 2024-12-04 | 2d | 21d | 0d | HBT | 100% |  |
| 99 | 1.1.3.4.3 | Conducting Level-2 Training (Module wise) | 8d | 2025-01-22 | 2025-01-31 | 98 | 2024-12-05 | 2024-12-16 | 8d | 21d | 0d | HBT | 100% |  |
| 100 | 1.1.3.5 | **ABAP Development - UAT & SIT critical** | 50d | 2025-01-03 | 2025-03-13 |  | 2024-11-18 | 2025-01-24 | 50d | -35d | 0d |  |  |  |
| 101 | 1.1.3.5.1 | FRICE Developments UAT & SIT critical | 38d | 2025-01-03 | 2025-02-25 | 88SS+3d | 2024-11-18 | 2025-01-08 | 38d | -35d | 0d | HBT |  |  |
| 102 | 1.1.3.5.2 | Testing by consultant | 38d | 2025-01-10 | 2025-03-04 | 101SS+5d | 2024-11-25 | 2025-01-15 | 38d | -6d | 0d | HBT |  |  |
| 103 | 1.1.3.5.3 | Testing by CTM | 5d | 2025-03-05 | 2025-03-11 | 102 | 2025-01-16 | 2025-01-22 | 5d | -6d | 0d | DRAIPL | 100% |  |
| 104 | 1.1.3.5.4 | Observations & Corrections | 5d | 2025-03-07 | 2025-03-13 | 103SS+2d | 2025-01-20 | 2025-01-24 | 5d | -6d | 0d |  |  |  |
| 105 | 1.1.3.5.5 | Sign off Development | 5d | 2025-03-07 | 2025-03-13 | 104SS | 2025-01-20 | 2025-01-24 | 5d | -6d | 0d | DRAIPL | 100% |  |
| 106 | 1.1.3.6 | **Third Party System Integration Development - SIT Critical** | 45d | 2025-01-03 | 2025-03-06 |  | 2024-11-18 | 2025-01-17 | 45d | -35d | 0d |  |  |  |
| 107 | 1.1.3.6.1 | Interface Development - Third Party Application | 38d | 2025-01-03 | 2025-02-25 | 101SS | 2024-11-18 | 2025-01-08 | 38d | 6d |  | DRAIPL | 100% | 10% |
| 108 | 1.1.3.6.2 | Monitor Third Party Application development as per the plan | 38d | 2025-01-03 | 2025-02-25 | 101SS | 2024-11-18 | 2025-01-08 | 38d | 6d |  | DRAIPL | 100% |  |
| 109 | 1.1.3.6.3 | Interface Development - SAP Side | 38d | 2025-01-03 | 2025-02-25 | 101SS | 2024-11-18 | 2025-01-08 | 38d | -35d | 0d | HBT |  |  |
| 110 | 1.1.3.6.4 | Interface Testing by consultant & TPA Partners | 35d | 2025-01-10 | 2025-02-27 | 109SS+5d | 2024-11-25 | 2025-01-10 | 35d | -1d | 0d | HBT & DRAIPL | 100% |  |
| 111 | 1.1.3.6.5 | Interface Testing by CTM | 5d | 2025-02-28 | 2025-03-06 | 110 | 2025-01-13 | 2025-01-17 | 5d | -1d | 0d | DRAIPL | 100% |  |
| 112 | 1.1.3.6.6 | Sign off Development | 5d | 2025-02-28 | 2025-03-06 | 110 | 2025-01-13 | 2025-01-17 | 5d | -1d | 0d | DRAIPL | 100% |  |

| ID | WBS | Task | Duration | Start | Finish | Predecessors | Baseline start | Baseline finish | Baseline duration | Total slack | Free slack | Primery Responsibility | Core Team | HOD |
| --- | --- | --- | --- | --- | --- | --- | --- | --- | --- | --- | --- | --- | --- | --- |
| 113 | 1.1.3.7 | **System Integration Test** | 36d | 2025-01-17 | 2025-03-07 |  | 2024-12-02 | 2025-01-20 | 36d | -34d | 0d |  |  |  |
| 114 | 1.1.3.7.1 | **Integration testing plan** | 5d | 2025-01-17 | 2025-01-23 |  | 2024-12-02 | 2024-12-06 | 5d | -34d | 0d |  |  |  |
| 115 | 1.1.3.7.1.1 | Identify scenerios for Integration test | 3d | 2025-01-17 | 2025-01-21 | 95 | 2024-12-02 | 2024-12-04 | 3d | -34d | 0d | DRAIPL | 100% |  |
| 116 | 1.1.3.7.1.2 | Write scripts for Integration test | 3d | 2025-01-17 | 2025-01-21 | 115SS | 2024-12-02 | 2024-12-04 | 3d | -34d | 0d | HBT |  |  |
| 117 | 1.1.3.7.1.3 | Integration Test Script Acceptance | 2d | 2025-01-22 | 2025-01-23 | 116 | 2024-12-05 | 2024-12-06 | 2d | -34d | 0d | DRAIPL | 100% | 10% |
| 118 | 1.1.3.7.2 | **Conduct System integration test** | 8d | 2025-02-26 | 2025-03-07 |  | 2025-01-09 | 2025-01-20 | 8d | -33d | 0d |  |  |  |
| 119 | 1.1.3.7.2.1 | Perform Integration testing by Consultant | 8d | 2025-02-26 | 2025-03-07 | 109 | 2025-01-09 | 2025-01-20 | 8d | -33d | 0d | HBT |  |  |
| 120 | 1.1.3.8 | **User Roles & Authorization** | 10d | 2025-01-22 | 2025-02-04 |  | 2024-12-05 | 2024-12-18 | 10d | 21d |  |  |  |  |
| 121 | 1.1.3.8.1 | Receipt of Final Authorization Matrix with User List | 5d | 2025-01-22 | 2025-01-28 | 99SS | 2024-12-05 | 2024-12-11 | 5d | 21d | 0d | DRAIPL | 100% | 10% |
| 122 | 1.1.3.8.2 | Role Creation | 5d | 2025-01-29 | 2025-02-04 | 121 | 2024-12-12 | 2024-12-18 | 5d | 21d | 0d | HBT |  |  |
| 123 | 1.1.3.8.3 | Role Testing & User assigning for UAT | 5d | 2025-01-29 | 2025-02-04 | 122SS | 2024-12-12 | 2024-12-18 | 5d | 21d |  | HBT |  |  |
| 124 | 1.1.3.9 | **Cutover Strategy** | 4d | 2025-01-24 | 2025-01-29 |  | 2024-12-09 | 2024-12-12 | 4d | -34d | 0d |  |  |  |
| 125 | 1.1.3.9.1 | Define cutover startegy with core team | 2d | 2025-01-24 | 2025-01-27 | 117 | 2024-12-09 | 2024-12-10 | 2d | -34d | 0d | HBT & DRAIPL |  |  |
| 126 | 1.1.3.9.2 | Finalise cutover strategy with BPO's | 2d | 2025-01-28 | 2025-01-29 | 125 | 2024-12-11 | 2024-12-12 | 2d | -34d | 0d | HBT & DRAIPL |  |  |
| 127 | 1.1.3.10 | **User Acceptance Test - UAT** | 11d | 2025-03-10 | 2025-03-24 |  | 2025-01-21 | 2025-02-04 | 11d | -33d | 0d |  |  |  |
| 128 | 1.1.3.10.1 | Perform User Acceptance test - CTM | 8d | 2025-03-10 | 2025-03-19 | 119 | 2025-01-21 | 2025-01-30 | 8d | -33d | 0d | DRAIPL | 100% |  |
| 129 | 1.1.3.10.2 | Resolving the issues, if any | 8d | 2025-03-10 | 2025-03-19 | 128SS | 2025-01-21 | 2025-01-30 | 8d | -33d | 0d | HBT |  |  |
| 130 | 1.1.3.10.3 | Retesting of scenarios | 3d | 2025-03-20 | 2025-03-24 | 129 | 2025-01-31 | 2025-02-04 | 3d | -33d | 0d | DRAIPL | 100% |  |
| 131 | 1.1.3.10.4 | UAT signoff | 3d | 2025-03-20 | 2025-03-24 | 130SS | 2025-01-31 | 2025-02-04 | 3d | -33d | 0d | DRAIPL | 100% |  |
| 132 | 1.1.3.11 | **End user training plan** | 3d | 2025-01-22 | 2025-01-24 |  | 2024-12-05 | 2024-12-09 | 3d | 28d |  |  |  |  |
| 133 | 1.1.3.11.1 | Preparation of End User training plan | 3d | 2025-01-22 | 2025-01-24 | 99SS | 2024-12-05 | 2024-12-09 | 3d | 28d | 0d | HBT | 100% |  |
| 134 | 1.1.3.11.2 | Communicate plan | 3d | 2025-01-22 | 2025-01-24 | 133SS | 2024-12-05 | 2024-12-09 | 3d | 28d |  | HBT & DRAIPL | 100% |  |
| 135 | 1.1.3.12 | **Production Server Check/Setup** | 2d | 2025-03-10 | 2025-03-11 |  | 2025-01-21 | 2025-01-22 | 2d | -4d | 0d |  |  |  |
| 136 | 1.1.3.12.1 | Receipt of Production server | 1d | 2025-03-10 | 2025-03-10 | 128SS, 254SS | 2025-01-21 | 2025-01-21 | 1d | -4d | 0d | DRAIPL |  |  |
| 137 | 1.1.3.12.2 | Production server setup check | 2d | 2025-03-10 | 2025-03-11 | 136SS | 2025-01-21 | 2025-01-22 | 2d | -4d | 0d | HBT |  |  |

| ID | WBS | Task | Type | Duration | Start | Finish | Predecessors | Baseline start | Baseline finish | Baseline duration | Total slack | Free slack | Primery Responsibility | Core Team | HOD | Management |
| --- | --- | --- | --- | --- | --- | --- | --- | --- | --- | --- | --- | --- | --- | --- | --- | --- |
| 138 | 1.1.3.13 | **Deliverables** |  | 49d | 2025-01-16 | 2025-03-26 |  | 2024-11-29 | 2025-02-06 | 49d | -15d | 0d |  |  |  |  |
| 139 | 1.1.3.13.1 | D: Test Script | milestone | 0d | 2025-01-16 | 2025-01-16 | 95 | 2024-11-29 | 2024-11-29 | 0d | 34d |  | HBT |  |  |  |
| 140 | 1.1.3.13.2 | D: Unit test result document | milestone | 0d | 2025-01-16 | 2025-01-16 | 95 | 2024-11-29 | 2024-11-29 | 0d | 34d |  | HBT |  |  |  |
| 141 | 1.1.3.13.3 | D: Integration testing document | milestone | 0d | 2025-03-26 | 2025-03-26 | 131, 257 | 2025-02-06 | 2025-02-06 | 0d | -15d | 0d | HBT |  |  |  |
| 142 | 1.1.3.13.4 | D: Final Master/Cutover Data template | milestone | 0d | 2025-03-26 | 2025-03-26 | 131, 257 | 2025-02-06 | 2025-02-06 | 0d | -15d | 0d | HBT |  |  |  |
| 143 | 1.1.3.14 | **Milestones** |  | 0d | 2025-03-26 | 2025-03-26 |  | 2025-02-06 | 2025-02-06 | 0d | -15d | 0d |  |  |  |  |
| 144 | 1.1.3.14.1 | Realization Phase Signoff | milestone | 0d | 2025-03-26 | 2025-03-26 | 131, 257 | 2025-02-06 | 2025-02-06 | 0d | -15d | 0d | HBT & DRAIPL |  |  |  |
| 145 | 1.1.4 | **Deploy** |  | 20d | 2025-02-06 | 2025-03-05 |  | 2025-02-06 | 2025-03-05 | 20d |  |  |  | 100% | 10% | 3% |
| 146 | 1.1.4.1 | **Prerequisite** |  | 0d | 2025-03-26 | 2025-03-26 |  | 2025-02-06 | 2025-02-06 | 0d | -15d | 0d |  |  |  |  |
| 147 | 1.1.4.1.1 | End user training plan | milestone | 0d | 2025-03-26 | 2025-03-26 | 144 | 2025-02-06 | 2025-02-06 | 0d | -15d | 0d | DRAIPL | 100% |  |  |
| 148 | 1.1.4.1.2 | Availability of end users & Management for training | milestone | 0d | 2025-03-26 | 2025-03-26 | 144 | 2025-02-06 | 2025-02-06 | 0d | -15d | 0d | DRAIPL | 100% | 10% | 3% |
| 149 | 1.1.4.1.3 | Availability of Master data | milestone | 0d | 2025-03-26 | 2025-03-26 | 144 | 2025-02-06 | 2025-02-06 | 0d | -15d | 0d | DRAIPL | 100% | 10% | 3% |
| 150 | 1.1.4.1.4 | Availability of Cutover data | milestone | 0d | 2025-03-26 | 2025-03-26 | 144 | 2025-02-06 | 2025-02-06 | 0d | -15d | 0d | DRAIPL | 100% | 10% | 3% |
| 151 | 1.1.4.1.5 | User list & authorizations | milestone | 0d | 2025-03-26 | 2025-03-26 | 144 | 2025-02-06 | 2025-02-06 | 0d | -15d | 0d | DRAIPL | 100% | 10% | 3% |
| 152 | 1.1.4.2 | **ABAP Development Go Live Critical** |  | 18d | 2025-03-27 | 2025-04-21 |  | 2025-02-07 | 2025-03-04 | 18d | -33d | 0d |  |  |  |  |
| 153 | 1.1.4.2.1 | Develop FRICE |  | 15d | 2025-03-27 | 2025-04-16 | 131, 257 | 2025-02-07 | 2025-02-27 | 15d | -33d | 0d | HBT |  |  |  |
| 154 | 1.1.4.2.2 | Testing by consultant |  | 13d | 2025-03-31 | 2025-04-16 | 153SS+2d | 2025-02-11 | 2025-02-27 | 13d | -33d | 0d | HBT |  |  |  |
| 155 | 1.1.4.2.3 | Testing by CTM |  | 3d | 2025-04-17 | 2025-04-21 | 154 | 2025-02-28 | 2025-03-04 | 3d | -33d | 0d | DRAIPL | 100% |  |  |
| 156 | 1.1.4.2.4 | Sign off Development |  | 3d | 2025-04-17 | 2025-04-21 | 155SS | 2025-02-28 | 2025-03-04 | 3d | -33d | 0d | DRAIPL | 100% |  |  |
| 157 | 1.1.4.3 | **End User Training** |  | 15d | 2025-03-27 | 2025-04-16 |  | 2025-02-07 | 2025-02-27 | 15d | -35d | 0d |  |  |  |  |
| 158 | 1.1.4.3.1 | Prepare end user training manual |  | 4d | 2025-03-27 | 2025-04-01 | 131, 257 | 2025-02-07 | 2025-02-12 | 4d | -35d | 0d | DRAIPL | 100% |  |  |
| 159 | 1.1.4.3.2 | Conduct end user training |  | 11d | 2025-04-02 | 2025-04-16 | 158 | 2025-02-13 | 2025-02-27 | 11d | -30d | 0d | DRAIPL | 100% |  |  |
| 160 | 1.1.4.4 | **Production Environment Preparation** |  | 8d | 2025-04-02 | 2025-04-11 |  | 2025-02-13 | 2025-02-24 | 8d | -27d | 0d |  |  |  |  |
| 161 | 1.1.4.4.1 | Transport final configurations |  | 4d | 2025-04-02 | 2025-04-07 | 158, 274 | 2025-02-13 | 2025-02-18 | 4d | -27d | 0d | HBT |  |  |  |
| 162 | 1.1.4.4.2 | Maintain number ranges |  | 4d | 2025-04-08 | 2025-04-11 | 161 | 2025-02-19 | 2025-02-24 | 4d | -27d | 0d | HBT |  |  |  |
| 163 | 1.1.4.4.3 | Maintain client specific data |  | 4d | 2025-04-08 | 2025-04-11 | 162SS | 2025-02-19 | 2025-02-24 | 4d | -27d | 0d | HBT |  |  |  |
| 164 | 1.1.4.4.4 | Preparation of Production envoirnment by Third party OEM |  | 3d | 2025-04-08 | 2025-04-10 | 161 | 2025-02-19 | 2025-02-21 | 3d | -26d | 0d | DRAIPL |  |  |  |

| ID | WBS | Task | Type | Duration | Start | Finish | Predecessors | Baseline start | Baseline finish | Baseline duration | Total slack | Free slack | Primery Responsibility | Core Team | HOD | Management |
| --- | --- | --- | --- | --- | --- | --- | --- | --- | --- | --- | --- | --- | --- | --- | --- | --- |
| 165 | 1.1.4.5 | **User creation & authorization** |  | 11d | 2025-04-02 | 2025-04-16 |  | 2025-02-13 | 2025-02-27 | 11d | -30d | 0d |  |  |  |  |
| 166 | 1.1.4.5.1 | Finalize list of users for production enviornment |  | 4d | 2025-04-02 | 2025-04-07 | 158, 274 | 2025-02-13 | 2025-02-18 | 4d | -30d | 0d | DRAIPL | 100% | 10% | 3% |
| 167 | 1.1.4.5.2 | Finalise Authorization Matrix |  | 4d | 2025-04-02 | 2025-04-07 | 166SS | 2025-02-13 | 2025-02-18 | 4d | -30d | 0d | DRAIPL | 100% | 10% | 3% |
| 168 | 1.1.4.5.3 | Create roles and authorization |  | 5d | 2025-04-08 | 2025-04-14 | 167 | 2025-02-19 | 2025-02-25 | 5d | -30d | 0d | HBT |  |  |  |
| 169 | 1.1.4.5.4 | Test roles and authorization |  | 5d | 2025-04-10 | 2025-04-16 | 168SS+2d | 2025-02-21 | 2025-02-27 | 5d | -30d | 0d | HBT & DRAIPL | 100% |  |  |
| 170 | 1.1.4.6 | **Data preparation & upload** |  | 15d | 2025-04-02 | 2025-04-22 |  | 2025-02-13 | 2025-03-05 | 15d | -35d | 0d |  |  |  |  |
| 171 | 1.1.4.6.1 | Receipt of master data |  | 1d | 2025-04-02 | 2025-04-02 | 158 | 2025-02-13 | 2025-02-13 | 1d | -20d | 0d | DRAIPL | 100% | 10% | 3% |
| 172 | 1.1.4.6.2 | Validate & cleanse master data |  | 4d | 2025-04-02 | 2025-04-07 | 158 | 2025-02-13 | 2025-02-18 | 4d | -35d | 0d | DRAIPL | 100% |  |  |
| 173 | 1.1.4.6.3 | Upload master data in Production |  | 3d | 2025-04-08 | 2025-04-10 | 172 | 2025-02-19 | 2025-02-21 | 3d | -35d | 0d | HBT & DRAIPL | 100% |  |  |
| 174 | 1.1.4.6.4 | Confirm uploaded master data |  | 3d | 2025-04-11 | 2025-04-15 | 173 | 2025-02-24 | 2025-02-26 | 3d | -35d | 0d | DRAIPL | 100% | 10% |  |
| 175 | 1.1.4.6.5 | Receipt of cutover data |  | 4d | 2025-04-14 | 2025-04-17 | 174SS+1d | 2025-02-25 | 2025-02-28 | 4d | -35d | 0d | DRAIPL | 100% | 10% | 3% |
| 176 | 1.1.4.6.6 | Validate & cleanse cutover data |  | 4d | 2025-04-14 | 2025-04-17 | 175SS | 2025-02-25 | 2025-02-28 | 4d | -35d | 0d | DRAIPL | 100% |  |  |
| 177 | 1.1.4.6.7 | Black Out Period |  | 3d | 2025-04-18 | 2025-04-22 | 176 | 2025-03-03 | 2025-03-05 | 3d | -34d | 0d |  |  |  |  |
| 178 | 1.1.4.6.8 | Upload cutover data in production |  | 3d | 2025-04-18 | 2025-04-22 | 176 | 2025-03-03 | 2025-03-05 | 3d | -35d | 0d | HBT & DRAIPL | 100% |  |  |
| 179 | 1.1.4.6.9 | Check and validate uploaded data |  | 3d | 2025-04-18 | 2025-04-22 | 178SS | 2025-03-03 | 2025-03-05 | 3d | -35d | 0d | DRAIPL | 100% | 10% |  |
| 180 | 1.1.4.7 | **Go-Live** |  | 1d | 2025-04-23 | 2025-04-23 |  | 2025-03-06 | 2025-03-06 | 1d | -35d | 0d |  |  |  |  |
| 181 | 1.1.4.7.1 | Go-Live |  | 1d | 2025-04-23 | 2025-04-23 | 179 | 2025-03-06 | 2025-03-06 | 1d | -35d | 0d | DRAIPL |  |  |  |
| 182 | 1.1.4.8 | **Establish Post Go-Live Support mechanism** |  | 6d | 2025-03-27 | 2025-04-03 |  | 2025-02-07 | 2025-02-14 | 6d | -21d | 0d |  |  |  |  |
| 183 | 1.1.4.8.1 | Setup Mechanism for tracking & monitoring of support |  | 2d | 2025-03-27 | 2025-03-28 | 158SS | 2025-02-07 | 2025-02-10 | 2d | -17d | 0d | HBT & DRAIPL | 100% |  |  |
| 184 | 1.1.4.8.2 | Conduct training for end users for Support Mechanism |  | 2d | 2025-04-02 | 2025-04-03 | 159SS | 2025-02-13 | 2025-02-14 | 2d | -21d | 0d | HBT & DRAIPL | 100% |  |  |
| 185 | 1.1.4.9 | **Deliverables** |  | 15d | 2025-04-01 | 2025-04-22 |  | 2025-02-12 | 2025-03-05 | 15d | -34d | 0d |  |  |  |  |
| 186 | 1.1.4.9.1 | D: End user training manual | milestone | 0d | 2025-04-01 | 2025-04-01 | 158, 274 | 2025-02-12 | 2025-02-12 | 0d | -19d | 0d | HBT |  |  |  |
| 187 | 1.1.4.9.2 | D: Data migration strategy document | milestone | 0d | 2025-04-22 | 2025-04-22 | 179, 296 | 2025-03-05 | 2025-03-05 | 0d | -34d | 0d | HBT |  |  |  |
| 188 | 1.1.4.9.3 | D: Master data upload programs | milestone | 0d | 2025-04-22 | 2025-04-22 | 179, 296 | 2025-03-05 | 2025-03-05 | 0d | -34d | 0d | HBT |  |  |  |
| 189 | 1.1.4.9.4 | D: Sample data upload validation | milestone | 0d | 2025-04-22 | 2025-04-22 | 179, 296 | 2025-03-05 | 2025-03-05 | 0d | -34d | 0d | HBT |  |  |  |
| 190 | 1.1.4.9.5 | D: Final authorization matrix, roles & authorizations | milestone | 0d | 2025-04-22 | 2025-04-22 | 179, 296 | 2025-03-05 | 2025-03-05 | 0d | -34d | 0d | HBT |  |  |  |

| ID | WBS | Task | Type | Duration | Start | Finish | Predecessors | Baseline start | Baseline finish | Baseline duration | Total slack | Free slack | Primery Responsibility | Core Team | HOD | Management |
| --- | --- | --- | --- | --- | --- | --- | --- | --- | --- | --- | --- | --- | --- | --- | --- | --- |
| 191 | 1.1.4.10 | **Obtain Approval & phase Sign Off** |  | 1d | 2025-04-23 | 2025-04-23 |  | 2025-03-06 | 2025-03-06 | 1d | -35d | 0d |  |  |  |  |
| 192 | 1.1.4.10.1 | Deploy Phae signoff |  | 1d | 2025-04-23 | 2025-04-23 | 181SS | 2025-03-06 | 2025-03-06 | 1d | -35d | 0d | DRAIPL | 100% | 10% | 3% |
| 193 | 1.2 | **Wave 1B,1D, 1E, 1F, 1G, 1H, 1I -SAP Solution rollout with Statutory Localization, Cash Mangement, Receivable Mangement, Group Reporting, Integration with Equipment tracking, Vendor Registration & Onboarding,SAP Digital Supplier Network** |  | 116d | 2024-11-13 | 2025-04-23 |  | 2024-11-13 | 2025-03-06 | 82d | 40d |  |  |  |  |  |
| 194 | 1.2.1 | **Explore Phase** |  | 16d | 2024-11-13 | 2024-12-04 |  | 2024-11-13 | 2024-12-04 | 16d | 342d |  | HBT & DRAIPL | 100% | 15% | 5% |
| 195 | 1.2.1.1 | **Prerequisite** |  | 0d | 2024-11-14 | 2024-11-14 |  | 2024-11-14 | 2024-11-14 | 0d | 397d |  |  |  |  |  |
| 196 | 1.2.1.1.1 | Availability of Bank for Bank integration design finalization | milestone | 0d | 2024-11-14 | 2024-11-14 | 5SS+45d | 2024-11-14 | 2024-11-14 | 0d | 397d |  | DRAIPL | 100% | 15% | 5% |
| 197 | 1.2.1.2 | **Requirement gathering** |  | 2d | 2024-11-13 | 2024-11-14 |  | 2024-11-13 | 2024-11-14 | 2d | 342d |  |  |  |  |  |
| 198 | 1.2.1.2.1 | Delta requirement gathering for country specific localization |  | 2d | 2024-11-13 | 2024-11-14 | 5SS+43d | 2024-11-13 | 2024-11-14 | 2d | 342d | 0d | DRAIPL | 100% | 15% |  |
| 199 | 1.2.1.2.2 | Requirement Gathering for additonal components |  | 2d | 2024-11-13 | 2024-11-14 | 198SS | 2024-11-13 | 2024-11-14 | 2d | 397d |  | HBT |  |  |  |
| 200 | 1.2.1.3 | **Business Process definition** |  | 14d | 2024-11-14 | 2024-12-03 |  | 2024-11-14 | 2024-12-03 | 14d | 342d |  |  |  |  |  |
| 201 | 1.2.1.3.1 | **Business Blueprint** |  | 14d | 2024-11-14 | 2024-12-03 |  | 2024-11-14 | 2024-12-03 | 14d | 342d |  |  |  |  |  |
| 202 | 1.2.1.3.1.1 | Listing of Process for additional components |  | 11d | 2024-11-14 | 2024-11-28 | 198SS+1d | 2024-11-14 | 2024-11-28 | 11d | 342d | 0d | HBT | 100% |  |  |
| 203 | 1.2.1.3.1.2 | Review & discuss localization & statutary document |  | 1d | 2024-11-29 | 2024-11-29 | 202 | 2024-11-29 | 2024-11-29 | 1d | 342d | 0d | DRAIPL | 100% |  |  |
| 204 | 1.2.1.3.1.3 | Incorporate changes suggested |  | 1d | 2024-12-02 | 2024-12-02 | 203 | 2024-12-02 | 2024-12-02 | 1d | 385d |  | HBT |  |  |  |
| 205 | 1.2.1.3.1.4 | Delta BBP for Localization sign off |  | 2d | 2024-12-02 | 2024-12-03 | 203 | 2024-12-02 | 2024-12-03 | 2d | 342d | 0d | DRAIPL | 100% | 15% |  |
| 206 | 1.2.1.3.1.5 | BBP sign of for additional components |  | 2d | 2024-12-02 | 2024-12-03 | 203 | 2024-12-02 | 2024-12-03 | 2d | 384d |  | DRAIPL |  |  |  |
| 207 | 1.2.1.4 | **Third Party System Integration** |  | 6d | 2024-11-14 | 2024-11-21 |  | 2024-11-14 | 2024-11-21 | 6d | 392d |  |  |  |  |  |
| 208 | 1.2.1.4.1 | Intergration Touch points Discussion for Bank & other related component |  | 2d | 2024-11-14 | 2024-11-15 | 202SS | 2024-11-14 | 2024-11-15 | 2d | 392d | 0d | HBT & DRAIPL | 100% |  |  |
| 209 | 1.2.1.4.2 | Integration Design Document |  | 2d | 2024-11-18 | 2024-11-19 | 208 | 2024-11-18 | 2024-11-19 | 2d | 392d | 0d | HBT |  |  |  |
| 210 | 1.2.1.4.3 | Integration Design Document Sign Off |  | 2d | 2024-11-20 | 2024-11-21 | 209 | 2024-11-20 | 2024-11-21 | 2d | 392d |  | DRAIPL | 100% | 15% |  |
| 211 | 1.2.1.5 | **Deliverables** |  | 1d | 2024-12-03 | 2024-12-04 |  | 2024-12-03 | 2024-12-04 | 1d | 343d |  |  |  |  |  |
| 212 | 1.2.1.5.1 | D: Business Blueprint with end to end Process flow diagram, FRICE List | milestone | 0d | 2024-12-03 | 2024-12-03 | 205 | 2024-12-03 | 2024-12-03 | 0d | 384d |  | HBT | 100% | 15% |  |
| 213 | 1.2.1.5.2 | D: Initial Master data templates | milestone | 0d | 2024-12-04 | 2024-12-04 | 205FS+1d | 2024-12-04 | 2024-12-04 | 0d | 342d | 0d | HBT | 100% |  |  |
| 214 | 1.2.1.6 | **Milestones** |  | 0d | 2024-12-03 | 2024-12-03 |  | 2024-12-03 | 2024-12-03 | 0d | 384d |  |  |  |  |  |
| 215 | 1.2.1.6.1 | Completion of Business Blueprint Explore phase sign off | milestone | 0d | 2024-12-03 | 2024-12-03 | 205 | 2024-12-03 | 2024-12-03 | 0d | 384d |  | HBT & DRAIPL | 100% | 15% |  |

| ID | WBS | Task | Type | Duration | Start | Finish | Predecessors | Baseline start | Baseline finish | Baseline duration | Total slack | Free slack | Primery Responsibility | Core Team | HOD | Management |
| --- | --- | --- | --- | --- | --- | --- | --- | --- | --- | --- | --- | --- | --- | --- | --- | --- |
| 216 | 1.2.2 | **Realize** |  | 82d | 2024-12-05 | 2025-03-31 |  | 2024-12-02 | 2025-02-11 | 52d | 23d |  | HBT & DRAIPL | 100% | 10% | 3% |
| 217 | 1.2.2.1 | **Preqrequisite** |  | 0d | 2024-12-05 | 2024-12-05 |  | 2024-12-05 | 2024-12-05 | 0d | 342d |  |  |  |  |  |
| 218 | 1.2.2.1.1 | Availability of Third Party Vendor for Development API's | milestone | 0d | 2024-12-05 | 2024-12-05 | 213FS+1d | 2024-12-05 | 2024-12-05 | 0d | 342d | 0d | DRAIPL | 100% |  |  |
| 219 | 1.2.2.1.2 | Finalized list and availability of End user for training | milestone | 0d | 2024-12-05 | 2024-12-05 | 213FS+1d | 2024-12-05 | 2024-12-05 | 0d | 382d |  | DRAIPL | 100% |  |  |
| 220 | 1.2.2.2 | **RGS & Functional Specifications(UAT & SIT Critical)** |  | 10d | 2024-12-06 | 2024-12-19 |  | 2024-12-06 | 2024-12-19 | 10d | 342d |  |  |  |  |  |
| 221 | 1.2.2.2.1 | RGS Preparation |  | 10d | 2024-12-06 | 2024-12-19 | 218 | 2024-12-06 | 2024-12-19 | 10d | 342d | 0d | HBT |  |  |  |
| 222 | 1.2.2.2.2 | RGS Acceptance/Approval |  | 5d | 2024-12-06 | 2024-12-12 | 221SS | 2024-12-06 | 2024-12-12 | 5d | 342d | 0d | DRAIPL |  |  |  |
| 223 | 1.2.2.2.3 | Prepare functional specfications |  | 10d | 2024-12-06 | 2024-12-19 | 222SS | 2024-12-06 | 2024-12-19 | 10d | 342d | 17d | HBT |  |  |  |
| 224 | 1.2.2.2.4 | Finalize development tracker |  | 5d | 2024-12-06 | 2024-12-12 | 222SS | 2024-12-06 | 2024-12-12 | 5d | 364d | 0d | HBT |  |  |  |
| 225 | 1.2.2.3 | **Configure and Validate Baseline** |  | 13d | 2024-12-13 | 2024-12-31 |  | 2024-12-13 | 2024-12-31 | 13d | 364d |  |  |  |  |  |
| 226 | 1.2.2.3.1 | Configure Processes and Functions in golden master (100) |  | 5d | 2024-12-13 | 2024-12-19 | 224 | 2024-12-13 | 2024-12-19 | 5d | 364d | 0d | HBT |  |  |  |
| 227 | 1.2.2.3.2 | Transfer of Configuration to Dev testing |  | 5d | 2024-12-13 | 2024-12-19 | 226SS | 2024-12-13 | 2024-12-19 | 5d | 364d | 0d | HBT |  |  |  |
| 228 | 1.2.2.3.3 | Unit testing-1 (Consultant) |  | 4d | 2024-12-20 | 2024-12-25 | 227 | 2024-12-20 | 2024-12-25 | 4d | 364d | 0d | HBT |  |  |  |
| 229 | 1.2.2.3.4 | Document and Resolve Issues |  | 4d | 2024-12-20 | 2024-12-25 | 228SS | 2024-12-20 | 2024-12-25 | 4d | 368d |  | HBT |  |  |  |
| 230 | 1.2.2.3.5 | Verify Baseline Configuration Completion |  | 4d | 2024-12-20 | 2024-12-25 | 228SS | 2024-12-20 | 2024-12-25 | 4d | 364d | 0d | HBT |  |  |  |
| 231 | 1.2.2.3.6 | Core Team Training |  | 2d | 2024-12-26 | 2024-12-27 | 230 | 2024-12-26 | 2024-12-27 | 2d | 364d | 0d | HBT |  |  |  |
| 232 | 1.2.2.3.7 | UT by Core Team |  | 2d | 2024-12-30 | 2024-12-31 | 231 | 2024-12-30 | 2024-12-31 | 2d | 364d |  | DRAIPL |  |  |  |
| 233 | 1.2.2.4 | **ABAP Development - UAT & SIT critical** |  | 37d | 2025-01-03 | 2025-02-24 |  | 2024-12-11 | 2025-01-30 | 37d | 325d | 0d |  |  |  |  |
| 234 | 1.2.2.4.1 | FRICE Developments SIT critical |  | 25d | 2025-01-03 | 2025-02-06 | 88SS+3d, 223SS+3d | 2024-12-11 | 2025-01-14 | 25d | 325d | 0d | HBT |  |  |  |
| 235 | 1.2.2.4.2 | Testing by consultant |  | 25d | 2025-01-10 | 2025-02-13 | 234SS+5d | 2024-12-18 | 2025-01-21 | 25d | 325d | 0d | HBT |  |  |  |
| 236 | 1.2.2.4.3 | Testing by CTM |  | 5d | 2025-02-14 | 2025-02-20 | 235 | 2025-01-22 | 2025-01-28 | 5d | 325d | 0d | DRAIPL | 100% |  |  |
| 237 | 1.2.2.4.4 | Observations & Corrections |  | 5d | 2025-02-18 | 2025-02-24 | 236SS+2d | 2025-01-24 | 2025-01-30 | 5d | 325d | 0d |  |  |  |  |
| 238 | 1.2.2.4.5 | Sign off Development |  | 5d | 2025-02-18 | 2025-02-24 | 237SS | 2025-01-24 | 2025-01-30 | 5d | 325d |  | DRAIPL | 100% |  |  |
| 239 | 1.2.2.5 | **Third Party System Integration Development - Bank** |  | 20d | 2025-02-07 | 2025-03-06 |  | 2025-01-15 | 2025-02-11 | 20d | 317d |  |  |  |  |  |
| 240 | 1.2.2.5.1 | Interface Development - Third Party Application |  | 15d | 2025-02-07 | 2025-02-27 | 233SS+25d | 2025-01-15 | 2025-02-04 | 15d | 317d | 0d | HBT |  |  |  |
| 241 | 1.2.2.5.2 | Interface Testing by consultant |  | 5d | 2025-02-28 | 2025-03-06 | 240 | 2025-02-05 | 2025-02-11 | 5d | 317d |  | HBT |  |  |  |

| ID | WBS | Task | Type | Duration | Start | Finish | Predecessors | Baseline start | Baseline finish | Baseline duration | Total slack | Free slack | Primery Responsibility | Core Team | HOD |
| --- | --- | --- | --- | --- | --- | --- | --- | --- | --- | --- | --- | --- | --- | --- | --- |
| 242 | 1.2.2.6 | **System Integration Test** |  | 35d | 2025-01-17 | 2025-03-06 |  | 2024-12-02 | 2025-01-17 | 35d | -7d | 0d |  |  |  |
| 243 | 1.2.2.6.1 | **Integration testing plan** |  | 5d | 2025-01-17 | 2025-01-23 |  | 2024-12-02 | 2024-12-06 | 5d | 347d |  |  |  |  |
| 244 | 1.2.2.6.1.1 | Identify scenerios for Integration test |  | 3d | 2025-01-17 | 2025-01-21 | 95 | 2024-12-02 | 2024-12-04 | 3d | 347d | 0d | DRAIPL | 100% |  |
| 245 | 1.2.2.6.1.2 | Write scripts for Integration test |  | 3d | 2025-01-17 | 2025-01-21 | 244SS | 2024-12-02 | 2024-12-04 | 3d | 347d | 0d | HBT |  |  |
| 246 | 1.2.2.6.1.3 | Integration Test Script Acceptance |  | 2d | 2025-01-22 | 2025-01-23 | 245 | 2024-12-05 | 2024-12-06 | 2d | 347d |  | DRAIPL | 100% | 10% |
| 247 | 1.2.2.6.2 | **Conduct System integration test** |  | 7d | 2025-02-26 | 2025-03-06 |  | 2025-01-09 | 2025-01-17 | 7d | -35d | 0d |  |  |  |
| 248 | 1.2.2.6.2.1 | Perform Integration testing by Consultant |  | 7d | 2025-02-26 | 2025-03-06 | 109 | 2025-01-09 | 2025-01-17 | 7d | -35d | 0d | HBT |  |  |
| 249 | 1.2.2.7 | **User Roles & Authorization** |  | 10d | 2025-01-22 | 2025-02-04 |  | 2024-12-05 | 2024-12-18 | 10d | 339d |  |  |  |  |
| 250 | 1.2.2.7.1 | Receipt of Final Authorization Matrix with User List |  | 5d | 2025-01-22 | 2025-01-28 | 99SS | 2024-12-05 | 2024-12-11 | 5d | 339d | 0d | DRAIPL | 100% | 10% |
| 251 | 1.2.2.7.2 | Role Creation |  | 5d | 2025-01-29 | 2025-02-04 | 250 | 2024-12-12 | 2024-12-18 | 5d | 339d | 0d | HBT |  |  |
| 252 | 1.2.2.7.3 | Role Testing & User assigning for UAT |  | 5d | 2025-01-29 | 2025-02-04 | 251SS | 2024-12-12 | 2024-12-18 | 5d | 339d |  | HBT & DRAIPL |  |  |
| 253 | 1.2.2.8 | **User Acceptance Test - UAT** |  | 14d | 2025-03-07 | 2025-03-26 |  | 2025-01-20 | 2025-02-06 | 14d | -35d | 0d |  |  |  |
| 254 | 1.2.2.8.1 | Perform User Acceptance test - CTM |  | 10d | 2025-03-07 | 2025-03-20 | 248 | 2025-01-20 | 2025-01-31 | 10d | -35d | 0d | DRAIPL | 100% |  |
| 255 | 1.2.2.8.2 | Resolving the issues, if any |  | 10d | 2025-03-07 | 2025-03-20 | 254SS | 2025-01-20 | 2025-01-31 | 10d | -35d | 0d | HBT |  |  |
| 256 | 1.2.2.8.3 | Retesting of scenarios |  | 4d | 2025-03-21 | 2025-03-26 | 255 | 2025-02-03 | 2025-02-06 | 4d | -35d | 0d | DRAIPL | 100% |  |
| 257 | 1.2.2.8.4 | UAT signoff |  | 4d | 2025-03-21 | 2025-03-26 | 256SS | 2025-02-03 | 2025-02-06 | 4d | -35d | 0d | DRAIPL | 100% |  |
| 258 | 1.2.2.9 | **End user training plan** |  | 3d | 2025-03-27 | 2025-03-31 |  | 2025-02-07 | 2025-02-11 | 3d | -29d | 0d |  |  |  |
| 259 | 1.2.2.9.1 | Preparation of End User training plan & Submit |  | 3d | 2025-03-27 | 2025-03-31 | 257 | 2025-02-07 | 2025-02-11 | 3d | -29d | 0d | HBT | 100% |  |
| 260 | 1.2.2.10 | **Deliverables** |  | 0d | 2025-03-27 | 2025-03-27 |  | 2025-02-07 | 2025-02-07 | 0d | 302d |  |  |  |  |
| 261 | 1.2.2.10.1 | D: Test Script | milestone | 0d | 2025-03-27 | 2025-03-27 | 257FS+1d | 2025-02-07 | 2025-02-07 | 0d | 302d | 0d | HBT |  |  |
| 262 | 1.2.2.10.2 | D: Unit test result document | milestone | 0d | 2025-03-27 | 2025-03-27 | 261SS | 2025-02-07 | 2025-02-07 | 0d | 302d |  | HBT |  |  |
| 263 | 1.2.2.10.3 | D: Integration testing document | milestone | 0d | 2025-03-27 | 2025-03-27 | 261SS | 2025-02-07 | 2025-02-07 | 0d | 302d |  | HBT |  |  |
| 264 | 1.2.2.10.4 | D: Cutover Data template | milestone | 0d | 2025-03-27 | 2025-03-27 | 261SS | 2025-02-07 | 2025-02-07 | 0d | 302d | 0d | HBT |  |  |
| 265 | 1.2.2.11 | **Milestones** |  | 0d | 2025-03-27 | 2025-03-27 |  | 2025-02-07 | 2025-02-07 | 0d | 302d |  |  |  |  |
| 266 | 1.2.2.11.1 | Realization Phase Signoff | milestone | 0d | 2025-03-27 | 2025-03-27 | 264 | 2025-02-07 | 2025-02-07 | 0d | 302d | 0d | DRAIPL |  |  |

| ID | WBS | Task | Type | Duration | Start | Finish | Predecessors | Baseline start | Baseline finish | Baseline duration | Total slack | Free slack | Primery Responsibility | Core Team | HOD | Management |
| --- | --- | --- | --- | --- | --- | --- | --- | --- | --- | --- | --- | --- | --- | --- | --- | --- |
| 267 | 1.2.3 | **Deploy** |  | 19d | 2025-03-27 | 2025-04-23 |  | 2025-02-07 | 2025-03-06 | 19d | -29d | 0d | HBT & DRAIPL | 100% | 10% | 3% |
| 268 | 1.2.3.1 | **Prerequisite** |  | 0d | 2025-03-27 | 2025-03-27 |  | 2025-02-07 | 2025-02-07 | 0d | 302d |  |  |  |  |  |
| 269 | 1.2.3.1.1 | Availability of end users & Management for training | milestone | 0d | 2025-03-27 | 2025-03-27 | 266 | 2025-02-07 | 2025-02-07 | 0d | 302d |  | DRAIPL | 100% | 10% | 3% |
| 270 | 1.2.3.1.2 | Availability of Master data | milestone | 0d | 2025-03-27 | 2025-03-27 | 266 | 2025-02-07 | 2025-02-07 | 0d | 302d |  | DRAIPL | 100% | 10% | 3% |
| 271 | 1.2.3.1.3 | Availability of Cutover data | milestone | 0d | 2025-03-27 | 2025-03-27 | 266 | 2025-02-07 | 2025-02-07 | 0d | 302d |  | DRAIPL | 100% | 10% | 3% |
| 272 | 1.2.3.1.4 | User list & authorizations | milestone | 0d | 2025-03-27 | 2025-03-27 | 266 | 2025-02-07 | 2025-02-07 | 0d | 302d |  | DRAIPL | 100% | 10% | 3% |
| 273 | 1.2.3.2 | **End User Training** |  | 7d | 2025-03-28 | 2025-04-07 |  | 2025-02-10 | 2025-02-18 | 7d | -29d | 0d |  |  |  |  |
| 274 | 1.2.3.2.1 | Prepare end user training manual |  | 2d | 2025-03-28 | 2025-03-31 | 259SS+1d | 2025-02-10 | 2025-02-11 | 2d | -29d | 0d | DRAIPL | 100% |  |  |
| 275 | 1.2.3.2.2 | Conduct end user training |  | 5d | 2025-04-01 | 2025-04-07 | 274 | 2025-02-12 | 2025-02-18 | 5d | 295d |  | DRAIPL | 100% |  |  |
| 276 | 1.2.3.3 | **Production Environment Preparation** |  | 8d | 2025-04-02 | 2025-04-11 |  | 2025-02-13 | 2025-02-24 | 8d | 291d |  |  |  |  |  |
| 277 | 1.2.3.3.1 | Transport final configurations |  | 4d | 2025-04-02 | 2025-04-07 | 158, 274 | 2025-02-13 | 2025-02-18 | 4d | 291d | 0d | HBT |  |  |  |
| 278 | 1.2.3.3.2 | Maintain number ranges |  | 4d | 2025-04-08 | 2025-04-11 | 277 | 2025-02-19 | 2025-02-24 | 4d | 291d | 0d | HBT |  |  |  |
| 279 | 1.2.3.3.3 | Maintain client specific data |  | 4d | 2025-04-08 | 2025-04-11 | 278SS | 2025-02-19 | 2025-02-24 | 4d | 291d |  | HBT |  |  |  |
| 280 | 1.2.3.3.4 | Production envoirnment to be ready by TPA - OEM |  | 3d | 2025-04-08 | 2025-04-10 | 277 | 2025-02-19 | 2025-02-21 | 3d | 292d |  | DRAIPL |  |  |  |
| 281 | 1.2.3.4 | **User creation & authorization** |  | 11d | 2025-04-02 | 2025-04-16 |  | 2025-02-13 | 2025-02-27 | 11d | 288d |  |  |  |  |  |
| 282 | 1.2.3.4.1 | Finalize list of users for production enviornment |  | 4d | 2025-04-02 | 2025-04-07 | 158, 274 | 2025-02-13 | 2025-02-18 | 4d | 288d | 0d | DRAIPL | 100% | 10% | 3% |
| 283 | 1.2.3.4.2 | Finalise Authorization Matrix |  | 4d | 2025-04-02 | 2025-04-07 | 282SS | 2025-02-13 | 2025-02-18 | 4d | 288d | 0d | DRAIPL | 100% | 10% | 3% |
| 284 | 1.2.3.4.3 | Create roles and authorization |  | 5d | 2025-04-08 | 2025-04-14 | 283 | 2025-02-19 | 2025-02-25 | 5d | 288d | 0d | HBT |  |  |  |
| 285 | 1.2.3.4.4 | Test roles and authorization |  | 5d | 2025-04-10 | 2025-04-16 | 284SS+2d | 2025-02-21 | 2025-02-27 | 5d | 288d |  | HBT & DRAIPL | 100% |  |  |
| 286 | 1.2.3.5 | **Data preparation & upload** |  | 16d | 2025-04-02 | 2025-04-23 |  | 2025-02-13 | 2025-03-06 | 16d | -22d | 0d |  |  |  |  |
| 287 | 1.2.3.5.1 | Data Migration Statergy |  | 1d | 2025-04-02 | 2025-04-02 | 158 | 2025-02-13 | 2025-02-13 | 1d | 298d |  | HBT |  |  |  |
| 288 | 1.2.3.5.2 | Receipt of master data |  | 1d | 2025-04-02 | 2025-04-02 | 158 | 2025-02-13 | 2025-02-13 | 1d | 298d |  | DRAIPL | 100% | 10% | 3% |
| 289 | 1.2.3.5.3 | Validate & cleanse master data |  | 4d | 2025-04-02 | 2025-04-07 | 158 | 2025-02-13 | 2025-02-18 | 4d | 295d |  | DRAIPL | 100% |  |  |
| 290 | 1.2.3.5.4 | Upload master data in Production |  | 3d | 2025-04-08 | 2025-04-10 | 172 | 2025-02-19 | 2025-02-21 | 3d | 292d |  | HBT & DRAIPL | 100% |  |  |
| 291 | 1.2.3.5.5 | Confirm uploaded master data |  | 3d | 2025-04-11 | 2025-04-15 | 173 | 2025-02-24 | 2025-02-26 | 3d | 289d |  | DRAIPL | 100% | 10% |  |
| 292 | 1.2.3.5.6 | Receipt of cutover data |  | 4d | 2025-04-14 | 2025-04-17 | 174SS+1d | 2025-02-25 | 2025-02-28 | 4d | 287d |  | DRAIPL | 100% | 10% | 3% |
| 293 | 1.2.3.5.7 | Validate & cleanse cutover data |  | 4d | 2025-04-14 | 2025-04-17 | 175SS | 2025-02-25 | 2025-02-28 | 4d | 287d |  | DRAIPL | 100% |  |  |
| 294 | 1.2.3.5.8 | Black Out Period |  | 4d | 2025-04-18 | 2025-04-23 | 176 | 2025-03-03 | 2025-03-06 | 4d | 283d |  | DRAIPL |  |  |  |
| 295 | 1.2.3.5.9 | Upload cutover data in production |  | 4d | 2025-04-18 | 2025-04-23 | 176 | 2025-03-03 | 2025-03-06 | 4d | 283d |  | HBT & DRAIPL | 100% |  |  |
| 296 | 1.2.3.5.10 | Check and validate uploaded data |  | 3d | 2025-04-18 | 2025-04-22 | 178SS | 2025-03-03 | 2025-03-05 | 3d | -34d | 0d | DRAIPL | 100% | 10% |  |

| ID | WBS | Task | Type | Duration | Start | Finish | Predecessors | Baseline start | Baseline finish | Baseline duration | Total slack | Free slack | Primery Responsibility | Core Team | HOD | Management |
| --- | --- | --- | --- | --- | --- | --- | --- | --- | --- | --- | --- | --- | --- | --- | --- | --- |
| 297 | 1.2.3.6 | **Go-Live** |  | 1d | 2025-04-23 | 2025-04-23 |  | 2025-03-06 | 2025-03-06 | 1d | 283d |  |  |  |  |  |
| 298 | 1.2.3.6.1 | Go-Live |  | 1d | 2025-04-23 | 2025-04-23 | 296 | 2025-03-06 | 2025-03-06 | 1d | 283d |  | HBT & DRAIPL | 100% | 10% | 3% |
| 299 | 1.2.3.7 | **Deliverables** |  | 15d | 2025-04-01 | 2025-04-22 |  | 2025-02-12 | 2025-03-05 | 15d | 284d |  |  |  |  |  |
| 300 | 1.2.3.7.1 | D: End user training manual | milestone | 0d | 2025-04-01 | 2025-04-01 | 186 | 2025-02-12 | 2025-02-12 | 0d | 299d |  | HBT |  |  |  |
| 301 | 1.2.3.7.2 | D: Data migration strategy document | milestone | 0d | 2025-04-22 | 2025-04-22 | 187 | 2025-03-05 | 2025-03-05 | 0d | 284d |  | HBT |  |  |  |
| 302 | 1.2.3.7.3 | D: Master data upload programs | milestone | 0d | 2025-04-22 | 2025-04-22 | 188 | 2025-03-05 | 2025-03-05 | 0d | 284d |  | HBT |  |  |  |
| 303 | 1.2.3.7.4 | D: Sample data upload validation | milestone | 0d | 2025-04-22 | 2025-04-22 | 189 | 2025-03-05 | 2025-03-05 | 0d | 284d |  | HBT |  |  |  |
| 304 | 1.2.3.7.5 | D: Final authorization matrix, roles & authorizations | milestone | 0d | 2025-04-22 | 2025-04-22 | 190 | 2025-03-05 | 2025-03-05 | 0d | 284d |  | HBT |  |  |  |
| 305 | 1.2.3.8 | **Obtain Approval & phase Sign Off** |  | 0d | 2025-04-23 | 2025-04-23 |  | 2025-03-06 | 2025-03-06 | 0d | 283d |  |  |  |  |  |
| 306 | 1.2.3.8.1 | Deploy signoff | milestone | 0d | 2025-04-23 | 2025-04-23 | 192 | 2025-03-06 | 2025-03-06 | 0d | 283d |  | DRAIPL | 100% | 10% | 3% |
| 307 | 1.3 | **Wave 1C: Management Analytics (SAC)** |  | 81d | 2024-11-14 | 2025-03-06 |  | 2024-11-14 | 2025-03-06 | 81d | 2d |  |  |  |  |  |
| 308 | 1.3.1 | **EXPLORE (BUSINESS BLUEPRINT)** |  | 15d | 2024-11-14 | 2024-12-04 |  | 2024-11-14 | 2024-12-04 | 15d | 2d |  | HBT & DRAIPL | 100% | 15% | 5% |
| 309 | 1.3.1.1 | **Requirement Gathering Workshop for SAC** |  | 15d | 2024-11-14 | 2024-12-04 |  | 2024-11-14 | 2024-12-04 | 15d | 2d |  |  |  |  |  |
| 310 | 1.3.1.1.1 | Requirement Gathering Workshop for SAC |  | 7d | 2024-11-14 | 2024-11-22 | 5SS+44d | 2024-11-14 | 2024-11-22 | 7d | 2d | 0d | DRAIPL | 100% | 15% |  |
| 311 | 1.3.1.1.2 | Finalize reporting requiremnt |  | 5d | 2024-11-25 | 2024-11-29 | 310 | 2024-11-25 | 2024-11-29 | 5d | 2d | 0d | HBT & DRAIPL | 100% | 15% |  |
| 312 | 1.3.1.1.3 | Submit SAC Business Requirement Document |  | 5d | 2024-11-25 | 2024-11-29 | 311SS | 2024-11-25 | 2024-11-29 | 5d | 2d | 0d | HBT |  |  |  |
| 313 | 1.3.1.1.4 | Explore Phase Sign-off |  | 3d | 2024-12-02 | 2024-12-04 | 312 | 2024-12-02 | 2024-12-04 | 3d | 383d | 0d | DRAIPL | 100% | 15% |  |
| 314 | 1.3.1.2 | **Deliverables** |  | 0d | 2024-12-04 | 2024-12-04 |  | 2024-12-04 | 2024-12-04 | 0d | 383d |  |  |  |  |  |
| 315 | 1.3.1.2.1 | D: SAC Business Requirement Document | milestone | 0d | 2024-12-04 | 2024-12-04 | 313 | 2024-12-04 | 2024-12-04 | 0d | 383d |  | HBT |  |  |  |
| 316 | 1.3.1.3 | **Key milestones** |  | 0d | 2024-12-04 | 2024-12-04 |  | 2024-12-04 | 2024-12-04 | 0d | 383d |  |  |  |  |  |
| 317 | 1.3.1.3.1 | On Completion of Explore Phase | milestone | 0d | 2024-12-04 | 2024-12-04 | 313 | 2024-12-04 | 2024-12-04 | 0d | 383d |  | HBT & DRAIPL |  |  |  |
| 318 | 1.3.2 | **REALIZE (REALIZATION)** |  | 47d | 2024-12-03 | 2025-02-05 |  | 2024-12-03 | 2025-02-05 | 47d |  |  | HBT & DRAIPL | 100% | 10% | 3% |
| 319 | 1.3.2.1 | Prepare functional specifications |  | 5d | 2024-12-03 | 2024-12-09 | 312FS+1d | 2024-12-03 | 2024-12-09 | 5d | 2d | 0d | HBT |  |  |  |
| 320 | 1.3.2.2 | Backend data source development |  | 5d | 2024-12-10 | 2024-12-16 | 319 | 2024-12-10 | 2024-12-16 | 5d | 37d |  | HBT |  |  |  |
| 321 | 1.3.2.3 | Dashboard development |  | 25d | 2024-12-10 | 2025-01-13 | 319 | 2024-12-10 | 2025-01-13 | 25d | 2d | 0d | HBT |  |  |  |
| 322 | 1.3.2.4 | Dashboard testing in development by HBT & issue resolution |  | 20d | 2024-12-24 | 2025-01-20 | 321SS+10d | 2024-12-24 | 2025-01-20 | 20d | 2d | 0d | HBT |  |  |  |
| 323 | 1.3.2.5 | Release of Seven Dashboard for UAT |  | 1d | 2025-01-21 | 2025-01-21 | 322 | 2025-01-21 | 2025-01-21 | 1d | 2d | 0d | HBT |  |  |  |
| 324 | 1.3.2.6 | UAT by CTM for Seven released dashboards |  | 5d | 2025-01-22 | 2025-01-28 | 323 | 2025-01-22 | 2025-01-28 | 5d | 2d | 0d | DRAIPL | 100% |  |  |
| 325 | 1.3.2.7 | Release of Balance Eight Dashboard for UAT |  | 1d | 2025-01-29 | 2025-01-29 | 324 | 2025-01-29 | 2025-01-29 | 1d | 2d | 0d | HBT |  |  |  |
| 326 | 1.3.2.8 | UAT by CTM for balance Eight released dashboards |  | 3d | 2025-01-30 | 2025-02-03 | 325 | 2025-01-30 | 2025-02-03 | 3d | 2d | 0d | DRAIPL | 100% |  |  |
| 327 | 1.3.2.9 | UAT Sign-off |  | 3d | 2025-01-30 | 2025-02-03 | 326SS | 2025-01-30 | 2025-02-03 | 3d | 2d | 0d | DRAIPL | 100% |  |  |

| ID | WBS | Task | Type | Duration | Start | Finish | Predecessors | Baseline start | Baseline finish | Baseline duration | Total slack | Free slack | Constraint | Primery Responsibility | Core Team | HOD | Management |
| --- | --- | --- | --- | --- | --- | --- | --- | --- | --- | --- | --- | --- | --- | --- | --- | --- | --- |
| 328 | 1.3.2.10 | **Deliverables** |  | 0d | 2025-02-03 | 2025-02-03 |  | 2025-02-03 | 2025-02-03 | 0d | 2d |  |  |  |  |  |  |
| 329 | 1.3.2.10.1 | D: UAT Sign off | milestone | 0d | 2025-02-03 | 2025-02-03 | 327 | 2025-02-03 | 2025-02-03 | 0d | 2d |  |  | DARIPL |  |  |  |
| 330 | 1.3.2.11 | **Key milestones** |  | 9d | 2025-01-21 | 2025-02-03 |  | 2025-01-21 | 2025-02-03 | 9d | 2d |  |  |  |  |  |  |
| 331 | 1.3.2.11.1 | Release of Five Dashboard for UAT | milestone | 0d | 2025-01-21 | 2025-01-21 | 323 | 2025-01-21 | 2025-01-21 | 0d | 11d |  |  | HBT |  |  |  |
| 332 | 1.3.2.11.2 | Release of Balance Ten Dashboard for UAT | milestone | 0d | 2025-01-29 | 2025-01-29 | 325 | 2025-01-29 | 2025-01-29 | 0d | 5d |  |  | HBT |  |  |  |
| 333 | 1.3.2.11.3 | UAT Sign-off | milestone | 0d | 2025-02-03 | 2025-02-03 | 327 | 2025-02-03 | 2025-02-03 | 0d | 2d |  |  | DRAIPL |  |  |  |
| 334 | 1.3.3 | **DEPLOY (FINAL PREPARATION & GO LIVE)** |  | 23d | 2025-02-04 | 2025-03-06 |  | 2025-02-04 | 2025-03-06 | 23d | 317d |  |  | HBT & DRAIPL | 100% | 10% | 3% |
| 335 | 1.3.3.1 | Prepare end user training manual - Go Live |  | 2d | 2025-02-04 | 2025-02-05 | 327 | 2025-02-04 | 2025-02-05 | 2d | 317d | 0d |  | HBT |  |  |  |
| 336 | 1.3.3.2 | Conduct End User Training |  | 9d | 2025-02-06 | 2025-02-18 | 335 | 2025-02-06 | 2025-02-18 | 9d | 317d | 0d |  | HBT |  |  |  |
| 337 | 1.3.3.3 | Submit training completion report |  | 1d | 2025-02-19 | 2025-02-19 | 336 | 2025-02-19 | 2025-02-19 | 1d | 317d | 0d |  | HBT |  |  |  |
| 338 | 1.3.3.4 | Final Preparation (Production readiness i.e. end user creation, roles and assignment) |  | 5d | 2025-02-20 | 2025-02-26 | 337 | 2025-02-20 | 2025-02-26 | 5d | 317d | 0d |  | HBT |  |  |  |
| 339 | 1.3.3.5 | Move dashboards to production environment |  | 4d | 2025-02-27 | 2025-03-04 | 338 | 2025-02-27 | 2025-03-04 | 4d | 317d | 0d |  | HBT |  |  |  |
| 340 | 1.3.3.6 | Go-Live |  | 1d | 2025-03-06 | 2025-03-06 | 339FS+1d | 2025-03-06 | 2025-03-06 | 1d | 317d | 0d |  | HBT & DRAIPL |  |  |  |
| 341 | 1.3.3.7 | Phase Sign-off- Final Preparation & Go-Live Phase | milestone | 0d | 2025-03-06 | 2025-03-06 | 340 | 2025-03-06 | 2025-03-06 | 0d | 317d |  |  | DRAIPL |  |  |  |
| 342 | 1.3.3.8 | **Deliverables** |  | 0d | 2025-03-06 | 2025-03-06 |  | 2025-03-06 | 2025-03-06 | 0d | 317d |  |  |  |  |  |  |
| 343 | 1.3.3.8.1 | D: FS , TS Documents | milestone | 0d | 2025-03-06 | 2025-03-06 | 340 | 2025-03-06 | 2025-03-06 | 0d | 317d |  |  | HBT |  |  |  |
| 344 | 1.3.3.8.2 | D: Deploy phase sign Off | milestone | 0d | 2025-03-06 | 2025-03-06 | 340 | 2025-03-06 | 2025-03-06 | 0d | 317d |  |  | HBT |  |  |  |
| 345 | 1.3.3.9 | **Key milestones** |  | 0d | 2025-03-06 | 2025-03-06 |  | 2025-03-06 | 2025-03-06 | 0d | 317d |  |  |  |  |  |  |
| 346 | 1.3.3.9.1 | Completion of Final Preparation & Go-Live | milestone | 0d | 2025-03-06 | 2025-03-06 | 340 | 2025-03-06 | 2025-03-06 | 0d | 317d |  |  | HBT & DRAIPL |  |  |  |
| 347 | 1.4 | **Wave 1J HBT’s Onsite Team Deployment for Guiding & assisting Data Preparation:** |  | 107d | 2024-11-08 | 2025-04-07 |  | 2024-11-08 | 2025-04-07 | 107d |  |  |  |  |  |  |  |
| 348 | 1.4.1 | **Team Mobilisation** |  | 1d | 2024-11-08 | 2024-11-08 |  | 2024-11-08 | 2024-11-08 | 1d | 0d |  |  |  |  |  |  |
| 349 | 1.4.1.1 | Team Mobilisation |  | 1d | 2024-11-08 | 2024-11-08 |  | 2024-11-08 | 2024-11-08 | 1d | 0d |  | must finish on 2024-11-08 | HBT |  |  |  |
| 350 | 1.4.2 | **Explore** |  | 63d | 2024-11-11 | 2025-02-05 |  | 2024-11-11 | 2024-12-19 | 29d | 24d |  |  |  |  |  |  |
| 351 | 1.4.2.1 | Explain Master Data Template |  | 5d | 2024-11-11 | 2024-11-15 | 349 | 2024-11-11 | 2024-11-15 | 5d | 101d |  |  | HBT |  |  |  |
| 352 | 1.4.2.2 | Explain Cutover Data Template |  | 5d | 2025-01-30 | 2025-02-05 | 126 | 2024-12-13 | 2024-12-19 | 5d | -34d | 0d |  | HBT |  |  |  |

| ID | WBS | Task | Type | Duration | Start | Finish | Predecessors | Baseline start | Baseline finish | Baseline duration | Total slack | Free slack | Primery Responsibility | Core Team | HOD | Management |
| --- | --- | --- | --- | --- | --- | --- | --- | --- | --- | --- | --- | --- | --- | --- | --- | --- |
| 353 | 1.4.3 | **Realize** |  | 55d | 2025-02-06 | 2025-04-23 |  | 2024-12-20 | 2025-03-06 | 55d | -34d | 0d |  |  |  |  |
| 354 | 1.4.3.1 | Guiding & Assisting CTM for Data preparation |  | 55d | 2025-02-06 | 2025-04-23 | 352 | 2024-12-20 | 2025-03-06 | 55d | -34d | 0d | HBT |  |  |  |
| 355 | 1.4.4 | **Deploy** |  | 22d | 2025-04-24 | 2025-05-23 |  | 2025-03-07 | 2025-04-07 | 22d | -34d | 0d |  |  |  |  |
| 356 | 1.4.4.1 | Guiding & Assisting CTM for Data Upload in Qality & Production |  | 22d | 2025-04-24 | 2025-05-23 | 354 | 2025-03-07 | 2025-04-07 | 22d | -34d | 0d | HBT |  |  |  |
| 357 | 1.5 | **Post Go-Live Support** |  | 22d | 2025-04-24 | 2025-05-23 |  | 2025-03-07 | 2025-04-07 | 22d | 0d |  | HBT & DRAIPL | 100% | 100% | 100% |
| 358 | 1.5.1 | **Run** |  | 22d | 2025-04-24 | 2025-05-23 |  | 2025-03-07 | 2025-04-07 | 22d | 0d |  |  |  |  |  |
| 359 | 1.5.1.1 | First month post Go-Live support |  | 22d | 2025-04-24 | 2025-05-23 | 181 | 2025-03-07 | 2025-04-07 | 22d | 261d | 0d | HBT & DRAIPL | 100% | 100% | 100% |
| 360 | 1.5.1.2 | First Month End closing |  | 5d | 2025-05-19 | 2025-05-23 | 359SS+17d | 2025-04-01 | 2025-04-07 | 5d | 261d |  | HBT & DRAIPL | 100% | 100% | 100% |
| 361 | 1.5.1.3 | First month Data guidamnce and support to CTM |  | 22d | 2025-04-24 | 2025-05-23 | 181 | 2025-03-07 | 2025-04-07 | 22d | 0d |  | HBT & DRAIPL | 100% | 100% | 100% |
| 362 | 1.5.2 | **Deliverables** |  | 0d | 2025-05-23 | 2025-05-23 |  | 2025-04-07 | 2025-04-07 | 0d | 261d |  |  |  |  |  |
| 363 | 1.5.2.1 | D: Issue log & resolutions | milestone | 0d | 2025-05-23 | 2025-05-23 | 359 | 2025-04-07 | 2025-04-07 | 0d | 261d |  | HBT |  |  |  |
| 364 | 1.5.2.2 | D: FS & TS | milestone | 0d | 2025-05-23 | 2025-05-23 | 359 | 2025-04-07 | 2025-04-07 | 0d | 261d |  | HBT |  |  |  |
| 365 | 1.6 | **Wave 2 Support - for 12 months** |  | 261d | 2025-05-26 | 2026-05-25 |  | 2025-04-08 | 2026-04-07 | 261d | 0d |  | HBT & DRAIPL | 100% | 100% | 100% |
| 366 | 1.6.1 | Issue resolution, bug fixing etc - 200 Tickets |  | 261d | 2025-05-26 | 2026-05-25 | 361 | 2025-04-08 | 2026-04-07 | 261d | 0d |  | HBT & DRAIPL | 100% | 100% | 100% |
| 367 | 1.6.2 | 100 Mandays provision for CR & Developments |  | 261d | 2025-05-26 | 2026-05-25 | 366SS | 2025-04-08 | 2026-04-07 | 261d | 0d |  | HBT & DRAIPL | 100% | 100% | 100% |
| 368 | 1.6.3 | **Deliverables** |  | 0d | 2026-05-25 | 2026-05-25 |  | 2026-04-07 | 2026-04-07 | 0d | 0d |  |  |  |  |  |
| 369 | 1.6.3.1 | D: Issue log & resolutions | milestone | 0d | 2026-05-25 | 2026-05-25 | 367 | 2026-04-07 | 2026-04-07 | 0d | 0d |  | HBT |  |  |  |
| 370 | 1.6.3.2 | D: FS & TS | milestone | 0d | 2026-05-25 | 2026-05-25 | 367 | 2026-04-07 | 2026-04-07 | 0d | 0d |  | HBT |  |  |  |
